How a schedule from MS Project changed from version to version. A marks actual dates.

## Version 1 (saved 2019-06-18, file YJTXT_BI&APP_V2.0R-华正20190618.mpp)

| ID | WBS | Task | Duration | Start | Finish | Predecessors | Complete | Total float | Constraint |
| --- | --- | --- | --- | --- | --- | --- | --- | --- | --- |
| 1 | 1 | **YJTXT_BI_V2.0R** | 86.88d? | 2019-06-03 A | 2019-09-30 |  | 1% | 0d |  |
| 2 | 1.1 | **总裁驾驶舱DEMO上线** | 13.88d? | 2019-06-03 | 2019-06-19 |  |  | 0d |  |
| 3 |  | 用户需求/需求分析 | 1d | 2019-06-03 | 2019-06-03 |  |  |  |  |
| 4 |  | 方案设计/Demo展示 | 1d | 2019-06-04 | 2019-06-04 |  |  |  |  |
| 5 |  | 功能开发 | 1d | 2019-06-05 | 2019-06-05 |  |  |  |  |
| 6 |  | 页面自适应问题解决 | 0d? | 2019-06-15 | 2019-06-15 |  |  | 73.88d | start no earlier than 2019-06-15 |
| 7 |  | 人力数据展示(总规划人数取不到暂时用假数据代替) | 0.88d? | 2019-06-15 | 2019-06-15 |  |  | 76d | finish no earlier than 2019-06-15 |
| 8 |  | 现金流量展示三个指标的数据（该数据同样无法取得） | 0.88d? | 2019-06-15 | 2019-06-15 |  |  | 76d | start no earlier than 2019-06-15 |
| 9 |  | 页面ui风格的处理 | 3d | 2019-06-17 | 2019-06-19 | 6 |  | 73d | finish no earlier than 2019-06-19 |
| 10 |  | 处理分辨率不兼容的问题 | 0.88d? | 2019-06-18 | 2019-06-18 |  |  | 74d | finish no earlier than 2019-06-18 |
| 11 |  | 功能测试 | 6d | 2019-06-06 | 2019-06-13 |  |  |  |  |
| 12 |  | 功能部署上线 | 5d | 2019-06-07 | 2019-06-13 |  |  |  |  |
| 13 | 1.2 | **基础经营指标分析** | 7.88d? | 2019-06-10 A | 2019-06-18 |  | 21% | 74d |  |
| 14 |  | 用户需求/需求分析 | 1d | 2019-06-10 A | 2019-06-10 A |  | 100% |  |  |
| 15 |  | 方案设计/Demo展示 | 1d | 2019-06-11 A | 2019-06-11 A |  | 100% |  |  |
| 16 |  | 功能开发 | 1d | 2019-06-12 | 2019-06-12 |  |  |  |  |
| 17 |  | 合同总额功能开发 | 0.88d? | 2019-06-12 | 2019-06-12 |  |  | 79d | finish no earlier than 2019-06-12 |
| 18 |  | 业绩总额功能开发 | 0.88d? | 2019-06-12 | 2019-06-12 |  |  | 79d | finish no earlier than 2019-06-12 |
| 19 |  | 回款功能开发 | 0.88d? | 2019-06-12 | 2019-06-12 |  |  | 79d | finish no earlier than 2019-06-12 |
| 20 |  | 功能测试 | 1d | 2019-06-13 | 2019-06-13 |  |  |  |  |
| 21 |  | 修改页面布局及样式 | 1.88d? | 2019-06-17 | 2019-06-18 |  |  | 74d | finish no earlier than 2019-06-18 |
| 22 |  | 功能部署上线 | 1d | 2019-06-14 | 2019-06-14 |  |  |  |  |
| 23 | 1.3 | **损益表** | 8d | 2019-06-13 | 2019-06-21 |  |  |  |  |
| 24 |  | 用户需求/需求分析 | 3d | 2019-06-13 | 2019-06-17 |  |  |  |  |
| 25 |  | 方案设计/Demo展示 | 1d | 2019-06-18 | 2019-06-18 |  |  |  |  |
| 26 |  | 功能开发 | 1d | 2019-06-19 | 2019-06-19 |  |  |  |  |
| 27 |  | 功能测试 | 1d | 2019-06-20 | 2019-06-20 |  |  |  |  |
| 28 |  | 功能部署上线 | 1d | 2019-06-21 | 2019-06-21 |  |  |  |  |
| 29 | 1.4 | **资产负债表** | 4.88d | 2019-06-24 | 2019-06-28 |  |  | 0d |  |
| 30 |  | 用户需求/需求分析 | 3d | 2019-06-24 | 2019-06-26 |  |  |  |  |
| 31 |  | 方案设计/Demo展示 | 3d | 2019-06-24 | 2019-06-26 |  |  |  |  |
| 32 |  | 功能开发 | 1d | 2019-06-26 | 2019-06-26 |  |  |  |  |
| 33 |  | 功能测试 | 1d | 2019-06-27 | 2019-06-27 |  |  |  |  |
| 34 |  | 功能部署上线 | 1d | 2019-06-28 | 2019-06-28 |  |  |  |  |
| 35 | 1.5 | **现金流量表** | 7d | 2019-06-27 | 2019-07-05 |  |  |  |  |
| 36 |  | 用户需求/需求分析 | 3d | 2019-06-27 | 2019-07-01 |  |  |  |  |
| 37 |  | 方案设计/Demo展示 | 1d | 2019-07-02 | 2019-07-02 |  |  |  |  |
| 38 |  | 功能开发 | 1d | 2019-07-03 | 2019-07-03 |  |  |  |  |
| 39 |  | 功能测试 | 1d | 2019-07-04 | 2019-07-04 |  |  |  |  |
| 40 |  | 功能部署上线 | 1d | 2019-07-05 | 2019-07-05 |  |  |  |  |
| 41 | 1.6 | **销售项目分析+行业业绩统计** | 7d | 2019-07-04 | 2019-07-12 |  |  |  |  |
| 42 |  | 用户需求/需求分析 | 3d | 2019-07-04 | 2019-07-08 |  |  |  |  |
| 43 |  | 方案设计/Demo展示 | 1d | 2019-07-09 | 2019-07-09 |  |  |  |  |
| 44 |  | 功能开发 | 1d | 2019-07-10 | 2019-07-10 |  |  |  |  |
| 45 |  | 功能测试 | 1d | 2019-07-11 | 2019-07-11 |  |  |  |  |
| 46 |  | 功能部署上线 | 1d | 2019-07-12 | 2019-07-12 |  |  |  |  |
| 47 | 1.7 | **工程项目分析/售后400分析/+确认收入统计** | 7d | 2019-07-11 | 2019-07-19 |  |  |  |  |
| 48 |  | 用户需求/需求分析 | 2d | 2019-06-18 | 2019-06-19 |  |  |  |  |
| 49 |  | 方案设计/Demo展示 | 2d | 2019-06-18 | 2019-06-19 |  |  |  |  |
| 50 |  | 功能开发 | 3d | 2019-06-19 | 2019-06-21 |  |  |  |  |
| 51 |  | 功能测试 | 3d | 2019-06-20 | 2019-06-24 |  |  |  |  |
| 52 |  | 功能部署上线 | 0d | 2019-06-25 | 2019-06-25 |  |  |  |  |
| 53 | 1.8 | **员工结构分析/员工流动分析/薪酬分析** | 7d | 2019-07-18 | 2019-07-26 |  |  |  |  |
| 54 |  | 用户需求/需求分析 | 3d | 2019-07-18 | 2019-07-22 |  |  |  |  |
| 55 |  | 方案设计/Demo展示 | 1d | 2019-07-23 | 2019-07-23 |  |  |  |  |
| 56 |  | 功能开发 | 1d | 2019-07-24 | 2019-07-24 |  |  |  |  |
| 57 |  | 功能测试 | 1d | 2019-07-25 | 2019-07-25 |  |  |  |  |
| 58 |  | 功能部署上线 | 1d | 2019-07-26 | 2019-07-26 |  |  |  |  |
| 59 | 1.9 | **考勤分析/研发部门工作量统计/过程规范性得分统计** | 7d | 2019-07-25 | 2019-08-02 |  |  |  |  |
| 60 |  | 用户需求/需求分析 | 3d | 2019-07-25 | 2019-07-29 |  |  |  |  |
| 61 |  | 方案设计/Demo展示 | 1d | 2019-07-30 | 2019-07-30 |  |  |  |  |
| 62 |  | 功能开发 | 1d | 2019-07-31 | 2019-07-31 |  |  |  |  |
| 63 |  | 功能测试 | 1d | 2019-08-01 | 2019-08-01 |  |  |  |  |
| 64 |  | 功能部署上线 | 1d | 2019-08-02 | 2019-08-02 |  |  |  |  |
| 65 | 1.10 | **过程资产提交率统计/项目类采购分析** | 7d | 2019-08-01 | 2019-08-09 |  |  |  |  |
| 66 |  | 用户需求/需求分析 | 3d | 2019-08-01 | 2019-08-05 |  |  |  |  |
| 67 |  | 方案设计/Demo展示 | 1d | 2019-08-06 | 2019-08-06 |  |  |  |  |
| 68 |  | 功能开发 | 1d | 2019-08-07 | 2019-08-07 |  |  |  |  |
| 69 |  | 功能测试 | 1d | 2019-08-08 | 2019-08-08 |  |  |  |  |
| 70 |  | 功能部署上线 | 1d | 2019-08-09 | 2019-08-09 |  |  |  |  |

| ID | WBS | Task | Duration | Start | Finish | Total float |
| --- | --- | --- | --- | --- | --- | --- |
| 71 | 1.11 | **报表性能/页面交互调优** | 5.88d | 2019-08-12 | 2019-08-19 | 0d |
| 72 |  | 报表性能/页面交互调优 | 6d | 2019-08-12 | 2019-08-19 |  |
| 73 | 1.12 | **甲方验收（第一轮）** | 9.88d | 2019-08-12 | 2019-08-24 | 0d |
| 74 |  | 甲方验收（第一轮） | 11d | 2019-08-12 | 2019-08-24 |  |
| 75 | 1.13 | **甲方验收（第二轮）** | 5d | 2019-08-24 | 2019-08-31 | 0d |
| 76 |  | 甲方验收（第二轮） | 7d | 2019-08-24 | 2019-08-31 |  |
| 77 | 1.14 | **远程支持客户需求** | 21d | 2019-09-01 | 2019-09-30 | 0d |
| 78 |  | 远程支持客户需求 | 22d | 2019-09-01 | 2019-09-30 |  |
| 80 | 2 | **YJTXT_APP_V2.0R** | 15.88d | 2019-06-03 | 2019-06-21 | 0d |
| 81 | 2.1 | **客户接待** | 15.88d | 2019-06-03 | 2019-06-21 | 0d |
| 82 |  | 用户需求/需求分析 | 2d | 2019-06-03 | 2019-06-04 |  |
| 83 |  | 方案设计 | 1d | 2019-06-05 | 2019-06-05 |  |
| 84 |  | 功能开发 | 9d | 2019-06-06 | 2019-06-18 |  |
| 85 |  | 单元测试 | 1d | 2019-06-19 | 2019-06-19 |  |
| 86 |  | 集成测试 | 1d | 2019-06-20 | 2019-06-20 |  |
| 87 |  | 功能部署上线 | 1d | 2019-06-21 | 2019-06-21 |  |
| 88 | 2.2 | **考勤打卡** | 15.88d | 2019-06-03 | 2019-06-21 | 0d |
| 89 |  | 用户需求/需求分析 | 2d | 2019-06-03 | 2019-06-04 |  |
| 90 |  | 方案设计 | 1d | 2019-06-05 | 2019-06-05 |  |
| 91 |  | 功能开发 | 9d | 2019-06-06 | 2019-06-18 |  |
| 92 |  | 单元测试 | 1d | 2019-06-19 | 2019-06-19 |  |
| 93 |  | 集成测试 | 1d | 2019-06-20 | 2019-06-20 |  |
| 94 |  | 功能部署上线 | 1d | 2019-06-21 | 2019-06-21 |  |
| 95 | 2.3 | **出差公出报备** | 15.88d | 2019-06-03 | 2019-06-21 | 0d |
| 96 |  | 用户需求/需求分析 | 2d | 2019-06-03 | 2019-06-04 |  |
| 97 |  | 方案设计 | 1d | 2019-06-05 | 2019-06-05 |  |
| 98 |  | 功能开发 | 9d | 2019-06-06 | 2019-06-18 |  |
| 99 |  | 单元测试 | 1d | 2019-06-19 | 2019-06-19 |  |
| 100 |  | 集成测试 | 1d | 2019-06-20 | 2019-06-20 |  |
| 101 |  | 功能部署上线 | 1d | 2019-06-21 | 2019-06-21 |  |
| 102 | 2.4 | **假期管理** | 1d | 2019-06-03 | 2019-06-04 |  |
| 103 |  | 用户需求/需求分析 | 1d | 2019-06-03 | 2019-06-04 |  |
| 104 |  | 方案设计 | 1d | 2019-06-03 | 2019-06-04 |  |
| 105 |  | 功能开发 | 1d | 2019-06-03 | 2019-06-04 |  |
| 106 |  | 单元测试 | 1d | 2019-06-03 | 2019-06-04 |  |
| 107 |  | 集成测试 | 1d | 2019-06-03 | 2019-06-04 |  |
| 108 |  | 功能部署上线 | 1d | 2019-06-03 | 2019-06-04 |  |
| 109 | 2.5 | **考勤明细** | 1d | 2019-06-03 | 2019-06-04 |  |
| 110 |  | 用户需求/需求分析 | 1d | 2019-06-03 | 2019-06-04 |  |
| 111 |  | 方案设计 | 1d | 2019-06-03 | 2019-06-04 |  |
| 112 |  | 功能开发 | 1d | 2019-06-03 | 2019-06-04 |  |
| 113 |  | 单元测试 | 1d | 2019-06-03 | 2019-06-04 |  |
| 114 |  | 集成测试 | 1d | 2019-06-03 | 2019-06-04 |  |
| 115 |  | 功能部署上线 | 1d | 2019-06-03 | 2019-06-04 |  |
| 116 | 2.6 | **待办列表** | 1d | 2019-06-03 | 2019-06-04 |  |
| 117 |  | 用户需求/需求分析 | 1d | 2019-06-03 | 2019-06-04 |  |
| 118 |  | 方案设计 | 1d | 2019-06-03 | 2019-06-04 |  |
| 119 |  | 功能开发 | 1d | 2019-06-03 | 2019-06-04 |  |
| 120 |  | 单元测试 | 1d | 2019-06-03 | 2019-06-04 |  |
| 121 |  | 集成测试 | 1d | 2019-06-03 | 2019-06-04 |  |
| 122 |  | 功能部署上线 | 1d | 2019-06-03 | 2019-06-04 |  |
| 123 | 2.7 | **日报管理** | 1d | 2019-06-03 | 2019-06-04 |  |
| 124 |  | 用户需求/需求分析 | 1d | 2019-06-03 | 2019-06-04 |  |
| 125 |  | 方案设计 | 1d | 2019-06-03 | 2019-06-04 |  |
| 126 |  | 功能开发 | 1d | 2019-06-03 | 2019-06-04 |  |
| 127 |  | 单元测试 | 1d | 2019-06-03 | 2019-06-04 |  |
| 128 |  | 集成测试 | 1d | 2019-06-03 | 2019-06-04 |  |
| 129 |  | 功能部署上线 | 1d | 2019-06-03 | 2019-06-04 |  |
| 130 | 2.8 | **置换功能** | 1d | 2019-06-03 | 2019-06-04 |  |
| 131 |  | 用户需求/需求分析 | 1d | 2019-06-03 | 2019-06-04 |  |
| 132 |  | 方案设计 | 1d | 2019-06-03 | 2019-06-04 |  |
| 133 |  | 功能开发 | 1d | 2019-06-03 | 2019-06-04 |  |
| 134 |  | 单元测试 | 1d | 2019-06-03 | 2019-06-04 |  |
| 135 |  | 集成测试 | 1d | 2019-06-03 | 2019-06-04 |  |
| 136 |  | 功能部署上线 | 1d | 2019-06-03 | 2019-06-04 |  |
| 137 | 2.9 | **甲方验收（第一轮）** | 1d | 2019-06-03 | 2019-06-04 |  |
| 138 |  | 甲方验收（第一轮） | 1d | 2019-06-03 | 2019-06-04 |  |
| 139 | 2.10 | **甲方验收（第二轮）** | 1d | 2019-06-03 | 2019-06-04 |  |
| 140 |  | 甲方验收（第二轮） | 1d | 2019-06-03 | 2019-06-04 |  |

## Version 2 (saved 2019-06-19, file YJTXT_BI&APP_V2.0R-华正20190619.mpp)

Last finish stays 2019-09-30.

Changed:

| ID | Task | Start | Finish | Duration | Total float |
| --- | --- | --- | --- | --- | --- |
| 80 | **YJTXT_APP_V2.0R** |  | 2019-06-21 → 2019-08-16 (+56d) | 15.88d → 55.88d |  |
| 95 | **出差公出报备** |  | 2019-06-21 → 2019-06-27 (+6d) | 15.88d → 20d | 0d → none |
| 98 | 功能开发 |  | 2019-06-18 → 2019-06-26 (+8d) | 9d → 16d |  |
| 102 | **日报管理** | 2019-06-03 → 2019-06-28 (+25d) | 2019-06-04 → 2019-07-19 (+45d) | 1d → 16d |  |
| 103 | 用户需求/需求分析 | 2019-06-03 → 2019-06-28 (+25d) | 2019-06-04 → 2019-07-02 (+28d) | 1d → 3d |  |
| 104 | 方案设计 | 2019-06-03 → 2019-07-02 (+29d) | 2019-06-04 → 2019-07-04 (+30d) | 1d → 3d |  |
| 105 | 功能开发 | 2019-06-03 → 2019-07-04 (+31d) | 2019-06-04 → 2019-07-12 (+38d) | 1d → 7d |  |
| 106 | 单元测试 | 2019-06-03 → 2019-07-15 (+42d) | 2019-06-04 → 2019-07-16 (+42d) | 1d → 2d |  |
| 107 | 集成测试 | 2019-06-03 → 2019-07-17 (+44d) | 2019-06-04 → 2019-07-18 (+44d) | 1d → 2d |  |
| 108 | 功能部署上线 | 2019-06-03 → 2019-07-18 (+45d) | 2019-06-04 → 2019-07-19 (+45d) | 1d → 2d |  |
| 109 | **待办列表** | 2019-06-03 → 2019-07-22 (+49d) | 2019-06-04 → 2019-08-02 (+59d) | 1d → 10d |  |
| 110 | 用户需求/需求分析 | 2019-06-03 → 2019-07-22 (+49d) | 2019-06-04 → 2019-07-23 (+49d) | 1d → 2d |  |
| 111 | 方案设计 | 2019-06-03 → 2019-07-24 (+51d) | 2019-06-04 → 2019-07-24 (+50d) |  |  |
| 112 | 功能开发 | 2019-06-03 → 2019-07-25 (+52d) | 2019-06-04 → 2019-07-30 (+56d) | 1d → 4d |  |
| 113 | 单元测试 | 2019-06-03 → 2019-07-31 (+58d) | 2019-06-04 → 2019-07-31 (+57d) |  |  |
| 114 | 集成测试 | 2019-06-03 → 2019-08-01 (+59d) | 2019-06-04 → 2019-08-01 (+58d) |  |  |
| 115 | 功能部署上线 | 2019-06-03 → 2019-08-02 (+60d) | 2019-06-04 → 2019-08-02 (+59d) |  |  |
| 116 | **考勤明细** | 2019-06-03 → 2019-08-05 (+63d) | 2019-06-04 → 2019-08-09 (+66d) | 1d → 5d |  |
| 117 | 用户需求/需求分析 | 2019-06-03 → 2019-08-05 (+63d) | 2019-06-04 → 2019-08-05 (+62d) |  |  |
| 118 | 方案设计 | 2019-06-03 → 2019-08-05 (+63d) | 2019-06-04 → 2019-08-05 (+62d) |  |  |
| 119 | 功能开发 | 2019-06-03 → 2019-08-06 (+64d) | 2019-06-04 → 2019-08-07 (+64d) | 1d → 2d |  |
| 120 | 单元测试 | 2019-06-03 → 2019-08-08 (+66d) | 2019-06-04 → 2019-08-08 (+65d) |  |  |
| 121 | 集成测试 | 2019-06-03 → 2019-08-08 (+66d) | 2019-06-04 → 2019-08-08 (+65d) |  |  |
| 122 | 功能部署上线 | 2019-06-03 → 2019-07-09 (+36d) | 2019-06-04 → 2019-07-09 (+35d) |  |  |
| 123 | **假期管理** | 2019-06-03 → 2019-08-12 (+70d) | 2019-06-04 → 2019-08-16 (+73d) | 1d → 5d |  |
| 124 | 用户需求/需求分析 | 2019-06-03 → 2019-08-12 (+70d) | 2019-06-04 → 2019-08-12 (+69d) |  |  |
| 125 | 方案设计 | 2019-06-03 → 2019-08-12 (+70d) | 2019-06-04 → 2019-08-12 (+69d) |  |  |
| 126 | 功能开发 | 2019-06-03 → 2019-08-13 (+71d) | 2019-06-04 → 2019-08-14 (+71d) | 1d → 2d |  |
| 127 | 单元测试 | 2019-06-03 → 2019-08-15 (+73d) | 2019-06-04 → 2019-08-15 (+72d) |  |  |
| 128 | 集成测试 | 2019-06-03 → 2019-08-15 (+73d) | 2019-06-04 → 2019-08-15 (+72d) |  |  |
| 129 | 功能部署上线 | 2019-06-03 → 2019-08-16 (+74d) | 2019-06-04 → 2019-08-16 (+73d) |  |  |
| 130 | **置换功能** | 2019-06-03 → 2019-08-12 (+70d) | 2019-06-04 → 2019-08-13 (+70d) |  |  |
| 131 | 用户需求/需求分析 | 2019-06-03 → 2019-08-12 (+70d) | 2019-06-04 → 2019-08-13 (+70d) |  |  |
| 132 | 方案设计 | 2019-06-03 → 2019-08-12 (+70d) | 2019-06-04 → 2019-08-13 (+70d) |  |  |
| 133 | 功能开发 | 2019-06-03 → 2019-08-12 (+70d) | 2019-06-04 → 2019-08-13 (+70d) |  |  |
| 134 | 单元测试 | 2019-06-03 → 2019-08-12 (+70d) | 2019-06-04 → 2019-08-13 (+70d) |  |  |
| 135 | 集成测试 | 2019-06-03 → 2019-08-12 (+70d) | 2019-06-04 → 2019-08-13 (+70d) |  |  |
| 136 | 功能部署上线 | 2019-06-03 → 2019-08-12 (+70d) | 2019-06-04 → 2019-08-13 (+70d) |  |  |
| 137 | **甲方验收（第一轮）** | 2019-06-03 → 2019-08-12 (+70d) | 2019-06-04 → 2019-08-13 (+70d) |  |  |
| 138 | 甲方验收（第一轮） | 2019-06-03 → 2019-08-12 (+70d) | 2019-06-04 → 2019-08-13 (+70d) |  |  |
| 139 | **甲方验收（第二轮）** | 2019-06-03 → 2019-08-12 (+70d) | 2019-06-04 → 2019-08-13 (+70d) |  |  |
| 140 | 甲方验收（第二轮） | 2019-06-03 → 2019-08-12 (+70d) | 2019-06-04 → 2019-08-13 (+70d) |  |  |

## Version 3 (saved 2019-06-21, file YJTXT_BI&APP_V2.0R-华正20190620.mpp)

Last finish stays 2019-09-30. Complete tasks 2 → 10.

Added:

| ID | Task | Duration | Start | Finish | Constraint | Resources |
| --- | --- | --- | --- | --- | --- | --- |
| 50 | exceldemo原型 | 1d | 2019-06-19 A | 2019-06-20 A |  | 高祥云 |
| 51 | 根据需求进行数据建模 | 1d | 2019-06-19 A | 2019-06-20 A | start no earlier than 2019-06-19 | 罗加云 |
| 52 | exceldemo原型问题分析及修改 | 1d | 2019-06-19 A | 2019-06-20 A |  | 高祥云 |
| 53 | 测试数据插入 | 1d | 2019-06-20 A | 2019-06-20 A | finish no earlier than 2019-06-20 | 杜振兴 |
| 54 | bi或report初版页面 | 1d | 2019-06-20 A | 2019-06-20 A |  | 杜振兴 |
| 56 | 进行初版页面的问题跟踪 | 0.88d? | 2019-06-21 | 2019-06-21 | finish no earlier than 2019-06-21 | 杜振兴; 高祥云 |
| 57 | etl数据确认 | 0.88d? | 2019-06-20 A | 2019-06-20 | start no earlier than 2019-06-20 | 罗加云 |
| 58 | 如有问题，问题解决方案 | 0.88d? | 2019-06-21 | 2019-06-21 | finish no earlier than 2019-06-21 | 杜振兴; 高祥云 |
| 59 | 页面原型再版 | 1.88d? | 2019-06-21 | 2019-06-24 | finish no earlier than 2019-06-24 | 杜振兴 |
| 60 | etl数据抽取转换 | 1d | 2019-06-21 A | 2019-06-21 | finish no earlier than 2019-06-21 | 罗加云 |
| 61 | 页面原型在版迭代 | 0.88d? | 2019-06-24 | 2019-06-24 | finish no earlier than 2019-06-24 | 杜振兴 |
| 62 | etl数据抽取转换迭代 | 0.88d? | 2019-06-24 | 2019-06-24 | finish no earlier than 2019-06-24 | 罗加云 |
| 64 | 页面逻辑确认 | 1d? | 2019-06-24 | 2019-06-25 | start no earlier than 2019-06-24 | 杜振兴 |
| 65 | 页面数据确认 | 1d? | 2019-06-24 | 2019-06-25 | start no earlier than 2019-06-24 | 杜振兴; 罗加云 |
| 101 | bug调试 | 0.88d? | 2019-06-21 | 2019-06-23 | finish no earlier than 2019-06-23 |  |
| 102 | 页面调整美化 | 0.88d? | 2019-06-21 | 2019-06-21 | finish no earlier than 2019-06-21 |  |
| 110 | 用户测试 | 1d? | 2019-06-24 | 2019-06-24 | finish no earlier than 2019-06-24 |  |
| 111 | bug调整 | 1d? | 2019-06-21 | 2019-06-23 | finish no earlier than 2019-06-23 |  |

Changed:

| ID | Task | Start | Finish | Duration | Complete | Total float |
| --- | --- | --- | --- | --- | --- | --- |
| 1 | **YJTXT_BI_V2.0R** |  |  |  | 1% → 8% |  |
| 2 | **总裁驾驶舱DEMO上线** | 2019-06-03 A |  |  | 0% → 10% |  |
| 3 | 用户需求/需求分析 | 2019-06-03 A | 2019-06-03 A |  | 0% → 100% |  |
| 5 | 功能开发 | 2019-06-05 A | 2019-06-05 A |  | 0% → 100% |  |
| 23 | **损益表** |  |  | 8d → 7.88d |  | none → 0d |
| 35 | **现金流量表** |  |  | 7d → 6.88d |  | none → 0d |
| 41 | **销售项目分析+行业业绩统计** |  |  | 7d → 6.88d |  | none → 0d |
| 47 | **工程项目分析/售后400分析/+确认收入统计** | 2019-07-11 → 2019-06-18 A (-23d) | 2019-07-19 → 2019-06-25 (-24d) | 7d → 5d? | 0% → 50% | none → 69.88d |
| 48 | 用户需求/需求分析 | 2019-06-18 A | 2019-06-19 A |  | 0% → 100% |  |
| 49 | **方案设计/Demo展示** | 2019-06-18 → 2019-06-19 A (+1d) | 2019-06-19 → 2019-06-20 A (+1d) | 2d → 1.88d | 0% → 100% |  |
| 55 | **功能开发** | 2019-06-19 → 2019-06-20 A (+1d) | 2019-06-21 → 2019-06-24 (+3d) | 3d → 2.88d? | 0% → 15% | none → 0d |
| 63 | **功能测试** | 2019-06-20 → 2019-06-24 (+4d) | 2019-06-24 → 2019-06-25 (+1d) | 3d → 1d? |  | none → 69.88d |
| 67 | **员工结构分析/员工流动分析/薪酬分析** |  |  | 7d → 6.88d |  | none → 0d |
| 73 | **考勤分析/研发部门工作量统计/过程规范性得分统计** |  |  | 7d → 6.88d |  | none → 0d |
| 79 | **过程资产提交率统计/项目类采购分析** |  |  | 7d → 6.88d |  | none → 0d |
| 94 | **YJTXT_APP_V2.0R** |  |  | 55.88d → 55.88d? |  |  |
| 95 | **客户接待** |  | 2019-06-21 → 2019-06-24 (+3d) | 15.88d → 16.88d? |  |  |
| 100 | **集成测试** | 2019-06-20 → 2019-06-21 (+1d) | 2019-06-20 → 2019-06-21 (+1d) | 1d → 0.88d? |  |  |
| 103 | 功能部署上线 | 2019-06-21 → 2019-06-24 (+3d) | 2019-06-21 → 2019-06-24 (+3d) |  |  |  |
| 104 | **考勤打卡** |  | 2019-06-21 → 2019-06-24 (+3d) | 15.88d → 16.88d |  |  |
| 109 | **集成测试** |  | 2019-06-20 → 2019-06-24 (+4d) | 1d → 3d |  |  |
| 112 | 功能部署上线 | 2019-06-21 → 2019-06-24 (+3d) | 2019-06-21 → 2019-06-24 (+3d) |  |  |  |
| 113 | **出差公出报备** |  | 2019-06-27 → 2019-06-26 (-1d) | 20d → 18.88d |  | none → 0d |
| 120 | **日报管理** |  |  | 16d → 15.88d |  | none → 0d |
| 127 | **待办列表** |  |  | 10d → 9.88d |  | none → 0d |
| 134 | **考勤明细** |  |  | 5d → 4.88d |  | none → 0d |
| 140 | 功能部署上线 | 2019-07-09 → 2019-08-09 (+31d) | 2019-07-09 → 2019-08-09 (+31d) |  |  |  |
| 141 | **假期管理** | 2019-08-12 → 2019-06-03 (-70d) |  | 5d → 55.88d |  | none → 0d |
| 148 | **置换功能** | 2019-08-12 → 2019-06-03 (-70d) | 2019-08-13 → 2019-06-04 (-70d) |  |  | none → 0d |
| 149 | 用户需求/需求分析 | 2019-08-12 → 2019-06-03 (-70d) | 2019-08-13 → 2019-06-04 (-70d) |  |  |  |
| 150 | 方案设计 | 2019-08-12 → 2019-06-03 (-70d) | 2019-08-13 → 2019-06-04 (-70d) |  |  |  |
| 151 | 功能开发 | 2019-08-12 → 2019-06-03 (-70d) | 2019-08-13 → 2019-06-04 (-70d) |  |  |  |
| 152 | 单元测试 | 2019-08-12 → 2019-06-03 (-70d) | 2019-08-13 → 2019-06-04 (-70d) |  |  |  |
| 153 | 集成测试 | 2019-08-12 → 2019-06-03 (-70d) | 2019-08-13 → 2019-06-04 (-70d) |  |  |  |
| 154 | 功能部署上线 | 2019-08-12 → 2019-06-03 (-70d) | 2019-08-13 → 2019-06-04 (-70d) |  |  |  |
| 155 | **甲方验收（第一轮）** | 2019-08-12 → 2019-06-03 (-70d) | 2019-08-13 → 2019-06-04 (-70d) |  |  | none → 0d |
| 156 | 甲方验收（第一轮） | 2019-08-12 → 2019-06-03 (-70d) | 2019-08-13 → 2019-06-04 (-70d) |  |  |  |
| 157 | **甲方验收（第二轮）** | 2019-08-12 → 2019-06-03 (-70d) | 2019-08-13 → 2019-06-04 (-70d) |  |  | none → 0d |
| 158 | 甲方验收（第二轮） | 2019-08-12 → 2019-06-03 (-70d) | 2019-08-13 → 2019-06-04 (-70d) |  |  |  |
