How a schedule from MS Project changed from version to version. A marks actual dates.

## Version 1 (saved 2019-06-06, file YJTXT_BI&APP_V2.0R-华正20190604.mpp)

| ID | WBS | Task | Duration | Start | Finish | Total float |
| --- | --- | --- | --- | --- | --- | --- |
| 1 | 1 | **YJTXT_BI_V2.0R** | 85.88d | 2019-06-03 | 2019-09-30 | 0d |
| 2 | 1.1 | **总裁驾驶舱DEMO上线** | 4.88d | 2019-06-03 | 2019-06-07 | 0d |
| 3 |  | 用户需求/需求分析 | 1d | 2019-06-03 | 2019-06-03 |  |
| 4 |  | 方案设计/Demo展示 | 1d | 2019-06-04 | 2019-06-04 |  |
| 5 |  | 功能开发 | 1d | 2019-06-05 | 2019-06-05 |  |
| 6 |  | 功能测试 | 1d | 2019-06-06 | 2019-06-06 |  |
| 7 |  | 功能部署上线 | 1d | 2019-06-07 | 2019-06-07 |  |
| 8 | 1.2 | **基础经营指标分析** | 4.88d | 2019-06-10 | 2019-06-14 | 0d |
| 9 |  | 用户需求/需求分析 | 1d | 2019-06-10 | 2019-06-10 |  |
| 10 |  | 方案设计/Demo展示 | 1d | 2019-06-11 | 2019-06-11 |  |
| 11 |  | 功能开发 | 1d | 2019-06-12 | 2019-06-12 |  |
| 12 |  | 功能测试 | 1d | 2019-06-13 | 2019-06-13 |  |
| 13 |  | 功能部署上线 | 1d | 2019-06-14 | 2019-06-14 |  |
| 14 | 1.3 | **资产负债表** | 7d | 2019-06-13 | 2019-06-21 |  |
| 15 |  | 用户需求/需求分析 | 1d | 2019-06-12 | 2019-06-13 |  |
| 16 |  | 方案设计/Demo展示 | 1d | 2019-06-18 | 2019-06-18 |  |
| 17 |  | 功能开发 | 1d | 2019-06-19 | 2019-06-19 |  |
| 18 |  | 功能测试 | 1d | 2019-06-20 | 2019-06-20 |  |
| 19 |  | 功能部署上线 | 1d | 2019-06-21 | 2019-06-21 |  |
| 20 | 1.4 | **损益表** | 6.88d | 2019-06-20 | 2019-06-28 | 0d |
| 21 |  | 用户需求/需求分析 | 1d | 2019-06-20 | 2019-06-21 |  |
| 22 |  | 方案设计/Demo展示 | 1d | 2019-06-25 | 2019-06-25 |  |
| 23 |  | 功能开发 | 1d | 2019-06-26 | 2019-06-26 |  |
| 24 |  | 功能测试 | 1d | 2019-06-27 | 2019-06-27 |  |
| 25 |  | 功能部署上线 | 1d | 2019-06-28 | 2019-06-28 |  |
| 26 | 1.5 | **现金流量表** | 7d | 2019-06-27 | 2019-07-05 |  |
| 27 |  | 用户需求/需求分析 | 1d | 2019-06-27 | 2019-06-28 |  |
| 28 |  | 方案设计/Demo展示 | 1d | 2019-07-02 | 2019-07-02 |  |
| 29 |  | 功能开发 | 1d | 2019-07-03 | 2019-07-03 |  |
| 30 |  | 功能测试 | 1d | 2019-07-04 | 2019-07-04 |  |
| 31 |  | 功能部署上线 | 1d | 2019-07-05 | 2019-07-05 |  |
| 32 | 1.6 | **销售项目分析,业绩/回款报表** | 7d | 2019-07-04 | 2019-07-12 |  |
| 33 |  | 用户需求/需求分析 | 1d | 2019-07-04 | 2019-07-05 |  |
| 34 |  | 方案设计/Demo展示 | 1d | 2019-07-09 | 2019-07-09 |  |
| 35 |  | 功能开发 | 1d | 2019-07-10 | 2019-07-10 |  |
| 36 |  | 功能测试 | 1d | 2019-07-11 | 2019-07-11 |  |
| 37 |  | 功能部署上线 | 1d | 2019-07-12 | 2019-07-12 |  |
| 38 | 1.7 | **工程项目分析/售后400分析** | 7d | 2019-07-11 | 2019-07-19 |  |
| 39 |  | 用户需求/需求分析 | 1d | 2019-07-11 | 2019-07-12 |  |
| 40 |  | 方案设计/Demo展示 | 1d | 2019-07-16 | 2019-07-16 |  |
| 41 |  | 功能开发 | 1d | 2019-07-17 | 2019-07-17 |  |
| 42 |  | 功能测试 | 1d | 2019-07-18 | 2019-07-18 |  |
| 43 |  | 功能部署上线 | 1d | 2019-07-19 | 2019-07-19 |  |
| 44 | 1.8 | **员工结构分析/员工流动分析/薪酬分析** | 7d | 2019-07-18 | 2019-07-26 |  |
| 45 |  | 用户需求/需求分析 | 1d | 2019-07-18 | 2019-07-19 |  |
| 46 |  | 方案设计/Demo展示 | 1d | 2019-07-23 | 2019-07-23 |  |
| 47 |  | 功能开发 | 1d | 2019-07-24 | 2019-07-24 |  |
| 48 |  | 功能测试 | 1d | 2019-07-25 | 2019-07-25 |  |
| 49 |  | 功能部署上线 | 1d | 2019-07-26 | 2019-07-26 |  |
| 50 | 1.9 | **考勤分析/研发部门工作量统计/过程规范性得分统计** | 7d | 2019-07-25 | 2019-08-02 |  |
| 51 |  | 用户需求/需求分析 | 1d | 2019-07-25 | 2019-07-26 |  |
| 52 |  | 方案设计/Demo展示 | 1d | 2019-07-30 | 2019-07-30 |  |
| 53 |  | 功能开发 | 1d | 2019-07-31 | 2019-07-31 |  |
| 54 |  | 功能测试 | 1d | 2019-08-01 | 2019-08-01 |  |
| 55 |  | 功能部署上线 | 1d | 2019-08-02 | 2019-08-02 |  |
| 56 | 1.10 | **过程资产提交率统计/项目类采购分析** | 7d | 2019-08-01 | 2019-08-09 |  |
| 57 |  | 用户需求/需求分析 | 1d | 2019-08-05 | 2019-08-05 |  |
| 58 |  | 方案设计/Demo展示 | 1d | 2019-08-06 | 2019-08-06 |  |
| 59 |  | 功能开发 | 1d | 2019-08-07 | 2019-08-07 |  |
| 60 |  | 功能测试 | 1d | 2019-08-08 | 2019-08-08 |  |
| 61 |  | 功能部署上线 | 1d | 2019-08-09 | 2019-08-09 |  |
| 62 | 1.11 | **报表性能/页面交互调优** | 5.88d | 2019-08-12 | 2019-08-19 | 0d |
| 63 |  | 报表性能/页面交互调优 | 6d | 2019-08-12 | 2019-08-19 |  |
| 64 | 1.12 | **甲方验收（第一轮）** | 9.88d | 2019-08-12 | 2019-08-24 | 0d |
| 65 |  | 甲方验收（第一轮） | 11d | 2019-08-12 | 2019-08-24 |  |
| 66 | 1.13 | **甲方验收（第二轮）** | 5d | 2019-08-24 | 2019-08-31 | 0d |
| 67 |  | 甲方验收（第二轮） | 7d | 2019-08-24 | 2019-08-31 |  |
| 68 | 1.14 | **远程支持客户需求** | 21d | 2019-09-01 | 2019-09-30 | 0d |
| 69 |  | 远程支持客户需求 | 22d | 2019-09-01 | 2019-09-30 |  |
| 71 | 2 | **YJTXT_APP_V2.0R** | 9.88d | 2019-06-03 | 2019-06-14 | 0d |

| ID | WBS | Task | Duration | Start | Finish | Total float |
| --- | --- | --- | --- | --- | --- | --- |
| 72 | 2.1 | **客户接待** | 9.88d | 2019-06-03 | 2019-06-14 | 0d |
| 73 |  | 用户需求/需求分析 | 2d | 2019-06-03 | 2019-06-04 |  |
| 74 |  | 方案设计 | 1d | 2019-06-05 | 2019-06-05 |  |
| 75 |  | 功能开发 | 4d | 2019-06-06 | 2019-06-11 |  |
| 76 |  | 单元测试 | 1d | 2019-06-12 | 2019-06-12 |  |
| 77 |  | 集成测试 | 1d | 2019-06-13 | 2019-06-13 |  |
| 78 |  | 功能部署上线 | 1d | 2019-06-14 | 2019-06-14 |  |
| 79 | 2.2 | **考勤打卡** | 9.88d | 2019-06-03 | 2019-06-14 | 0d |
| 80 |  | 用户需求/需求分析 | 2d | 2019-06-03 | 2019-06-04 |  |
| 81 |  | 方案设计 | 1d | 2019-06-05 | 2019-06-05 |  |
| 82 |  | 功能开发 | 4d | 2019-06-06 | 2019-06-11 |  |
| 83 |  | 单元测试 | 1d | 2019-06-12 | 2019-06-12 |  |
| 84 |  | 集成测试 | 1d | 2019-06-13 | 2019-06-13 |  |
| 85 |  | 功能部署上线 | 1d | 2019-06-14 | 2019-06-14 |  |
| 86 | 2.3 | **出差公出报备** | 9.88d | 2019-06-03 | 2019-06-14 | 0d |
| 87 |  | 用户需求/需求分析 | 2d | 2019-06-03 | 2019-06-04 |  |
| 88 |  | 方案设计 | 1d | 2019-06-05 | 2019-06-05 |  |
| 89 |  | 功能开发 | 4d | 2019-06-06 | 2019-06-11 |  |
| 90 |  | 单元测试 | 1d | 2019-06-12 | 2019-06-12 |  |
| 91 |  | 集成测试 | 1d | 2019-06-13 | 2019-06-13 |  |
| 92 |  | 功能部署上线 | 1d | 2019-06-14 | 2019-06-14 |  |
| 93 | 2.4 | **假期管理** | 1d | 2019-06-03 | 2019-06-04 |  |
| 94 |  | 用户需求/需求分析 | 1d | 2019-06-03 | 2019-06-04 |  |
| 95 |  | 方案设计 | 1d | 2019-06-03 | 2019-06-04 |  |
| 96 |  | 功能开发 | 1d | 2019-06-03 | 2019-06-04 |  |
| 97 |  | 单元测试 | 1d | 2019-06-03 | 2019-06-04 |  |
| 98 |  | 集成测试 | 1d | 2019-06-03 | 2019-06-04 |  |
| 99 |  | 功能部署上线 | 1d | 2019-06-03 | 2019-06-04 |  |
| 100 | 2.5 | **考勤明细** | 1d | 2019-06-03 | 2019-06-04 |  |
| 101 |  | 用户需求/需求分析 | 1d | 2019-06-03 | 2019-06-04 |  |
| 102 |  | 方案设计 | 1d | 2019-06-03 | 2019-06-04 |  |
| 103 |  | 功能开发 | 1d | 2019-06-03 | 2019-06-04 |  |
| 104 |  | 单元测试 | 1d | 2019-06-03 | 2019-06-04 |  |
| 105 |  | 集成测试 | 1d | 2019-06-03 | 2019-06-04 |  |
| 106 |  | 功能部署上线 | 1d | 2019-06-03 | 2019-06-04 |  |
| 107 | 2.6 | **待办列表** | 1d | 2019-06-03 | 2019-06-04 |  |
| 108 |  | 用户需求/需求分析 | 1d | 2019-06-03 | 2019-06-04 |  |
| 109 |  | 方案设计 | 1d | 2019-06-03 | 2019-06-04 |  |
| 110 |  | 功能开发 | 1d | 2019-06-03 | 2019-06-04 |  |
| 111 |  | 单元测试 | 1d | 2019-06-03 | 2019-06-04 |  |
| 112 |  | 集成测试 | 1d | 2019-06-03 | 2019-06-04 |  |
| 113 |  | 功能部署上线 | 1d | 2019-06-03 | 2019-06-04 |  |
| 114 | 2.7 | **日报管理** | 1d | 2019-06-03 | 2019-06-04 |  |
| 115 |  | 用户需求/需求分析 | 1d | 2019-06-03 | 2019-06-04 |  |
| 116 |  | 方案设计 | 1d | 2019-06-03 | 2019-06-04 |  |
| 117 |  | 功能开发 | 1d | 2019-06-03 | 2019-06-04 |  |
| 118 |  | 单元测试 | 1d | 2019-06-03 | 2019-06-04 |  |
| 119 |  | 集成测试 | 1d | 2019-06-03 | 2019-06-04 |  |
| 120 |  | 功能部署上线 | 1d | 2019-06-03 | 2019-06-04 |  |
| 121 | 2.8 | **置换功能** | 1d | 2019-06-03 | 2019-06-04 |  |
| 122 |  | 用户需求/需求分析 | 1d | 2019-06-03 | 2019-06-04 |  |
| 123 |  | 方案设计 | 1d | 2019-06-03 | 2019-06-04 |  |
| 124 |  | 功能开发 | 1d | 2019-06-03 | 2019-06-04 |  |
| 125 |  | 单元测试 | 1d | 2019-06-03 | 2019-06-04 |  |
| 126 |  | 集成测试 | 1d | 2019-06-03 | 2019-06-04 |  |
| 127 |  | 功能部署上线 | 1d | 2019-06-03 | 2019-06-04 |  |
| 128 | 2.9 | **甲方验收（第一轮）** | 1d | 2019-06-03 | 2019-06-04 |  |
| 129 |  | 甲方验收（第一轮） | 1d | 2019-06-03 | 2019-06-04 |  |
| 130 | 2.10 | **甲方验收（第二轮）** | 1d | 2019-06-03 | 2019-06-04 |  |
| 131 |  | 甲方验收（第二轮） | 1d | 2019-06-03 | 2019-06-04 |  |

## Version 2 (saved 2019-06-11, file YJTXT_BI&APP_V2.0R-华正20190606.mpp)

Note of the change: run

Last finish stays 2019-09-30. Complete tasks 0 → 2.

Changed:

| ID | Task | Start | Finish | Complete |
| --- | --- | --- | --- | --- |
| 1 | **YJTXT_BI_V2.0R** | 2019-06-03 A |  | 0% → 2% |
| 8 | **基础经营指标分析** | 2019-06-10 A |  | 0% → 40% |
| 9 | 用户需求/需求分析 | 2019-06-10 A | 2019-06-10 A | 0% → 100% |
| 10 | 方案设计/Demo展示 | 2019-06-11 A | 2019-06-11 A | 0% → 100% |

## Version 3 (saved 2019-06-13, file YJTXT_BI&APP_V2.0R-华正20190613.mpp)

Note of the change: run document 20191107

Last finish stays 2019-09-30.

Changed:

| ID | Task | Start | Finish | Duration | Total float | Other |
| --- | --- | --- | --- | --- | --- | --- |
| 2 | **总裁驾驶舱DEMO上线** |  | 2019-06-07 → 2019-06-13 (+6d) | 4.88d → 8.88d |  |  |
| 6 | 功能测试 |  | 2019-06-06 → 2019-06-13 (+7d) | 1d → 6d |  |  |
| 7 | 功能部署上线 |  | 2019-06-07 → 2019-06-13 (+6d) | 1d → 5d |  |  |
| 14 | **损益表** | 2019-06-20 → 2019-06-13 (-7d) | 2019-06-28 → 2019-06-21 (-7d) | 6.88d → 7d | 0d → none |  |
| 15 | 用户需求/需求分析 | 2019-06-12 → 2019-06-13 (+1d) | 2019-06-13 → 2019-06-17 (+4d) | 1d → 3d |  |  |
| 20 | **资产负债表** | 2019-06-13 → 2019-06-20 (+7d) | 2019-06-21 → 2019-06-28 (+7d) | 7d → 6.88d | none → 0d |  |
| 21 | 用户需求/需求分析 |  | 2019-06-21 → 2019-06-24 (+3d) | 1d → 3d |  |  |
| 27 | 用户需求/需求分析 |  | 2019-06-28 → 2019-07-01 (+3d) | 1d → 3d |  |  |
| 33 | 用户需求/需求分析 |  | 2019-07-05 → 2019-07-08 (+3d) | 1d → 3d |  |  |
| 39 | 用户需求/需求分析 |  | 2019-07-12 → 2019-07-15 (+3d) | 1d → 3d |  |  |
| 45 | 用户需求/需求分析 |  | 2019-07-19 → 2019-07-22 (+3d) | 1d → 3d |  |  |
| 51 | 用户需求/需求分析 |  | 2019-07-26 → 2019-07-29 (+3d) | 1d → 3d |  |  |
| 57 | 用户需求/需求分析 | 2019-08-05 → 2019-08-01 (-4d) |  | 1d → 3d |  |  |
| 71 | **YJTXT_APP_V2.0R** |  | 2019-06-14 → 2019-06-21 (+7d) | 9.88d → 14.88d |  |  |
| 72 | **客户接待** |  | 2019-06-14 → 2019-06-21 (+7d) | 9.88d → 14.88d |  |  |
| 75 | 功能开发 |  | 2019-06-11 → 2019-06-18 (+7d) | 4d → 9d |  |  |
| 76 | 单元测试 | 2019-06-12 → 2019-06-19 (+7d) | 2019-06-12 → 2019-06-19 (+7d) |  |  |  |
| 77 | 集成测试 | 2019-06-13 → 2019-06-20 (+7d) | 2019-06-13 → 2019-06-20 (+7d) |  |  |  |
| 78 | 功能部署上线 | 2019-06-14 → 2019-06-21 (+7d) | 2019-06-14 → 2019-06-21 (+7d) |  |  |  |
| 79 | **考勤打卡** |  | 2019-06-14 → 2019-06-21 (+7d) | 9.88d → 14.88d |  |  |
| 82 | 功能开发 |  | 2019-06-11 → 2019-06-18 (+7d) | 4d → 9d |  |  |
| 83 | 单元测试 | 2019-06-12 → 2019-06-19 (+7d) | 2019-06-12 → 2019-06-19 (+7d) |  |  |  |
| 84 | 集成测试 | 2019-06-13 → 2019-06-20 (+7d) | 2019-06-13 → 2019-06-20 (+7d) |  |  |  |
| 85 | 功能部署上线 | 2019-06-14 → 2019-06-21 (+7d) | 2019-06-14 → 2019-06-21 (+7d) |  |  |  |
| 86 | **出差公出报备** |  | 2019-06-14 → 2019-06-21 (+7d) | 9.88d → 14.88d |  |  |
| 87 | 用户需求/需求分析 |  |  |  |  | resources 李龙 → 王晓旭 |
| 88 | 方案设计 |  |  |  |  | resources 李龙 → 王晓旭 |
| 89 | 功能开发 |  | 2019-06-11 → 2019-06-18 (+7d) | 4d → 9d |  | resources 李龙 → 王晓旭 |
| 90 | 单元测试 | 2019-06-12 → 2019-06-19 (+7d) | 2019-06-12 → 2019-06-19 (+7d) |  |  | resources 李龙 → 王晓旭 |
| 91 | 集成测试 | 2019-06-13 → 2019-06-20 (+7d) | 2019-06-13 → 2019-06-20 (+7d) |  |  | resources 李龙 → 王晓旭 |
| 92 | 功能部署上线 | 2019-06-14 → 2019-06-21 (+7d) | 2019-06-14 → 2019-06-21 (+7d) |  |  | resources 李龙 → 王晓旭 |
