How a schedule from MS Project changed from version to version. A marks actual dates.

## Version 1 (saved 2019-06-15, file YJTXT_BI&APP_V2.0R-华正20190613.mpp)

| ID | WBS | Task | Duration | Start | Finish | Predecessors | Complete | Total float | Constraint |
| --- | --- | --- | --- | --- | --- | --- | --- | --- | --- |
| 1 | 1 | **YJTXT_BI_V2.0R** | 2576.88d? | 2009-11-16 A | 2019-09-30 |  | 2% | 0d |  |
| 2 | 1.1 | **总裁驾驶舱DEMO上线** | 14.88d? | 2019-06-03 | 2019-06-20 |  |  | 0d |  |
| 3 |  | 用户需求/需求分析 | 1d | 2019-06-03 | 2019-06-03 |  |  |  |  |
| 4 |  | 方案设计/Demo展示 | 1d | 2019-06-04 | 2019-06-04 |  |  |  |  |
| 5 |  | 功能开发 | 1d | 2019-06-05 | 2019-06-05 |  |  |  |  |
| 6 |  | 页面自适应问题解决 | 0d? | 2019-06-15 | 2019-06-15 |  |  | 72d | start no earlier than 2019-06-15 |
| 7 |  | 人力数据展示(总规划人数取不到暂时用假数据代替) | 0.88d? | 2019-06-15 | 2019-06-15 |  |  | 76d | finish no earlier than 2019-06-15 |
| 8 |  | 现金流量展示三个指标的数据（该数据同样无法取得） | 0.88d? | 2019-06-15 | 2019-06-15 |  |  | 76d | start no earlier than 2019-06-15 |
| 9 |  | 页面ui风格的处理 | 4.88d? | 2019-06-15 | 2019-06-20 | 6 |  | 72d | finish no earlier than 2019-06-20 |
| 10 |  | 功能测试 | 6d | 2019-06-06 | 2019-06-13 |  |  |  |  |
| 11 |  | 功能部署上线 | 5d | 2019-06-07 | 2019-06-13 |  |  |  |  |
| 12 | 1.2 | **基础经营指标分析** | 2499.88d? | 2009-11-16 A | 2019-06-14 |  | 25% | 77d |  |
| 13 |  | 用户需求/需求分析 | 1d | 2019-06-10 A | 2019-06-10 A |  | 100% |  |  |
| 14 |  | 方案设计/Demo展示 | 1d | 2019-06-11 A | 2019-06-11 A |  | 100% |  |  |
| 15 |  | 功能开发 | 1d | 2019-06-12 | 2019-06-12 |  |  |  |  |
| 16 |  | 合同总额功能开发 | 1d? | 2009-11-16 | 2009-11-17 |  |  | 2575.88d |  |
| 17 |  | 业绩总额功能开发 | 1d? | 2009-11-16 | 2009-11-17 |  |  | 2575.88d |  |
| 18 |  | 回款功能开发 | 1d? | 2009-11-16 | 2009-11-17 |  |  | 2575.88d |  |
| 19 |  | 功能测试 | 1d | 2019-06-13 | 2019-06-13 |  |  |  |  |
| 20 |  | 功能部署上线 | 1d | 2019-06-14 | 2019-06-14 |  |  |  |  |
| 21 | 1.3 | **损益表** | 8d | 2019-06-13 | 2019-06-21 |  |  |  |  |
| 22 |  | 用户需求/需求分析 | 3d | 2019-06-13 | 2019-06-17 |  |  |  |  |
| 23 |  | 方案设计/Demo展示 | 1d | 2019-06-18 | 2019-06-18 |  |  |  |  |
| 24 |  | 功能开发 | 1d | 2019-06-19 | 2019-06-19 |  |  |  |  |
| 25 |  | 功能测试 | 1d | 2019-06-20 | 2019-06-20 |  |  |  |  |
| 26 |  | 功能部署上线 | 1d | 2019-06-21 | 2019-06-21 |  |  |  |  |
| 27 | 1.4 | **资产负债表** | 6.88d | 2019-06-20 | 2019-06-28 |  |  | 0d |  |
| 28 |  | 用户需求/需求分析 | 3d | 2019-06-20 | 2019-06-24 |  |  |  |  |
| 29 |  | 方案设计/Demo展示 | 1d | 2019-06-25 | 2019-06-25 |  |  |  |  |
| 30 |  | 功能开发 | 1d | 2019-06-26 | 2019-06-26 |  |  |  |  |
| 31 |  | 功能测试 | 1d | 2019-06-27 | 2019-06-27 |  |  |  |  |
| 32 |  | 功能部署上线 | 1d | 2019-06-28 | 2019-06-28 |  |  |  |  |
| 33 | 1.5 | **现金流量表** | 7d | 2019-06-27 | 2019-07-05 |  |  |  |  |
| 34 |  | 用户需求/需求分析 | 3d | 2019-06-27 | 2019-07-01 |  |  |  |  |
| 35 |  | 方案设计/Demo展示 | 1d | 2019-07-02 | 2019-07-02 |  |  |  |  |
| 36 |  | 功能开发 | 1d | 2019-07-03 | 2019-07-03 |  |  |  |  |
| 37 |  | 功能测试 | 1d | 2019-07-04 | 2019-07-04 |  |  |  |  |
| 38 |  | 功能部署上线 | 1d | 2019-07-05 | 2019-07-05 |  |  |  |  |
| 39 | 1.6 | **销售项目分析,业绩/回款报表** | 7d | 2019-07-04 | 2019-07-12 |  |  |  |  |
| 40 |  | 用户需求/需求分析 | 3d | 2019-07-04 | 2019-07-08 |  |  |  |  |
| 41 |  | 方案设计/Demo展示 | 1d | 2019-07-09 | 2019-07-09 |  |  |  |  |
| 42 |  | 功能开发 | 1d | 2019-07-10 | 2019-07-10 |  |  |  |  |
| 43 |  | 功能测试 | 1d | 2019-07-11 | 2019-07-11 |  |  |  |  |
| 44 |  | 功能部署上线 | 1d | 2019-07-12 | 2019-07-12 |  |  |  |  |
| 45 | 1.7 | **工程项目分析/售后400分析** | 7d | 2019-07-11 | 2019-07-19 |  |  |  |  |
| 46 |  | 用户需求/需求分析 | 3d | 2019-07-11 | 2019-07-15 |  |  |  |  |
| 47 |  | 方案设计/Demo展示 | 1d | 2019-07-16 | 2019-07-16 |  |  |  |  |
| 48 |  | 功能开发 | 1d | 2019-07-17 | 2019-07-17 |  |  |  |  |
| 49 |  | 功能测试 | 1d | 2019-07-18 | 2019-07-18 |  |  |  |  |
| 50 | 1.7.5 | **功能部署上线** | 1d | 2019-07-19 | 2019-07-19 |  |  |  |  |
| 51 | 1.7.5.1 | **员工结构分析/员工流动分析/薪酬分析** | 7d | 2019-07-18 | 2019-07-26 |  |  |  |  |
| 52 |  | 用户需求/需求分析 | 3d | 2019-07-18 | 2019-07-22 |  |  |  |  |
| 53 |  | 方案设计/Demo展示 | 1d | 2019-07-23 | 2019-07-23 |  |  |  |  |
| 54 |  | 功能开发 | 1d | 2019-07-24 | 2019-07-24 |  |  |  |  |
| 55 |  | 功能测试 | 1d | 2019-07-25 | 2019-07-25 |  |  |  |  |
| 56 |  | 功能部署上线 | 1d | 2019-07-26 | 2019-07-26 |  |  |  |  |
| 57 | 1.8 | **考勤分析/研发部门工作量统计/过程规范性得分统计** | 7d | 2019-07-25 | 2019-08-02 |  |  |  |  |
| 58 |  | 用户需求/需求分析 | 3d | 2019-07-25 | 2019-07-29 |  |  |  |  |
| 59 |  | 方案设计/Demo展示 | 1d | 2019-07-30 | 2019-07-30 |  |  |  |  |
| 60 |  | 功能开发 | 1d | 2019-07-31 | 2019-07-31 |  |  |  |  |
| 61 |  | 功能测试 | 1d | 2019-08-01 | 2019-08-01 |  |  |  |  |
| 62 |  | 功能部署上线 | 1d | 2019-08-02 | 2019-08-02 |  |  |  |  |
| 63 | 1.9 | **过程资产提交率统计/项目类采购分析** | 7d | 2019-08-01 | 2019-08-09 |  |  |  |  |
| 64 |  | 用户需求/需求分析 | 3d | 2019-08-01 | 2019-08-05 |  |  |  |  |
| 65 |  | 方案设计/Demo展示 | 1d | 2019-08-06 | 2019-08-06 |  |  |  |  |
| 66 |  | 功能开发 | 1d | 2019-08-07 | 2019-08-07 |  |  |  |  |
| 67 |  | 功能测试 | 1d | 2019-08-08 | 2019-08-08 |  |  |  |  |
| 68 |  | 功能部署上线 | 1d | 2019-08-09 | 2019-08-09 |  |  |  |  |
| 69 | 1.10 | **报表性能/页面交互调优** | 5.88d | 2019-08-12 | 2019-08-19 |  |  | 0d |  |
| 70 |  | 报表性能/页面交互调优 | 6d | 2019-08-12 | 2019-08-19 |  |  |  |  |

| ID | WBS | Task | Duration | Start | Finish | Total float |
| --- | --- | --- | --- | --- | --- | --- |
| 71 | 1.11 | **甲方验收（第一轮）** | 9.88d | 2019-08-12 | 2019-08-24 | 0d |
| 72 |  | 甲方验收（第一轮） | 11d | 2019-08-12 | 2019-08-24 |  |
| 73 | 1.12 | **甲方验收（第二轮）** | 5d | 2019-08-24 | 2019-08-31 | 0d |
| 74 |  | 甲方验收（第二轮） | 7d | 2019-08-24 | 2019-08-31 |  |
| 75 | 1.13 | **远程支持客户需求** | 21d | 2019-09-01 | 2019-09-30 | 0d |
| 76 |  | 远程支持客户需求 | 22d | 2019-09-01 | 2019-09-30 |  |
| 78 | 2 | **YJTXT_APP_V2.0R** | 15.88d | 2019-06-03 | 2019-06-21 | 0d |
| 79 | 2.1 | **客户接待** | 15.88d | 2019-06-03 | 2019-06-21 | 0d |
| 80 |  | 用户需求/需求分析 | 2d | 2019-06-03 | 2019-06-04 |  |
| 81 |  | 方案设计 | 1d | 2019-06-05 | 2019-06-05 |  |
| 82 |  | 功能开发 | 9d | 2019-06-06 | 2019-06-18 |  |
| 83 |  | 单元测试 | 1d | 2019-06-19 | 2019-06-19 |  |
| 84 |  | 集成测试 | 1d | 2019-06-20 | 2019-06-20 |  |
| 85 |  | 功能部署上线 | 1d | 2019-06-21 | 2019-06-21 |  |
| 86 | 2.2 | **考勤打卡** | 15.88d | 2019-06-03 | 2019-06-21 | 0d |
| 87 |  | 用户需求/需求分析 | 2d | 2019-06-03 | 2019-06-04 |  |
| 88 |  | 方案设计 | 1d | 2019-06-05 | 2019-06-05 |  |
| 89 |  | 功能开发 | 9d | 2019-06-06 | 2019-06-18 |  |
| 90 |  | 单元测试 | 1d | 2019-06-19 | 2019-06-19 |  |
| 91 |  | 集成测试 | 1d | 2019-06-20 | 2019-06-20 |  |
| 92 |  | 功能部署上线 | 1d | 2019-06-21 | 2019-06-21 |  |
| 93 | 2.3 | **出差公出报备** | 15.88d | 2019-06-03 | 2019-06-21 | 0d |
| 94 |  | 用户需求/需求分析 | 2d | 2019-06-03 | 2019-06-04 |  |
| 95 |  | 方案设计 | 1d | 2019-06-05 | 2019-06-05 |  |
| 96 |  | 功能开发 | 9d | 2019-06-06 | 2019-06-18 |  |
| 97 |  | 单元测试 | 1d | 2019-06-19 | 2019-06-19 |  |
| 98 |  | 集成测试 | 1d | 2019-06-20 | 2019-06-20 |  |
| 99 |  | 功能部署上线 | 1d | 2019-06-21 | 2019-06-21 |  |
| 100 | 2.4 | **假期管理** | 1d | 2019-06-03 | 2019-06-04 |  |
| 101 |  | 用户需求/需求分析 | 1d | 2019-06-03 | 2019-06-04 |  |
| 102 |  | 方案设计 | 1d | 2019-06-03 | 2019-06-04 |  |
| 103 |  | 功能开发 | 1d | 2019-06-03 | 2019-06-04 |  |
| 104 |  | 单元测试 | 1d | 2019-06-03 | 2019-06-04 |  |
| 105 |  | 集成测试 | 1d | 2019-06-03 | 2019-06-04 |  |
| 106 |  | 功能部署上线 | 1d | 2019-06-03 | 2019-06-04 |  |
| 107 | 2.5 | **考勤明细** | 1d | 2019-06-03 | 2019-06-04 |  |
| 108 |  | 用户需求/需求分析 | 1d | 2019-06-03 | 2019-06-04 |  |
| 109 |  | 方案设计 | 1d | 2019-06-03 | 2019-06-04 |  |
| 110 |  | 功能开发 | 1d | 2019-06-03 | 2019-06-04 |  |
| 111 |  | 单元测试 | 1d | 2019-06-03 | 2019-06-04 |  |
| 112 |  | 集成测试 | 1d | 2019-06-03 | 2019-06-04 |  |
| 113 |  | 功能部署上线 | 1d | 2019-06-03 | 2019-06-04 |  |
| 114 | 2.6 | **待办列表** | 1d | 2019-06-03 | 2019-06-04 |  |
| 115 |  | 用户需求/需求分析 | 1d | 2019-06-03 | 2019-06-04 |  |
| 116 |  | 方案设计 | 1d | 2019-06-03 | 2019-06-04 |  |
| 117 |  | 功能开发 | 1d | 2019-06-03 | 2019-06-04 |  |
| 118 |  | 单元测试 | 1d | 2019-06-03 | 2019-06-04 |  |
| 119 |  | 集成测试 | 1d | 2019-06-03 | 2019-06-04 |  |
| 120 |  | 功能部署上线 | 1d | 2019-06-03 | 2019-06-04 |  |
| 121 | 2.7 | **日报管理** | 1d | 2019-06-03 | 2019-06-04 |  |
| 122 |  | 用户需求/需求分析 | 1d | 2019-06-03 | 2019-06-04 |  |
| 123 |  | 方案设计 | 1d | 2019-06-03 | 2019-06-04 |  |
| 124 |  | 功能开发 | 1d | 2019-06-03 | 2019-06-04 |  |
| 125 |  | 单元测试 | 1d | 2019-06-03 | 2019-06-04 |  |
| 126 |  | 集成测试 | 1d | 2019-06-03 | 2019-06-04 |  |
| 127 |  | 功能部署上线 | 1d | 2019-06-03 | 2019-06-04 |  |
| 128 | 2.8 | **置换功能** | 1d | 2019-06-03 | 2019-06-04 |  |
| 129 |  | 用户需求/需求分析 | 1d | 2019-06-03 | 2019-06-04 |  |
| 130 |  | 方案设计 | 1d | 2019-06-03 | 2019-06-04 |  |
| 131 |  | 功能开发 | 1d | 2019-06-03 | 2019-06-04 |  |
| 132 |  | 单元测试 | 1d | 2019-06-03 | 2019-06-04 |  |
| 133 |  | 集成测试 | 1d | 2019-06-03 | 2019-06-04 |  |
| 134 |  | 功能部署上线 | 1d | 2019-06-03 | 2019-06-04 |  |
| 135 | 2.9 | **甲方验收（第一轮）** | 1d | 2019-06-03 | 2019-06-04 |  |
| 136 |  | 甲方验收（第一轮） | 1d | 2019-06-03 | 2019-06-04 |  |
| 137 | 2.10 | **甲方验收（第二轮）** | 1d | 2019-06-03 | 2019-06-04 |  |
| 138 |  | 甲方验收（第二轮） | 1d | 2019-06-03 | 2019-06-04 |  |

## Version 2 (saved 2019-06-15, file YJTXT_BI&APP_V2.0R-华正20190615.mpp)

Last finish stays 2019-09-30.

Changed:

| ID | Task | Start | Finish | Duration | Total float | Other |
| --- | --- | --- | --- | --- | --- | --- |
| 2 | **总裁驾驶舱DEMO上线** |  | 2019-06-20 → 2019-06-19 (-1d) | 14.88d? → 13.88d? |  |  |
| 9 | 页面ui风格的处理 | 2019-06-15 → 2019-06-17 (+2d) | 2019-06-20 → 2019-06-19 (-1d) | 4.88d? → 3d | 72d → 73d | constraint finish no earlier than 2019-06-20 → finish no earlier than 2019-06-19 |

## Version 3 (saved 2019-06-18, file YJTXT_BI&APP_V2.0R-华正20190617.mpp)

Last finish stays 2019-09-30.

Added:

| ID | Task | Duration | Start | Finish | Constraint |
| --- | --- | --- | --- | --- | --- |
| 10 | 处理分辨率不兼容的问题 | 0.88d? | 2019-06-18 | 2019-06-18 | finish no earlier than 2019-06-18 |
| 21 | 修改页面布局及样式 | 1.88d? | 2019-06-17 | 2019-06-18 | finish no earlier than 2019-06-18 |

Changed:

| ID | Task | Start | Finish | Duration | Complete | Total float | Other |
| --- | --- | --- | --- | --- | --- | --- | --- |
| 1 | **YJTXT_BI_V2.0R** | 2009-11-16 A → 2019-06-03 A (+3486d) |  | 2576.88d? → 86.88d? |  |  |  |
| 13 | **基础经营指标分析** | 2009-11-16 A → 2019-06-10 A (+3493d) | 2019-06-14 → 2019-06-18 (+4d) | 2499.88d? → 7.88d? | 25% → 21% | 77d → 74d |  |
| 17 | 合同总额功能开发 | 2009-11-16 → 2019-06-12 (+3495d) | 2009-11-17 → 2019-06-12 (+3494d) | 1d? → 0.88d? |  | 2575.88d → 79d | constraint none → finish no earlier than 2019-06-12 |
| 18 | 业绩总额功能开发 | 2009-11-16 → 2019-06-12 (+3495d) | 2009-11-17 → 2019-06-12 (+3494d) | 1d? → 0.88d? |  | 2575.88d → 79d | constraint none → finish no earlier than 2019-06-12 |
| 19 | 回款功能开发 | 2009-11-16 → 2019-06-12 (+3495d) | 2009-11-17 → 2019-06-12 (+3494d) | 1d? → 0.88d? |  | 2575.88d → 79d | constraint none → finish no earlier than 2019-06-12 |

## Version 4 (saved 2019-06-21, file YJTXT_BI&APP_V2.0R-华正20190622.mpp)

Last finish stays 2019-09-30. Complete tasks 2 → 10.

Added:

| ID | Task | Duration | Start | Finish | Constraint | Resources |
| --- | --- | --- | --- | --- | --- | --- |
| 50 | exceldemo原型 | 1d | 2019-06-19 A | 2019-06-20 A |  | 高祥云 |
| 51 | 根据需求进行数据建模 | 1d | 2019-06-19 A | 2019-06-20 A | start no earlier than 2019-06-19 | 罗加云 |
| 52 | exceldemo原型问题分析及修改 | 1d | 2019-06-19 A | 2019-06-20 A |  | 高祥云 |
| 53 | 测试数据插入 | 1d | 2019-06-20 A | 2019-06-20 A | finish no earlier than 2019-06-20 | 杜振兴 |
| 54 | bi或report初版页面 | 1d | 2019-06-20 A | 2019-06-20 A |  | 杜振兴 |
| 56 | 进行初版页面的问题跟踪 | 0.88d? | 2019-06-21 | 2019-06-21 | finish no earlier than 2019-06-21 | 杜振兴; 高祥云 |
| 57 | etl数据确认 | 0.88d? | 2019-06-20 A | 2019-06-20 | start no earlier than 2019-06-20 | 罗加云 |
| 58 | 如有问题，问题解决方案 | 0.88d? | 2019-06-21 | 2019-06-21 | finish no earlier than 2019-06-21 | 杜振兴; 高祥云 |
| 59 | 页面原型再版 | 1.88d? | 2019-06-21 | 2019-06-24 | finish no earlier than 2019-06-24 | 杜振兴 |
| 60 | etl数据抽取转换 | 1d | 2019-06-21 A | 2019-06-21 | finish no earlier than 2019-06-21 | 罗加云 |
| 61 | 页面原型在版迭代 | 0.88d? | 2019-06-24 | 2019-06-24 | finish no earlier than 2019-06-24 | 杜振兴 |
| 62 | etl数据抽取转换迭代 | 0.88d? | 2019-06-24 | 2019-06-24 | finish no earlier than 2019-06-24 | 罗加云 |
| 64 | 页面逻辑确认 | 1d? | 2019-06-24 | 2019-06-25 | start no earlier than 2019-06-24 | 杜振兴 |
| 65 | 页面数据确认 | 1d? | 2019-06-24 | 2019-06-25 | start no earlier than 2019-06-24 | 杜振兴; 罗加云 |
| 101 | bug调试 | 0.88d? | 2019-06-21 | 2019-06-23 | finish no earlier than 2019-06-23 |  |
| 102 | 页面调整美化 | 0.88d? | 2019-06-21 | 2019-06-21 | finish no earlier than 2019-06-21 |  |
| 110 | 用户测试 | 1d? | 2019-06-24 | 2019-06-24 | finish no earlier than 2019-06-24 |  |
| 111 | bug调整 | 1d? | 2019-06-21 | 2019-06-23 | finish no earlier than 2019-06-23 |  |

Changed:

| ID | Task | Start | Finish | Duration | Complete | Total float | Other |
| --- | --- | --- | --- | --- | --- | --- | --- |
| 1 | **YJTXT_BI_V2.0R** |  |  |  | 2% → 8% |  |  |
| 2 | **总裁驾驶舱DEMO上线** | 2019-06-03 A |  |  | 0% → 10% |  |  |
| 3 | 用户需求/需求分析 | 2019-06-03 A | 2019-06-03 A |  | 0% → 100% |  |  |
| 5 | 功能开发 | 2019-06-05 A | 2019-06-05 A |  | 0% → 100% |  |  |
| 23 | **损益表** |  |  | 8d → 7.88d |  | none → 0d |  |
| 29 | **资产负债表** | 2019-06-20 → 2019-06-24 (+4d) |  | 6.88d → 4.88d |  |  |  |
| 30 | 用户需求/需求分析 | 2019-06-20 → 2019-06-24 (+4d) | 2019-06-24 → 2019-06-26 (+2d) |  |  |  |  |
| 31 | 方案设计/Demo展示 | 2019-06-25 → 2019-06-24 (-1d) | 2019-06-25 → 2019-06-26 (+1d) | 1d → 3d |  |  |  |
| 35 | **现金流量表** |  |  | 7d → 6.88d |  | none → 0d |  |
| 41 | **销售项目分析+行业业绩统计** |  |  | 7d → 6.88d |  | none → 0d | was named 销售项目分析,业绩/回款报表 |
| 47 | **工程项目分析/售后400分析/+确认收入统计** | 2019-07-11 → 2019-06-18 A (-23d) | 2019-07-19 → 2019-06-25 (-24d) | 7d → 5d? | 0% → 50% | none → 69.88d | was named 工程项目分析/售后400分析 |
| 48 | 用户需求/需求分析 | 2019-07-11 → 2019-06-18 A (-23d) | 2019-07-15 → 2019-06-19 A (-26d) | 3d → 2d | 0% → 100% |  |  |
| 49 | **方案设计/Demo展示** | 2019-07-16 → 2019-06-19 A (-27d) | 2019-07-16 → 2019-06-20 A (-26d) | 1d → 1.88d | 0% → 100% |  |  |
| 55 | **功能开发** | 2019-07-17 → 2019-06-20 A (-27d) | 2019-07-17 → 2019-06-24 (-23d) | 1d → 2.88d? | 0% → 15% | none → 0d |  |
| 63 | **功能测试** | 2019-07-18 → 2019-06-24 (-24d) | 2019-07-18 → 2019-06-25 (-23d) | 1d → 1d? |  | none → 69.88d |  |
| 66 | 功能部署上线 | 2019-07-19 → 2019-06-25 (-24d) | 2019-07-19 → 2019-06-25 (-24d) | 1d → 0d |  |  |  |
| 67 | **员工结构分析/员工流动分析/薪酬分析** |  |  | 7d → 6.88d |  | none → 0d |  |
| 73 | **考勤分析/研发部门工作量统计/过程规范性得分统计** |  |  | 7d → 6.88d |  | none → 0d |  |
| 79 | **过程资产提交率统计/项目类采购分析** |  |  | 7d → 6.88d |  | none → 0d |  |
| 94 | **YJTXT_APP_V2.0R** |  | 2019-06-21 → 2019-08-16 (+56d) | 15.88d → 55.88d? |  |  |  |
| 95 | **客户接待** |  | 2019-06-21 → 2019-06-24 (+3d) | 15.88d → 16.88d? |  |  |  |
| 100 | **集成测试** | 2019-06-20 → 2019-06-21 (+1d) | 2019-06-20 → 2019-06-21 (+1d) | 1d → 0.88d? |  |  |  |
| 103 | 功能部署上线 | 2019-06-21 → 2019-06-24 (+3d) | 2019-06-21 → 2019-06-24 (+3d) |  |  |  |  |
| 104 | **考勤打卡** |  | 2019-06-21 → 2019-06-24 (+3d) | 15.88d → 16.88d |  |  |  |
| 109 | **集成测试** |  | 2019-06-20 → 2019-06-24 (+4d) | 1d → 3d |  |  |  |
| 112 | 功能部署上线 | 2019-06-21 → 2019-06-24 (+3d) | 2019-06-21 → 2019-06-24 (+3d) |  |  |  |  |
| 113 | **出差公出报备** |  | 2019-06-21 → 2019-06-26 (+5d) | 15.88d → 18.88d |  |  |  |
| 116 | 功能开发 |  | 2019-06-18 → 2019-06-26 (+8d) | 9d → 16d |  |  |  |
| 120 | **日报管理** | 2019-06-03 → 2019-06-28 (+25d) | 2019-06-04 → 2019-07-19 (+45d) | 1d → 15.88d |  | none → 0d |  |
| 121 | 用户需求/需求分析 | 2019-06-03 → 2019-06-28 (+25d) | 2019-06-04 → 2019-07-02 (+28d) | 1d → 3d |  |  |  |
| 122 | 方案设计 | 2019-06-03 → 2019-07-02 (+29d) | 2019-06-04 → 2019-07-04 (+30d) | 1d → 3d |  |  |  |
| 123 | 功能开发 | 2019-06-03 → 2019-07-04 (+31d) | 2019-06-04 → 2019-07-12 (+38d) | 1d → 7d |  |  |  |
| 124 | 单元测试 | 2019-06-03 → 2019-07-15 (+42d) | 2019-06-04 → 2019-07-16 (+42d) | 1d → 2d |  |  |  |
| 125 | 集成测试 | 2019-06-03 → 2019-07-17 (+44d) | 2019-06-04 → 2019-07-18 (+44d) | 1d → 2d |  |  |  |
| 126 | 功能部署上线 | 2019-06-03 → 2019-07-18 (+45d) | 2019-06-04 → 2019-07-19 (+45d) | 1d → 2d |  |  |  |
| 127 | **待办列表** | 2019-06-03 → 2019-07-22 (+49d) | 2019-06-04 → 2019-08-02 (+59d) | 1d → 9.88d |  | none → 0d |  |
| 128 | 用户需求/需求分析 | 2019-06-03 → 2019-07-22 (+49d) | 2019-06-04 → 2019-07-23 (+49d) | 1d → 2d |  |  |  |
| 129 | 方案设计 | 2019-06-03 → 2019-07-24 (+51d) | 2019-06-04 → 2019-07-24 (+50d) |  |  |  |  |
| 130 | 功能开发 | 2019-06-03 → 2019-07-25 (+52d) | 2019-06-04 → 2019-07-30 (+56d) | 1d → 4d |  |  |  |
| 131 | 单元测试 | 2019-06-03 → 2019-07-31 (+58d) | 2019-06-04 → 2019-07-31 (+57d) |  |  |  |  |
| 132 | 集成测试 | 2019-06-03 → 2019-08-01 (+59d) | 2019-06-04 → 2019-08-01 (+58d) |  |  |  |  |
| 133 | 功能部署上线 | 2019-06-03 → 2019-08-02 (+60d) | 2019-06-04 → 2019-08-02 (+59d) |  |  |  |  |
| 134 | **考勤明细** | 2019-06-03 → 2019-08-05 (+63d) | 2019-06-04 → 2019-08-09 (+66d) | 1d → 4.88d |  | none → 0d |  |
| 135 | 用户需求/需求分析 | 2019-06-03 → 2019-08-05 (+63d) | 2019-06-04 → 2019-08-05 (+62d) |  |  |  |  |
| 136 | 方案设计 | 2019-06-03 → 2019-08-05 (+63d) | 2019-06-04 → 2019-08-05 (+62d) |  |  |  |  |
| 137 | 功能开发 | 2019-06-03 → 2019-08-06 (+64d) | 2019-06-04 → 2019-08-07 (+64d) | 1d → 2d |  |  |  |
| 138 | 单元测试 | 2019-06-03 → 2019-08-08 (+66d) | 2019-06-04 → 2019-08-08 (+65d) |  |  |  |  |
| 139 | 集成测试 | 2019-06-03 → 2019-08-08 (+66d) | 2019-06-04 → 2019-08-08 (+65d) |  |  |  |  |
| 140 | 功能部署上线 | 2019-06-03 → 2019-08-09 (+67d) | 2019-06-04 → 2019-08-09 (+66d) |  |  |  |  |
| 141 | **假期管理** |  | 2019-06-04 → 2019-08-16 (+73d) | 1d → 55.88d |  | none → 0d |  |
| 142 | 用户需求/需求分析 | 2019-06-03 → 2019-08-12 (+70d) | 2019-06-04 → 2019-08-12 (+69d) |  |  |  |  |
| 143 | 方案设计 | 2019-06-03 → 2019-08-12 (+70d) | 2019-06-04 → 2019-08-12 (+69d) |  |  |  |  |
| 144 | 功能开发 | 2019-06-03 → 2019-08-13 (+71d) | 2019-06-04 → 2019-08-14 (+71d) | 1d → 2d |  |  |  |
| 145 | 单元测试 | 2019-06-03 → 2019-08-15 (+73d) | 2019-06-04 → 2019-08-15 (+72d) |  |  |  |  |
| 146 | 集成测试 | 2019-06-03 → 2019-08-15 (+73d) | 2019-06-04 → 2019-08-15 (+72d) |  |  |  |  |
| 147 | 功能部署上线 | 2019-06-03 → 2019-08-16 (+74d) | 2019-06-04 → 2019-08-16 (+73d) |  |  |  |  |
