How a schedule from MS Project changed from version to version. A marks actual dates.

## Version 1 (saved 2019-08-29)

Note of the change: 金信大数据平台

| ID | WBS | Task | Duration | Start | Finish | Predecessors | Complete | Constraint |
| --- | --- | --- | --- | --- | --- | --- | --- | --- |
| 1 | 1 | **YJTXT_BI_V2.0R** | 87d | 2019-06-03 A | 2019-09-30 |  | 3% |  |
| 2 | 1.1 | **总裁驾驶舱DEMO上线** | 30d | 2019-06-03 A | 2019-07-11 |  | 8% |  |
| 3 |  | 用户需求/需求分析 | 1d | 2019-06-03 A | 2019-06-03 A |  | 100% |  |
| 4 |  | 方案设计/Demo展示 | 1d | 2019-06-04 | 2019-06-04 |  |  |  |
| 5 |  | 功能开发 | 1d | 2019-06-05 A | 2019-06-05 A |  | 100% |  |
| 6 |  | 页面自适应问题解决 | 1d | 2019-06-15 | 2019-06-17 |  |  | start no earlier than 2019-06-15 |
| 7 |  | 人力数据展示(总规划人数取不到暂时用假数据代替) | 1d | 2019-06-15 | 2019-06-17 |  |  | finish no earlier than 2019-06-15 |
| 8 |  | 现金流量展示三个指标的数据（该数据同样无法取得） | 1d | 2019-06-15 | 2019-06-17 |  |  | start no earlier than 2019-06-15 |
| 9 |  | 页面ui风格的处理 | 3d | 2019-06-17 | 2019-06-20 | 6 |  |  |
| 10 |  | 处理分辨率不兼容的问题 | 1d | 2019-06-18 | 2019-06-19 |  |  | finish no earlier than 2019-06-18 |
| 11 |  | 功能测试 | 6d | 2019-06-06 | 2019-06-13 |  |  |  |
| 12 |  | 功能部署上线 | 5d | 2019-06-07 | 2019-06-13 |  |  |  |
| 13 |  | 修改联动问题 | 4d | 2019-07-08 | 2019-07-11 |  |  | finish no earlier than 2019-07-09 |
| 14 | 1.2 | **基础经营指标分析** | 26d | 2019-06-10 A | 2019-07-12 |  | 13% |  |
| 15 |  | 用户需求/需求分析 | 1d | 2019-06-10 A | 2019-06-10 A |  | 100% |  |
| 16 |  | 方案设计/Demo展示 | 1d | 2019-06-11 A | 2019-06-11 A |  | 100% |  |
| 17 |  | 功能开发 | 1d | 2019-06-12 | 2019-06-12 |  |  |  |
| 18 |  | 合同总额功能开发 | 1d | 2019-06-12 | 2019-06-13 |  |  | finish no earlier than 2019-06-12 |
| 19 |  | 业绩总额功能开发 | 1d | 2019-06-12 | 2019-06-13 |  |  | finish no earlier than 2019-06-12 |
| 20 |  | 回款功能开发 | 1d | 2019-06-12 | 2019-06-13 |  |  | finish no earlier than 2019-06-12 |
| 21 |  | 功能测试 | 1d | 2019-06-13 | 2019-06-13 |  |  |  |
| 22 |  | 修改页面布局及样式 | 2d | 2019-06-17 | 2019-06-19 |  |  | finish no earlier than 2019-06-18 |
| 23 |  | 功能部署上线 | 1d | 2019-06-14 | 2019-06-14 |  |  |  |
| 24 |  | 修改权限问题 | 5d | 2019-07-08 | 2019-07-12 |  |  | finish no earlier than 2019-07-10 |
| 25 | 1.3 | **损益表** | 14d | 2019-06-24 | 2019-07-12 |  |  |  |
| 26 |  | 用户需求/需求分析 | 4d | 2019-06-24 | 2019-06-27 |  |  |  |
| 27 |  | 方案设计/Demo展示 | 4d | 2019-06-24 | 2019-06-27 |  |  |  |
| 28 |  | 功能开发 | 3d | 2019-07-03 | 2019-07-05 |  |  |  |
| 29 |  | 功能测试 | 3d | 2019-07-08 | 2019-07-10 |  |  |  |
| 30 |  | 功能部署上线 | 1d | 2019-07-11 | 2019-07-12 |  |  |  |
| 31 | 1.4 | **资产负债表** | 5d | 2019-06-24 | 2019-06-28 |  |  |  |
| 32 |  | 用户需求/需求分析 | 3d | 2019-06-24 | 2019-06-26 |  |  |  |
| 33 |  | 方案设计/Demo展示 | 3d | 2019-06-24 | 2019-06-26 |  |  |  |
| 34 |  | 功能开发 | 1d | 2019-06-26 | 2019-06-26 |  |  |  |
| 35 |  | 功能测试 | 1d | 2019-06-27 | 2019-06-27 |  |  |  |
| 36 |  | 功能部署上线 | 1d | 2019-06-28 | 2019-06-28 |  |  |  |
| 37 | 1.5 | **现金流量表** | 7d | 2019-06-27 | 2019-07-05 |  |  |  |
| 38 |  | 用户需求/需求分析 | 3d | 2019-06-27 | 2019-07-01 |  |  |  |
| 39 |  | 方案设计/Demo展示 | 1d | 2019-07-02 | 2019-07-02 |  |  |  |
| 40 |  | 功能开发 | 1d | 2019-07-03 | 2019-07-03 |  |  |  |
| 41 |  | 功能测试 | 1d | 2019-07-04 | 2019-07-04 |  |  |  |
| 42 |  | 功能部署上线 | 1d | 2019-07-05 | 2019-07-05 |  |  |  |
| 43 | 1.6 | **工程项目分析/售后400分析** | 19d | 2019-06-18 A | 2019-07-12 |  | 39% |  |
| 44 |  | 用户需求/需求分析 | 2d | 2019-06-18 A | 2019-06-19 A |  | 100% |  |
| 45 | 1.6.2 | **方案设计/Demo展示** | 2d | 2019-06-19 A | 2019-06-21 |  | 99% |  |
| 46 |  | exceldemo原型 | 1d | 2019-06-19 A | 2019-06-20 A |  | 100% |  |
| 47 |  | 根据需求进行数据建模 | 1d | 2019-06-19 A | 2019-06-20 A |  | 100% | start no earlier than 2019-06-19 |
| 48 |  | exceldemo原型问题分析及修改 | 1d | 2019-06-19 A | 2019-06-20 A |  | 100% |  |
| 49 |  | 测试数据插入 | 1d | 2019-06-20 A | 2019-06-20 A |  | 100% | finish no earlier than 2019-06-20 |
| 50 |  | bi或report初版页面 | 1d | 2019-06-20 A | 2019-06-20 A |  | 100% |  |
| 51 | 1.6.3 | **功能开发** | 3d | 2019-06-20 A | 2019-06-25 |  | 14% |  |
| 52 |  | 进行初版页面的问题跟踪 | 1d | 2019-06-21 | 2019-06-24 |  |  | finish no earlier than 2019-06-21 |
| 53 |  | etl数据确认 | 1d | 2019-06-20 A | 2019-06-21 |  | 66% | start no earlier than 2019-06-20 |
| 54 |  | 如有问题，问题解决方案 | 1d | 2019-06-21 | 2019-06-24 |  |  | finish no earlier than 2019-06-21 |
| 55 |  | 页面原型再版 | 2d | 2019-06-21 | 2019-06-25 |  |  | finish no earlier than 2019-06-24 |
| 56 |  | etl数据抽取转换 | 1d | 2019-06-21 A | 2019-06-21 |  | 44% | finish no earlier than 2019-06-21 |
| 57 |  | 页面原型在版迭代 | 1d | 2019-06-24 | 2019-06-25 |  |  | finish no earlier than 2019-06-24 |
| 58 |  | etl数据抽取转换迭代 | 1d | 2019-06-24 | 2019-06-25 |  |  | finish no earlier than 2019-06-24 |
| 59 | 1.6.4 | **功能测试** | 2d | 2019-06-24 | 2019-06-26 |  |  |  |
| 60 |  | 数据逻辑确认 | 2d | 2019-06-24 | 2019-06-26 |  |  | start no earlier than 2019-06-24 |
| 61 |  | 功能部署上线 | 2d | 2019-06-25 | 2019-06-26 |  |  |  |
| 62 |  | 修改权限问题 | 2d | 2019-07-10 | 2019-07-12 |  |  | start no earlier than 2019-07-10 |
| 63 | 1.7 | **人力资源分析** | 13d | 2019-06-25 | 2019-07-11 |  |  |  |
| 64 |  | 用户需求/需求分析 | 1d | 2019-06-25 | 2019-06-26 |  |  | start no earlier than 2019-06-25 |
| 65 | 1.7.2 | **方案设计/Demo展示** | 1d | 2019-06-25 | 2019-06-26 |  |  |  |
| 66 |  | exceldemo原型 | 1d | 2019-06-25 | 2019-06-26 |  |  |  |
| 67 |  | 根据需求进行数据建模 | 1d | 2019-06-25 | 2019-06-26 |  |  |  |
| 68 |  | exceldemo原型问题分析及修改 | 1d | 2019-06-25 | 2019-06-26 |  |  |  |
| 69 |  | 测试数据插入 | 1d | 2019-06-25 | 2019-06-26 |  |  |  |
| 70 |  | bi或report初版页面 | 1d | 2019-06-25 | 2019-06-26 |  |  |  |

| ID | WBS | Task | Duration | Start | Finish | Predecessors | Constraint |
| --- | --- | --- | --- | --- | --- | --- | --- |
| 71 | 1.7.3 | **功能开发** | 5d | 2019-06-25 | 2019-07-01 |  |  |
| 72 |  | 进行初版页面的问题跟踪 | 1d | 2019-06-25 | 2019-06-26 |  |  |
| 73 |  | etl数据确认 | 1d | 2019-06-25 | 2019-06-26 |  |  |
| 74 |  | 如有问题，问题解决方案 | 2d | 2019-06-26 | 2019-06-27 |  |  |
| 75 |  | 页面原型再版 | 1d | 2019-06-27 | 2019-06-27 |  | finish no earlier than 2019-06-27 |
| 76 |  | etl数据抽取转换 | 2d | 2019-06-27 | 2019-06-28 |  | finish no earlier than 2019-06-28 |
| 77 |  | 页面原型在版迭代 | 3d | 2019-06-27 | 2019-07-01 |  | finish no earlier than 2019-07-01 |
| 78 |  | etl数据抽取转换迭代 | 3d | 2019-06-27 | 2019-07-01 |  | finish no earlier than 2019-07-01 |
| 79 | 1.7.4 | **功能测试** | 8d | 2019-07-02 | 2019-07-11 |  |  |
| 80 |  | 页面逻辑确认 | 9d | 2019-07-01 | 2019-07-11 |  | finish no earlier than 2019-07-03 |
| 81 |  | 页面数据确认 | 9d | 2019-07-01 | 2019-07-11 |  |  |
| 82 |  | 功能部署上线 | 7d | 2019-07-03 | 2019-07-11 |  |  |
| 83 | 1.8 | **三表相关开发** | 40d | 2019-07-01 | 2019-08-23 |  |  |
| 84 | 1.8.1 | **etl功能** | 30d | 2019-07-01 | 2019-08-09 |  |  |
| 85 |  | etl需求整理 | 3d | 2019-07-01 | 2019-07-03 |  | finish no earlier than 2019-07-03 |
| 86 |  | 配合方案确定 | 5d | 2019-07-04 | 2019-07-10 |  | finish no earlier than 2019-07-08 |
| 87 |  | etl数据建模 | 1d | 2019-07-09 | 2019-07-09 |  | finish no earlier than 2019-07-09 |
| 88 |  | etl转换底层数据表 | 1d | 2019-07-09 | 2019-07-09 |  | finish no earlier than 2019-07-09 |
| 89 |  | etl查漏数据表 | 1d | 2019-07-11 | 2019-07-11 |  | finish no earlier than 2019-07-11 |
| 90 |  | etl进行损益表数据配置，汇总逻辑，权限逻辑，业务实现等内容的相关开发 | 5d | 2019-07-10 | 2019-07-16 |  | finish no earlier than 2019-07-16 |
| 91 |  | etl检验损益表相关数据逻辑 | 1d | 2019-07-17 | 2019-07-17 |  | finish no earlier than 2019-07-17 |
| 92 |  | etl进行资产负债表数据配置，汇总逻辑，权限逻辑，业务实现等内容的相关开发 | 5d | 2019-07-18 | 2019-07-24 |  | finish no earlier than 2019-07-24 |
| 93 |  | etl检验资产负债表相关数据逻辑 | 1d | 2019-07-25 | 2019-07-25 |  | finish no earlier than 2019-07-25 |
| 94 |  | etl进行现金流量表数据配置，汇总逻辑，权限逻辑，业务实现等内容的相关开发 | 5d | 2019-07-26 | 2019-08-01 |  | finish no earlier than 2019-08-01 |
| 95 |  | etl检验现金流量表相关数据逻辑 | 1d | 2019-08-02 | 2019-08-02 |  | finish no earlier than 2019-08-02 |
| 96 |  | 修改现金流量表的错误逻辑 | 1d | 2019-08-06 | 2019-08-06 |  |  |
| 97 |  | 解决未完成的相关问题 | 5d | 2019-08-05 | 2019-08-09 |  | finish no earlier than 2019-08-09 |
| 98 | 1.8.2 | **中台开发** | 30d | 2019-07-01 | 2019-08-09 |  |  |
| 99 |  | 需求整理 | 3d | 2019-07-01 | 2019-07-03 |  | finish no earlier than 2019-07-03 |
| 100 |  | 配合方案确定 | 5d | 2019-07-04 | 2019-07-10 |  | finish no earlier than 2019-07-08 |
| 101 |  | 中台相关设计方案的确定 | 5d | 2019-07-09 | 2019-07-15 |  | finish no earlier than 2019-07-15 |
| 102 |  | 中台搭建 | 1d | 2019-07-16 | 2019-07-16 |  | finish no earlier than 2019-07-16 |
| 103 |  | 中台开发任务调度模块底层实现 | 7d | 2019-07-17 | 2019-07-25 |  | finish no earlier than 2019-07-25 |
| 104 |  | 中台开发相关页面 | 3d | 2019-07-26 | 2019-07-30 |  | finish no earlier than 2019-07-30 |
| 105 |  | 中台进行相关测试 | 3d | 2019-07-31 | 2019-08-02 |  | finish no earlier than 2019-08-02 |
| 106 |  | 中台集成测试问题解决 | 5d | 2019-08-05 | 2019-08-09 |  | finish no earlier than 2019-08-09 |
| 107 | 1.8.3 | **report开发** | 40d | 2019-07-01 | 2019-08-23 |  |  |
| 108 |  | 需求整理：3天 （7.1 7.2 7.3） | 3d | 2019-07-01 | 2019-07-04 |  | start no earlier than 2019-07-01 |
| 109 |  | 配合方案确定：3天 （7.4 7.5 7.8） | 5d | 2019-07-04 | 2019-07-10 |  | start no earlier than 2019-07-04 |
| 110 |  | 整理相关需求：1天 （7.9） | 1d | 2019-07-09 | 2019-07-09 |  | finish no earlier than 2019-07-09 |
| 111 | 1.8.3.4 | **损益表开发** | 9d | 2019-07-11 | 2019-07-23 |  |  |
| 112 |  | 损益表开发 2天 （7.10 7.11） | 2d | 2019-07-10 | 2019-07-12 |  | start no earlier than 2019-07-10 |
| 113 |  | 损益表钻取利润中心的开发 1天 （7.12） ->利润中心子表的开发 | 1d | 2019-07-15 | 2019-07-15 |  | start no earlier than 2019-07-15 |
| 114 |  | 损益表及利润中心钻取到会计科目的开发 1天 （7.15） ->会计科目子表的开发 | 1d | 2019-07-16 | 2019-07-16 |  | start no earlier than 2019-07-16 |
| 115 |  | 钻取到明细表的开发 1天 （7.16） ->明细表的开发 | 1d | 2019-07-17 | 2019-07-17 |  | start no earlier than 2019-07-17 |
| 116 |  | 损益表核对页面及逻辑修改 2天 （7.18 7.19） | 2d | 2019-07-18 | 2019-07-19 | 91 | finish no earlier than 2019-07-19 |
| 117 |  | 损益表初步上线（小范围测试试用） | 1d | 2019-07-22 | 2019-07-22 |  | finish no earlier than 2019-07-22 |
| 118 |  | 损益表正式上线 | 1d | 2019-07-23 | 2019-07-23 |  | finish no earlier than 2019-07-23 |
| 119 |  | 财务新增横向分析需求的相关实现调研 | 6d | 2019-08-02 | 2019-08-09 |  | finish no earlier than 2019-08-07 |
| 120 |  | 相关开发任务的具体到确定后进行计划的调整 | 1d | 2019-08-12 | 2019-08-12 |  | finish no earlier than 2019-08-12 |
| 121 | 1.8.3.5 | **资产负债表开发** | 14d | 2019-07-17 | 2019-08-05 |  |  |
| 122 |  | 资产负债表需求核对 （7.17） | 1d | 2019-07-17 | 2019-07-17 |  | finish no earlier than 2019-07-17 |
| 123 |  | 资产负债表开发 2天 （7.22 7.23） | 2d | 2019-07-22 | 2019-07-23 |  | finish no earlier than 2019-07-23 |
| 124 |  | 资产负债表钻取利润中心的开发 1天 （7.24） ->利润中心子表的开发 | 1d | 2019-07-24 | 2019-07-24 |  | finish no earlier than 2019-07-24 |
| 125 |  | 资产负债表会计科目的开发 1天 （7.25） | 1d | 2019-07-25 | 2019-07-25 |  | finish no earlier than 2019-07-25 |
| 126 |  | 钻取到明细表的开发 1天 （7.26） ->明细表的开发 | 1d | 2019-07-26 | 2019-07-26 |  | finish no earlier than 2019-07-26 |
| 127 |  | 资产负债表核对页面及逻辑修改 2天 （7.29 7.30） | 2d | 2019-07-29 | 2019-07-30 | 93 | finish no earlier than 2019-07-30 |
| 128 |  | 资产负债表上线(小范围测试试用) | 2d | 2019-07-31 | 2019-08-01 |  |  |
| 129 |  | 资产负债表正式上线 | 2d | 2019-08-02 | 2019-08-05 |  |  |
| 130 | 1.8.3.6 | **现金流量表开发** | 13d | 2019-07-29 | 2019-08-14 |  |  |
| 131 |  | 现金流量表需求核对 （7.29） | 1d | 2019-07-29 | 2019-07-29 |  | finish no earlier than 2019-07-29 |
| 132 |  | 现金流量表开发 2天 （7.30 7.31） | 2d | 2019-07-30 | 2019-07-31 |  | finish no earlier than 2019-07-31 |
| 133 |  | 现金流量表钻取利润中心的开发 1天 （8.5） ->利润中心子表的开发 | 1d | 2019-08-05 | 2019-08-05 |  | finish no earlier than 2019-08-05 |
| 134 |  | 现金流量表及利润中心钻取到会计科目的开发 1天 （8.6，8.7） ->会计科目子表的开发 | 2d | 2019-08-06 | 2019-08-07 |  | start no earlier than 2019-08-06 |
| 135 |  | 现金流量表核对页面及逻辑修改 2天 （8.8 8.9） | 2d | 2019-08-08 | 2019-08-09 | 94 | finish no earlier than 2019-08-09 |
| 136 |  | 现金流量表上线（小范围测试试用） | 2d | 2019-08-12 | 2019-08-13 |  | start no earlier than 2019-08-12 |
| 137 |  | 现金流量表正式上线 | 1d | 2019-08-14 | 2019-08-14 |  |  |
| 138 |  | 集成测试 | 4d | 2019-08-12 | 2019-08-15 |  | finish no earlier than 2019-08-15 |
| 139 |  | 支持运维 | 6d | 2019-08-16 | 2019-08-23 |  | finish no earlier than 2019-08-23 |
| 140 | 1.9 | **员工结构分析修改权限** | 19d | 2019-07-23 | 2019-08-16 |  |  |

| ID | WBS | Task | Duration | Start | Finish | Constraint |
| --- | --- | --- | --- | --- | --- | --- |
| 141 |  | 分析模型需求 | 2d | 2019-07-23 | 2019-07-24 | finish no earlier than 2019-07-24 |
| 142 |  | 数据库模型重构 | 1d | 2019-07-24 | 2019-07-24 | finish no earlier than 2019-07-24 |
| 143 |  | 页面取数逻辑修改 | 1d | 2019-07-25 | 2019-07-25 | finish no earlier than 2019-07-25 |
| 144 |  | 测试环境测试 | 1d | 2019-07-26 | 2019-07-26 | finish no earlier than 2019-07-26 |
| 145 |  | 正式环境验证 | 2d | 2019-07-26 | 2019-07-29 | finish no earlier than 2019-07-29 |
| 146 |  | 权限模型:程序上线 | 5d | 2019-07-30 | 2019-08-04 | finish no earlier than 2019-07-30 |
| 147 |  | 用户权限配置 | 2d | 2019-08-02 | 2019-08-04 |  |
| 148 |  | 试运行 | 10d | 2019-08-05 | 2019-08-16 | finish no earlier than 2019-08-16 |
| 149 | 1.10 | **员工流动分析修改权限** | 18d | 2019-07-24 | 2019-08-16 |  |
| 150 |  | 分析模型需求 | 1d | 2019-07-24 | 2019-07-24 | finish no earlier than 2019-07-24 |
| 151 |  | 数据库模型重构 | 1d | 2019-07-25 | 2019-07-25 | finish no earlier than 2019-07-25 |
| 152 |  | 页面取数逻辑修改 | 1d | 2019-07-26 | 2019-07-26 | finish no earlier than 2019-07-26 |
| 153 |  | 测试环境测试 | 1d | 2019-07-29 | 2019-07-29 | finish no earlier than 2019-07-29 |
| 154 |  | 正式环境验证 | 2d | 2019-07-29 | 2019-07-30 | finish no earlier than 2019-07-30 |
| 155 |  | 权限模型:程序上线 | 5d | 2019-07-30 | 2019-08-04 | finish no earlier than 2019-07-30 |
| 156 |  | 用户权限配置 | 2d | 2019-08-02 | 2019-08-04 |  |
| 157 |  | 试运行 | 10d | 2019-08-05 | 2019-08-16 | finish no earlier than 2019-08-16 |
| 158 | 1.11 | **业绩回款修改权限** | 14d | 2019-07-30 | 2019-08-16 |  |
| 159 |  | 确认数据权限关联问题 | 1d | 2019-07-30 | 2019-07-30 | finish no earlier than 2019-07-30 |
| 160 |  | 分析模型需求 | 1d | 2019-07-31 | 2019-07-31 | finish no earlier than 2019-07-31 |
| 161 |  | 数据库模型重构 | 1d | 2019-08-01 | 2019-08-01 | finish no earlier than 2019-08-01 |
| 162 |  | 页面取数逻辑修改 | 1d | 2019-08-02 | 2019-08-02 | finish no earlier than 2019-08-02 |
| 163 |  | 测试环境测试 | 1d | 2019-08-05 | 2019-08-05 | finish no earlier than 2019-08-05 |
| 164 |  | 正式环境验证 | 2d | 2019-08-05 | 2019-08-07 | start no earlier than 2019-08-05 |
| 165 |  | 上线 | 1d | 2019-08-04 | 2019-08-04 | start no earlier than 2019-08-04 |
| 166 |  | 权限模型:程序上线 | 5d | 2019-07-30 | 2019-08-04 | finish no earlier than 2019-07-30 |
| 167 |  | 用户权限配置 | 2d | 2019-08-02 | 2019-08-04 |  |
| 168 |  | 试运行 | 10d | 2019-08-05 | 2019-08-16 | finish no earlier than 2019-08-16 |
| 169 | 1.12 | **合同总额修改权限** | 12d | 2019-08-01 | 2019-08-16 |  |
| 170 |  | 分析模型需求 | 2d | 2019-07-31 | 2019-08-01 | finish no earlier than 2019-08-01 |
| 171 |  | 数据库模型重构 | 1d | 2019-08-02 | 2019-08-02 | finish no earlier than 2019-08-02 |
| 172 |  | 页面取数逻辑修改 | 1d | 2019-08-05 | 2019-08-05 | finish no earlier than 2019-08-05 |
| 173 |  | 测试环境测试 | 1d | 2019-08-06 | 2019-08-06 | finish no earlier than 2019-08-06 |
| 174 |  | 正式环境验证 | 2d | 2019-08-06 | 2019-08-07 | finish no earlier than 2019-08-07 |
| 175 |  | 上线 | 1d | 2019-08-04 | 2019-08-04 | start no earlier than 2019-08-04 |
| 176 |  | 权限模型:程序上线 | 5d | 2019-07-30 | 2019-08-04 | finish no earlier than 2019-07-30 |
| 177 |  | 用户权限配置 | 2d | 2019-08-02 | 2019-08-04 |  |
| 178 |  | 试运行 | 10d | 2019-08-05 | 2019-08-16 | finish no earlier than 2019-08-16 |
| 179 | 1.13 | **数据核对相关工作** | 8d | 2019-08-05 | 2019-08-14 |  |
| 180 |  | 合同总额数据相关核对任务及发现问题汇总 | 1d | 2019-08-06 | 2019-08-06 | finish no earlier than 2019-08-06 |
| 181 |  | 业绩数据核对及相关问题汇总 | 2d | 2019-08-07 | 2019-08-09 | start no earlier than 2019-08-07 |
| 182 |  | 回款数据核对及相关问题汇总 | 2d | 2019-08-07 | 2019-08-09 | start no earlier than 2019-08-07 |
| 183 |  | 人力资源分析数据核对及相关问题汇总 | 1d | 2019-08-12 | 2019-08-12 |  |
| 184 |  | 工程售后数据核对及相关问题汇总 | 1d | 2019-08-13 | 2019-08-14 | finish no earlier than 2019-08-13 |
| 185 | 1.14 | **损益表新增跳转家园项目详情页面** | 10d | 2019-08-12 | 2019-08-23 |  |
| 186 |  | 需求调研 | 3d | 2019-08-07 | 2019-08-09 |  |
| 187 |  | 项目原型_设计 | 2d | 2019-08-12 | 2019-08-13 |  |
| 188 |  | 案例测试 | 2d | 2019-08-13 | 2019-08-14 |  |
| 189 |  | 开发相关功能 | 1d | 2019-08-15 | 2019-08-15 |  |
| 190 |  | 部署修改内容 | 1d | 2019-08-16 | 2019-08-16 |  |
| 191 |  | 内部测试 | 1d | 2019-08-16 | 2019-08-16 |  |
| 192 |  | 程序上线小规模用户验证 | 1d | 2019-08-19 | 2019-08-19 |  |
| 193 |  | 公司推广&试运行 | 4d | 2019-08-20 | 2019-08-23 |  |
| 194 | 1.15 | **确认收入+行业业绩统计** | 25d | 2019-07-29 | 2019-08-30 |  |
| 195 |  | 用户需求/需求分析 | 5d | 2019-07-29 | 2019-08-02 |  |
| 196 |  | 项目原型_设计 | 2d | 2019-08-19 | 2019-08-20 |  |
| 197 |  | 案例测试 | 2d | 2019-08-20 | 2019-08-21 |  |
| 198 |  | 开发相关功能 | 2d | 2019-08-21 | 2019-08-22 |  |
| 199 |  | 部署修改内容 | 1d | 2019-08-23 | 2019-08-23 |  |
| 200 |  | 内部测试 | 1d | 2019-08-26 | 2019-08-26 |  |
| 201 |  | 程序上线小规模用户验证 | 1d | 2019-08-27 | 2019-08-27 |  |
| 202 |  | 公司推广&试运行 | 4d | 2019-08-27 | 2019-08-30 |  |
| 203 |  | 方案设计/Demo展示 | 1d | 2019-08-22 | 2019-08-22 |  |
| 204 |  | 功能开发 | 1d | 2019-08-23 | 2019-08-23 |  |
| 205 |  | 功能测试 | 1d | 2019-08-26 | 2019-08-26 |  |
| 206 |  | 功能部署上线 | 1d | 2019-08-27 | 2019-08-27 |  |
| 207 | 1.16 | **损益表新增横向分析需求** | 22d | 2019-08-08 | 2019-09-06 |  |
| 208 |  | 用户需求/需求分析 | 2d | 2019-08-08 | 2019-08-09 |  |
| 209 |  | 项目原型_设计 | 2d | 2019-08-26 | 2019-08-27 |  |
| 210 |  | 案例测试 | 2d | 2019-08-27 | 2019-08-28 |  |

| ID | WBS | Task | Duration | Start | Finish | Constraint |
| --- | --- | --- | --- | --- | --- | --- |
| 211 |  | 开发相关功能 | 1d | 2019-08-29 | 2019-08-29 |  |
| 212 |  | 部署修改内容 | 1d | 2019-08-30 | 2019-08-30 |  |
| 213 |  | 内部测试 | 1d | 2019-08-30 | 2019-08-30 |  |
| 214 |  | 程序上线小规模用户验证 | 2d | 2019-09-02 | 2019-09-03 |  |
| 215 |  | 公司推广&试运行 | 3d | 2019-09-04 | 2019-09-06 |  |
| 216 | 1.17 | **过程资产提交率统计/研发部门工作量统计/过程规范性得分统计** | 25d | 2019-08-12 | 2019-09-13 |  |
| 217 |  | 用户需求/需求分析 | 6d | 2019-08-12 | 2019-08-18 |  |
| 218 |  | 项目原型_设计 | 2d | 2019-09-02 | 2019-09-04 |  |
| 219 |  | 案例测试 | 2d | 2019-09-03 | 2019-09-05 |  |
| 220 |  | 开发相关功能 | 2d | 2019-09-04 | 2019-09-05 |  |
| 221 |  | 部署修改内容 | 1d | 2019-09-06 | 2019-09-06 |  |
| 222 |  | 内部测试 | 1d | 2019-09-06 | 2019-09-06 |  |
| 223 |  | 程序上线小规模用户验证 | 0d | 2019-09-06 | 2019-09-06 |  |
| 224 |  | 公司推广&试运行 | 5d | 2019-09-09 | 2019-09-13 |  |
| 225 |  | 用户需求/需求分析 | 3d | 2019-08-12 | 2019-08-15 |  |
| 226 |  | 方案设计/Demo展示 | 1d | 2019-08-29 | 2019-08-29 |  |
| 227 |  | 功能开发 | 1d | 2019-08-30 | 2019-08-30 |  |
| 228 |  | 功能测试 | 1d | 2019-09-02 | 2019-09-02 |  |
| 229 |  | 功能部署上线 | 1d | 2019-09-03 | 2019-09-03 |  |
| 230 | 1.18 | **项目类采购分析** | 25d | 2019-08-12 | 2019-09-13 |  |
| 231 |  | 用户需求/需求分析 | 13d | 2019-08-12 | 2019-08-28 |  |
| 232 |  | 项目原型_设计 | 3d | 2019-09-02 | 2019-09-04 |  |
| 233 |  | 案例测试 | 3d | 2019-09-03 | 2019-09-05 |  |
| 234 |  | 开发相关功能 | 2d | 2019-09-04 | 2019-09-05 |  |
| 235 |  | 部署修改内容 | 1d | 2019-09-06 | 2019-09-06 |  |
| 236 |  | 内部测试 | 1d | 2019-09-06 | 2019-09-06 |  |
| 237 |  | 程序上线小规模用户验证 | 1d | 2019-09-06 | 2019-09-06 |  |
| 238 |  | 公司推广&试运行 | 5d | 2019-09-09 | 2019-09-13 |  |
| 239 |  | 用户需求/需求分析 | 3d | 2019-08-19 | 2019-08-22 |  |
| 240 |  | 方案设计/Demo展示 | 1d | 2019-09-05 | 2019-09-05 |  |
| 241 |  | 功能开发 | 1d | 2019-09-06 | 2019-09-06 |  |
| 242 |  | 功能测试 | 2d | 2019-09-09 | 2019-09-10 |  |
| 243 |  | 功能部署上线 | 1d | 2019-09-11 | 2019-09-11 |  |
| 244 | 1.19 | **报表性能/页面交互调优** | 6d | 2019-09-11 | 2019-09-19 |  |
| 245 |  | 报表性能/页面交互调优 | 6d | 2019-08-12 | 2019-08-19 |  |
| 246 | 1.20 | **甲方验收（第一轮）** | 3d | 2019-09-20 | 2019-09-24 |  |
| 247 |  | 甲方验收（第一轮） | 3d | 2019-09-20 | 2019-09-24 |  |
| 248 | 1.21 | **甲方验收（第二轮）** | 4d | 2019-09-25 | 2019-09-30 |  |
| 249 |  | 甲方验收（第二轮） | 4d | 2019-09-25 | 2019-09-30 |  |
| 250 | 1.22 | **远程支持客户需求** | 22d | 2019-10-01 | 2019-10-30 |  |
| 251 |  | 远程支持客户需求 | 22d | 2019-10-01 | 2019-10-30 |  |
| 253 | 2 | **YJTXT_APP_V2.0R** | 217d | 2019-06-03 | 2020-03-30 |  |
| 254 | 2.1 | **客户接待** | 17d | 2019-06-03 | 2019-06-24 |  |
| 255 |  | 用户需求/需求分析 | 2d | 2019-06-03 | 2019-06-04 |  |
| 256 |  | 方案设计 | 1d | 2019-06-05 | 2019-06-05 |  |
| 257 |  | 功能开发 | 9d | 2019-06-06 | 2019-06-18 |  |
| 258 |  | 单元测试 | 1d | 2019-06-19 | 2019-06-19 |  |
| 259 | 2.1.5 | **集成测试** | 1d | 2019-06-21 | 2019-06-24 |  |
| 260 |  | bug调试 | 1d | 2019-06-21 | 2019-06-21 | finish no earlier than 2019-06-23 |
| 261 |  | 页面调整美化 | 1d | 2019-06-21 | 2019-06-21 | finish no earlier than 2019-06-21 |
| 262 |  | 功能部署上线 | 1d | 2019-06-24 | 2019-06-24 |  |
| 263 | 2.2 | **考勤打卡** | 17d | 2019-06-03 | 2019-06-24 |  |
| 264 |  | 用户需求/需求分析 | 2d | 2019-06-03 | 2019-06-04 |  |
| 265 |  | 方案设计 | 1d | 2019-06-05 | 2019-06-05 |  |
| 266 |  | 功能开发 | 9d | 2019-06-06 | 2019-06-18 |  |
| 267 |  | 单元测试 | 1d | 2019-06-19 | 2019-06-19 |  |
| 268 | 2.2.5 | **集成测试** | 3d | 2019-06-20 | 2019-06-24 |  |
| 269 |  | 用户测试 | 1d | 2019-06-24 | 2019-06-24 | finish no earlier than 2019-06-24 |
| 270 |  | bug调整 | 1d | 2019-06-21 | 2019-06-21 | finish no earlier than 2019-06-23 |
| 271 |  | 功能部署上线 | 1d | 2019-06-24 | 2019-06-24 |  |
| 272 | 2.3 | **出差公出报备** | 217d | 2019-06-03 | 2020-03-30 |  |
| 273 |  | 用户需求/需求分析 | 2d | 2019-06-03 | 2019-06-04 |  |
| 274 |  | 方案设计 | 1d | 2019-06-05 | 2019-06-05 |  |
| 275 |  | 功能开发 | 5d | 2020-03-09 | 2020-03-16 |  |
| 276 |  | 单元测试 | 3d | 2020-03-14 | 2020-03-17 |  |
| 277 |  | 集成测试 | 2d | 2020-03-14 | 2020-03-17 |  |
| 278 |  | 功能部署上线 | 1d | 2020-03-16 | 2020-03-17 |  |
| 279 |  | 试运行 | 10d | 2020-03-16 | 2020-03-30 | start no earlier than 2020-03-16 |
| 280 | 2.4 | **日报管理** | 24d | 2019-06-28 | 2019-07-31 |  |
| 281 |  | 用户需求/需求分析 | 3d | 2019-06-28 | 2019-07-02 |  |

| ID | WBS | Task | Duration | Start | Finish | Predecessors | Constraint |
| --- | --- | --- | --- | --- | --- | --- | --- |
| 282 |  | 方案设计 | 3d | 2019-07-02 | 2019-07-04 |  |  |
| 283 | 2.4.3 | **功能开发** | 20d | 2019-07-04 | 2019-07-31 |  |  |
| 284 |  | 报工列表查询 | 1d | 2019-07-04 | 2019-07-04 |  | finish no earlier than 2019-07-04 |
| 285 |  | 导出报工列表 | 1d | 2019-07-05 | 2019-07-05 |  | finish no earlier than 2019-07-05 |
| 286 |  | 获取日报相关的员工信息 | 1d | 2019-07-05 | 2019-07-05 |  | finish no earlier than 2019-07-05 |
| 287 |  | 获取员工打卡信息 | 1d | 2019-07-08 | 2019-07-08 |  | finish no earlier than 2019-07-08 |
| 288 |  | 需求细化分析及细节接口需求分析 | 3d | 2019-07-10 | 2019-07-12 |  | finish no earlier than 2019-07-12 |
| 289 |  | 接口整理细化分析工作 | 2d | 2019-07-12 | 2019-07-14 |  | start no earlier than 2019-07-12 |
| 290 | 2.4.3.7 | **开发相关功能** | 7d | 2019-07-14 | 2019-07-21 |  |  |
| 291 |  | 报工列表 | 2d | 2019-07-14 | 2019-07-15 |  |  |
| 292 |  | 查看日报详情 | 2d | 2019-07-15 | 2019-07-16 |  |  |
| 293 |  | 日报删除 | 1d | 2019-07-17 | 2019-07-17 |  |  |
| 294 |  | 日报撤回 | 1d | 2019-07-17 | 2019-07-17 |  |  |
| 295 | 2.4.3.7.5 | **新增日报** | 5d | 2019-07-16 | 2019-07-20 |  |  |
| 296 |  | 日报基础信息 | 1d | 2019-07-16 | 2019-07-16 |  |  |
| 297 |  | 今日/明日计划 | 1d | 2019-07-16 | 2019-07-16 |  |  |
| 298 |  | 具体任务信息 | 2d | 2019-07-17 | 2019-07-18 |  |  |
| 299 |  | 费用报销 | 2d | 2019-07-17 | 2019-07-18 |  |  |
| 300 |  | 客户咨讯关联 | 2d | 2019-07-18 | 2019-07-19 |  |  |
| 301 |  | 报销票据 | 2d | 2019-07-18 | 2019-07-19 |  |  |
| 302 |  | 发票池功能 | 2d | 2019-07-19 | 2019-07-20 |  |  |
| 303 |  | 日报更新 | 1d | 2019-07-21 | 2019-07-21 | 295 |  |
| 304 |  | 测试相关功能 | 3d | 2019-07-22 | 2019-07-24 |  |  |
| 305 |  | 功能部署上线 | 1d | 2019-07-25 | 2019-07-25 |  |  |
| 306 |  | 报工详情 | 4d | 2019-07-09 | 2019-07-12 |  | finish no earlier than 2019-07-10 |
| 307 |  | 费用报销 | 1d | 2019-07-12 | 2019-07-15 |  | start no earlier than 2019-07-12 |
| 308 |  | 票据填写 | 1d | 2019-07-15 | 2019-07-16 |  | start no earlier than 2019-07-15 |
| 309 |  | 发票池功能 | 1d | 2019-07-17 | 2019-07-18 |  | start no earlier than 2019-07-17 |
| 310 |  | 单元测试 | 1d | 2019-07-25 | 2019-07-25 |  |  |
| 311 |  | 集成测试 | 1d | 2019-07-26 | 2019-07-26 |  |  |
| 312 |  | 功能部署上线 | 1d | 2019-07-19 | 2019-07-22 |  |  |
| 313 | 3 | **待办列表** | 16d | 2019-07-22 | 2019-08-11 |  |  |
| 314 |  | 技术可行性分析 | 4d | 2019-07-15 | 2019-07-18 |  |  |
| 315 |  | 用户需求/需求分析 | 1d | 2019-07-22 | 2019-07-22 |  |  |
| 316 |  | 方案设计 | 2d | 2019-07-22 | 2019-07-23 |  |  |
| 317 |  | 待办整体api分析及具体计划确定 | 3d | 2019-07-27 | 2019-07-30 |  |  |
| 318 | 3.5 | **功能开发** | 17d | 2019-07-26 | 2019-08-18 |  |  |
| 319 | 3.5.1 | **日报功能待办** | 16d | 2019-07-26 | 2019-08-16 |  |  |
| 320 |  | 开发相关功能 | 5d | 2019-07-26 | 2019-08-01 |  | start no earlier than 2019-07-26 |
| 321 |  | 测试 | 2d | 2019-08-02 | 2019-08-04 |  |  |
| 322 |  | 上线 | 1d | 2019-08-04 | 2019-08-04 |  |  |
| 323 |  | 试运行 | 10d | 2019-08-05 | 2019-08-16 |  | finish no earlier than 2019-08-16 |
| 324 | 3.5.2 | **考勤功能待办（补登）** | 16d | 2019-07-26 | 2019-08-16 |  |  |
| 325 |  | 开发相关功能 | 5d | 2019-07-26 | 2019-08-01 |  | start no earlier than 2019-07-26 |
| 326 |  | 测试 | 2d | 2019-08-02 | 2019-08-04 |  |  |
| 327 |  | 上线 | 1d | 2019-08-04 | 2019-08-04 |  |  |
| 328 |  | 试运行 | 10d | 2019-08-05 | 2019-08-16 |  | finish no earlier than 2019-08-16 |
| 329 | 3.5.3 | **假期功能待办** | 19d | 2019-08-05 | 2019-08-29 |  |  |
| 330 |  | 开发相关功能 | 5d | 2019-08-05 | 2019-08-12 |  | start no earlier than 2019-08-05 |
| 331 |  | 测试 | 2d | 2019-08-13 | 2019-08-14 |  |  |
| 332 |  | 上线 | 1d | 2019-08-14 | 2019-08-14 |  |  |
| 333 |  | 试运行 | 10d | 2019-08-15 | 2019-08-29 |  | start no earlier than 2019-08-15 |
| 334 | 3.5.4 | **加班申请待办** | 16d | 2019-08-05 | 2019-08-26 |  |  |
| 335 |  | 开发相关功能 | 5d | 2019-08-05 | 2019-08-09 |  | start no earlier than 2019-08-05 |
| 336 |  | 测试 | 2d | 2019-08-10 | 2019-08-11 |  |  |
| 337 |  | 上线 | 1d | 2019-08-11 | 2019-08-11 |  |  |
| 338 |  | 试运行 | 10d | 2019-08-12 | 2019-08-26 |  | start no earlier than 2019-08-12 |
| 339 | 3.5.5 | **考勤异常待办** | 16d | 2019-08-05 | 2019-08-26 |  |  |
| 340 |  | 开发相关功能 | 5d | 2019-08-05 | 2019-08-09 |  | start no earlier than 2019-08-05 |
| 341 |  | 测试 | 2d | 2019-08-10 | 2019-08-11 |  |  |
| 342 |  | 上线 | 1d | 2019-08-11 | 2019-08-11 |  |  |
| 343 |  | 试运行 | 11d | 2019-08-12 | 2019-08-26 |  | start no earlier than 2019-08-12 |
| 344 | 3.5.6 | **员工招待费调整待办** | 16d | 2019-08-12 | 2019-09-03 |  |  |
| 345 |  | 开发相关功能 | 5d | 2019-08-12 | 2019-08-16 |  | start no earlier than 2019-08-12 |
| 346 |  | 测试 | 1d | 2019-08-17 | 2019-08-17 |  |  |
| 347 |  | 上线 | 1d | 2019-08-18 | 2019-08-18 |  |  |
| 348 |  | 试运行 | 12d | 2019-08-19 | 2019-09-03 |  | start no earlier than 2019-08-19 |
| 349 | 3.5.7 | **请假撤销流程待办** | 21d | 2019-08-12 | 2019-09-09 |  |  |
| 350 |  | 需求调研 | 2d | 2019-08-12 | 2019-08-13 |  |  |
| 351 |  | 开发相关功能 | 6d | 2019-08-12 | 2019-08-18 |  | start no earlier than 2019-08-12 |

| ID | WBS | Task | Duration | Start | Finish | Constraint |
| --- | --- | --- | --- | --- | --- | --- |
| 352 |  | 测试 | 2d | 2019-08-19 | 2019-08-20 |  |
| 353 |  | 上线 | 1d | 2019-08-21 | 2019-08-21 |  |
| 354 |  | 试运行 | 12d | 2019-08-22 | 2019-09-09 | start no earlier than 2019-08-22 |
| 355 | 3.5.8 | **年度预算变更流程待办** | 23d | 2019-08-11 | 2019-09-11 |  |
| 356 |  | 开发相关功能 | 5d | 2019-08-19 | 2019-08-23 | start no earlier than 2019-08-19 |
| 357 |  | 测试 | 1d | 2019-08-24 | 2019-08-24 |  |
| 358 |  | 上线 | 1d | 2019-08-26 | 2019-08-26 |  |
| 359 |  | 试运行 | 12d | 2019-08-26 | 2019-09-11 | start no earlier than 2019-08-26 |
| 360 | 3.5.9 | **日报费用流程审批2.0** | 23d | 2019-08-11 | 2019-09-11 |  |
| 361 |  | 开发相关功能 | 5d | 2019-08-19 | 2019-08-23 | start no earlier than 2019-08-19 |
| 362 |  | 测试 | 1d | 2019-08-24 | 2019-08-24 |  |
| 363 |  | 上线 | 1d | 2019-08-26 | 2019-08-26 |  |
| 364 |  | 试运行 | 12d | 2019-08-26 | 2019-09-11 | start no earlier than 2019-08-26 |
| 365 | 3.5.10 | **合作协议管理** | 20d | 2019-08-26 | 2019-09-23 |  |
| 366 |  | 产品、服务代理协议 | 5d | 2019-08-26 | 2019-09-02 | start no earlier than 2019-08-26 |
| 367 |  | 产品、服务代理协议作废 | 5d | 2019-08-26 | 2019-09-02 |  |
| 368 |  | 产品研发战略合作协议3.0 | 5d | 2019-08-26 | 2019-09-02 |  |
| 369 |  | 产品研发战略合作协议作废 | 5d | 2019-08-26 | 2019-09-02 | start no earlier than 2019-08-26 |
| 370 |  | 课题联合申报协议2 | 5d | 2019-09-02 | 2019-09-09 |  |
| 371 |  | 课题联合申报协议作废2 | 5d | 2019-09-02 | 2019-09-09 |  |
| 372 |  | 年度采购供货协议v3.0 | 5d | 2019-09-02 | 2019-09-09 | start no earlier than 2019-09-02 |
| 373 |  | 年度采购供货协议作废V3.0 | 5d | 2019-09-02 | 2019-09-09 |  |
| 374 |  | 生态伙伴合作框架协议3.0 | 5d | 2019-09-09 | 2019-09-16 |  |
| 375 |  | 生态伙伴合作框架协议作废 | 5d | 2019-09-09 | 2019-09-16 | start no earlier than 2019-09-09 |
| 376 |  | 生态删除流程 | 5d | 2019-09-09 | 2019-09-16 |  |
| 377 |  | 生态添加流程 | 5d | 2019-09-09 | 2019-09-16 |  |
| 378 |  | 销售项目合作协议审批v5.0 | 5d | 2019-09-16 | 2019-09-23 | start no earlier than 2019-09-16 |
| 379 |  | 销售项目合作协议作废v3.0 | 5d | 2019-09-16 | 2019-09-23 |  |
| 380 | 3.5.11 | **费用类资金使用管理** | 10d | 2019-09-16 | 2019-09-30 |  |
| 381 |  | 费用类资金使用申请_作废 | 5d | 2019-09-16 | 2019-09-23 | start no earlier than 2019-09-16 |
| 382 |  | 费用类资金使用申请V2.0 | 5d | 2019-09-16 | 2019-09-23 |  |
| 383 |  | 费用类资金支付申请 | 5d | 2019-09-23 | 2019-09-30 |  |
| 384 | 3.5.12 | **保证金管理** | 5d | 2019-09-23 | 2019-09-30 |  |
| 385 |  | 保证金押金变更申请 | 5d | 2019-09-23 | 2019-09-30 | start no earlier than 2019-09-23 |
| 386 |  | 保证金押金申请3.0 | 5d | 2019-09-23 | 2019-09-30 |  |
| 387 | 3.5.13 | **催款项目** | 15d | 2019-09-30 | 2019-10-21 |  |
| 388 |  | 催款费用增补审批V1.1 | 5d | 2019-09-30 | 2019-10-07 | start no earlier than 2019-09-30 |
| 389 |  | 催款结项审批V1.1 | 5d | 2019-09-30 | 2019-10-07 |  |
| 390 |  | 催款里程碑承诺时间变更审批 | 5d | 2019-09-30 | 2019-10-07 |  |
| 391 |  | 催款里程碑负责人变更审批 | 5d | 2019-09-30 | 2019-10-07 | start no earlier than 2019-09-30 |
| 392 |  | 催款里程碑关闭审批 | 5d | 2019-10-07 | 2019-10-14 |  |
| 393 |  | 催款里程碑新增审批 | 5d | 2019-10-07 | 2019-10-14 |  |
| 394 |  | 催款立项审批 | 5d | 2019-10-07 | 2019-10-14 | start no earlier than 2019-10-07 |
| 395 |  | 催款项目变更审批 | 5d | 2019-10-07 | 2019-10-14 |  |
| 396 |  | 催款项目经理变更审批 | 5d | 2019-10-14 | 2019-10-21 |  |
| 397 |  | 催款项目人员变更审批 | 5d | 2019-10-14 | 2019-10-21 | start no earlier than 2019-10-14 |
| 398 | 3.5.14 | **工程项目** | 20d | 2019-10-14 | 2019-11-11 |  |
| 399 |  | 工程费用增补V1.1 | 5d | 2019-10-14 | 2019-10-21 | start no earlier than 2019-10-14 |
| 400 |  | 工程结项审批V1.1 | 5d | 2019-10-14 | 2019-10-21 |  |
| 401 |  | 工程里程碑承诺时间变更审批 | 5d | 2019-10-21 | 2019-10-28 |  |
| 402 |  | 工程里程碑负责人变更审批 | 5d | 2019-10-21 | 2019-10-28 | start no earlier than 2019-10-21 |
| 403 |  | 工程里程碑关闭审批v2 | 5d | 2019-10-21 | 2019-10-28 |  |
| 404 |  | 工程里程碑新增审批 | 5d | 2019-10-21 | 2019-10-28 |  |
| 405 |  | 工程立项审批 | 5d | 2019-10-28 | 2019-11-04 | start no earlier than 2019-10-28 |
| 406 |  | 工程评估审批 | 5d | 2019-10-28 | 2019-11-04 |  |
| 407 |  | 工程项目变更审批 | 5d | 2019-10-28 | 2019-11-04 |  |
| 408 |  | 工程项目成员变更 | 5d | 2019-10-28 | 2019-11-04 | start no earlier than 2019-10-28 |
| 409 |  | 工程项目经理变更审批 | 5d | 2019-11-04 | 2019-11-11 |  |
| 410 |  | 工程移交审批V1.1 | 5d | 2019-11-04 | 2019-11-11 | start no earlier than 2019-11-04 |
| 411 | 3.5.15 | **客户关系维护项目** | 15d | 2019-11-04 | 2019-11-25 |  |
| 412 |  | 客户关系维护项目-变更基本信息审批 | 5d | 2019-11-04 | 2019-11-11 | start no earlier than 2019-11-04 |
| 413 |  | 客户关系维护项目-成员变更审核 | 5d | 2019-11-04 | 2019-11-11 |  |
| 414 |  | 客户关系维护项目-费用增补审批流程V1.1 | 5d | 2019-11-11 | 2019-11-18 |  |
| 415 |  | 客户关系维护项目-结项审批流程 | 5d | 2019-11-11 | 2019-11-18 | start no earlier than 2019-11-11 |
| 416 |  | 客户关系维护项目-经理变更审批流程 | 5d | 2019-11-11 | 2019-11-18 |  |
| 417 |  | 客户关系维护项目-里程碑变更审批流程 | 5d | 2019-11-11 | 2019-11-18 |  |
| 418 |  | 客户关系维护项目-里程碑关闭审批流程 | 5d | 2019-11-18 | 2019-11-25 | start no earlier than 2019-11-18 |
| 419 |  | 客户关系维护项目-立项审核流程 | 5d | 2019-11-18 | 2019-11-25 |  |
| 420 | 3.5.16 | **商机拓展项目** | 15d | 2019-11-19 | 2019-12-10 |  |
| 421 |  | 商机拓展-立项审批流程 | 5d | 2019-11-18 | 2019-11-25 | start no earlier than 2019-11-18 |

| ID | WBS | Task | Duration | Start | Finish | Constraint |
| --- | --- | --- | --- | --- | --- | --- |
| 422 |  | 商机拓展项目变更基本信息审批 | 5d | 2019-11-18 | 2019-11-25 |  |
| 423 |  | 商机拓展项目费用增补审批流程V1.1 | 5d | 2019-11-25 | 2019-12-02 |  |
| 424 |  | 商机拓展项目结项审批流程 | 5d | 2019-11-25 | 2019-12-02 | start no earlier than 2019-11-25 |
| 425 |  | 商机拓展项目经理变更审批流程 | 5d | 2019-11-25 | 2019-12-02 |  |
| 426 |  | 商机拓展项目里程碑变更审批流程 | 5d | 2019-11-25 | 2019-12-02 |  |
| 427 |  | 商机拓展项目里程碑关闭审批流程 | 5d | 2019-12-02 | 2019-12-09 | start no earlier than 2019-12-02 |
| 428 |  | 商机项目成员变更审核 | 5d | 2019-12-02 | 2019-12-09 |  |
| 429 | 3.5.17 | **市场活动项目** | 20d | 2019-12-03 | 2019-12-31 |  |
| 430 |  | 市场活动项目-变更基本信息审批 | 5d | 2019-12-02 | 2019-12-09 | start no earlier than 2019-12-02 |
| 431 |  | 市场活动项目-成员变更审核 | 5d | 2019-12-02 | 2019-12-09 |  |
| 432 |  | 市场活动项目-费用增补审批流程V1.1 | 5d | 2019-12-09 | 2019-12-16 |  |
| 433 |  | 市场活动项目-结项审批流程 | 5d | 2019-12-09 | 2019-12-16 | start no earlier than 2019-12-09 |
| 434 |  | 市场活动项目-经理变更审批流程 | 5d | 2019-12-09 | 2019-12-16 |  |
| 435 |  | 市场活动项目-里程碑变更审批流程 | 5d | 2019-12-09 | 2019-12-16 |  |
| 436 |  | 市场活动项目-里程碑关闭审批流程 | 5d | 2019-12-16 | 2019-12-23 | start no earlier than 2019-12-16 |
| 437 |  | 市场活动项目-立项审核流程 | 5d | 2019-12-16 | 2019-12-23 |  |
| 438 |  | 市场立项_成员变更 | 5d | 2019-12-16 | 2019-12-23 | start no earlier than 2019-12-16 |
| 439 |  | 市场立项_费用增补 | 5d | 2019-12-16 | 2019-12-23 |  |
| 440 |  | 市场立项_基本信息变更 | 5d | 2019-12-23 | 2019-12-30 |  |
| 441 |  | 市场立项_结项 | 5d | 2019-12-23 | 2019-12-30 | start no earlier than 2019-12-23 |
| 442 |  | 市场立项_里程碑关闭 | 5d | 2019-12-23 | 2019-12-30 |  |
| 443 |  | 市场立项_立项 | 5d | 2019-12-23 | 2019-12-30 |  |
| 444 | 3.5.18 | **售后项目** | 15d | 2019-12-31 | 2020-01-21 |  |
| 445 |  | 售后费用增补审批V1.1 | 5d | 2019-12-30 | 2020-01-06 | start no earlier than 2019-12-30 |
| 446 |  | 售后结项审批 | 5d | 2019-12-30 | 2020-01-06 |  |
| 447 |  | 售后里程碑承诺时间变更审批 | 5d | 2019-12-30 | 2020-01-06 |  |
| 448 |  | 售后里程碑负责人变更审批 | 5d | 2019-12-30 | 2020-01-06 | start no earlier than 2019-12-30 |
| 449 |  | 售后里程碑关闭审批 | 5d | 2020-01-06 | 2020-01-13 |  |
| 450 |  | 售后立项审批 | 5d | 2020-01-06 | 2020-01-13 |  |
| 451 |  | 售后项目变更审批 | 5d | 2020-01-06 | 2020-01-13 | start no earlier than 2020-01-06 |
| 452 |  | 售后项目经理变更审批 | 5d | 2020-01-06 | 2020-01-13 |  |
| 453 |  | 售后项目人员变更审批 | 5d | 2020-01-13 | 2020-01-20 | start no earlier than 2020-01-13 |
| 454 |  | 售后新增里程碑审批 | 5d | 2020-01-13 | 2020-01-20 |  |
| 455 | 3.5.19 | **销售项目** | 25d | 2020-01-14 | 2020-02-18 |  |
| 456 |  | 销售立项里程碑变更 | 5d | 2020-01-13 | 2020-01-20 | start no earlier than 2020-01-13 |
| 457 |  | 销售立项审批流程V2.0 | 5d | 2020-01-13 | 2020-01-20 |  |
| 458 |  | 销售项目-变更基本信息审批 | 5d | 2020-01-21 | 2020-01-28 |  |
| 459 |  | 销售项目-变更基本信息审批流 | 5d | 2020-01-21 | 2020-01-28 | start no earlier than 2020-01-21 |
| 460 |  | 销售项目-成员变更流程 | 5d | 2020-01-21 | 2020-01-28 |  |
| 461 |  | 销售项目-成员变更审核 | 5d | 2020-01-21 | 2020-01-28 |  |
| 462 |  | 销售项目-费用增补流程V1.1 | 5d | 2020-01-28 | 2020-02-04 | start no earlier than 2020-01-28 |
| 463 |  | 销售项目-费用增补审批流程 | 5d | 2020-01-28 | 2020-02-04 |  |
| 464 |  | 销售项目结项流程 | 5d | 2020-01-28 | 2020-02-04 | start no earlier than 2020-01-28 |
| 465 |  | 销售项目-结项审批流程 | 5d | 2020-01-28 | 2020-02-04 |  |
| 466 |  | 销售项目-经理变更审批流程 | 5d | 2020-02-04 | 2020-02-11 |  |
| 467 |  | 销售项目-里程碑变更审批流程 | 5d | 2020-02-04 | 2020-02-11 | start no earlier than 2020-02-04 |
| 468 |  | 销售项目-里程碑关闭流程 | 5d | 2020-02-04 | 2020-02-11 |  |
| 469 |  | 销售项目-里程碑关闭审批流程 | 5d | 2020-02-04 | 2020-02-11 | start no earlier than 2020-02-04 |
| 470 |  | 销售项目-立项审核流程 | 5d | 2020-02-10 | 2020-02-17 |  |
| 471 | 3.5.20 | **验收项目** | 20d | 2020-02-11 | 2020-03-10 |  |
| 472 |  | 验收初验审批 | 5d | 2020-02-10 | 2020-02-17 | start no earlier than 2020-02-11 |
| 473 |  | 验收费用增补审批V1.1 | 5d | 2020-02-10 | 2020-02-17 |  |
| 474 |  | 验收结项审批 | 5d | 2020-02-10 | 2020-02-17 |  |
| 475 |  | 验收里程碑承诺时间变更审批 | 5d | 2020-02-18 | 2020-02-24 | start no earlier than 2020-02-18 |
| 476 |  | 验收里程碑负责人变更审批 | 5d | 2020-02-18 | 2020-02-24 |  |
| 477 |  | 验收里程碑关闭审批 | 5d | 2020-02-18 | 2020-02-24 |  |
| 478 |  | 验收里程碑新增审批 | 5d | 2020-02-18 | 2020-02-24 | start no earlier than 2020-02-18 |
| 479 |  | 验收立项审批 | 5d | 2020-02-24 | 2020-03-02 |  |
| 480 |  | 验收项目变更审批 | 5d | 2020-02-24 | 2020-03-02 | start no earlier than 2020-02-24 |
| 481 |  | 验收项目经理变更审批 | 5d | 2020-02-24 | 2020-03-02 |  |
| 482 |  | 验收项目人员变更审批 | 5d | 2020-02-24 | 2020-03-02 |  |
| 483 |  | 验收终验审批2 | 5d | 2020-03-02 | 2020-03-09 | start no earlier than 2020-03-02 |
| 484 | 3.6 | **考勤明细** | 19d | 2019-07-29 | 2019-08-22 |  |
| 485 |  | 技术可行性分析 | 3d | 2019-07-29 | 2019-07-31 | finish no earlier than 2019-07-31 |
| 486 |  | 用户需求/需求分析 | 1d | 2019-07-29 | 2019-07-29 |  |
| 487 |  | 方案设计 | 1d | 2019-08-05 | 2019-08-06 |  |
| 488 |  | 功能开发 | 6d | 2019-07-29 | 2019-08-04 |  |
| 489 |  | 单元测试 | 2d | 2019-08-05 | 2019-08-06 |  |
| 490 |  | 集成测试 | 2d | 2019-08-05 | 2019-08-06 |  |
| 491 |  | 功能部署上线 | 1d | 2019-08-07 | 2019-08-07 |  |

| ID | WBS | Task | Duration | Start | Finish | Constraint |
| --- | --- | --- | --- | --- | --- | --- |
| 492 |  | 试运行 | 11d | 2019-08-08 | 2019-08-22 | start no earlier than 2019-08-08 |
| 493 | 3.7 | **假期管理** | 14d | 2019-08-12 | 2019-08-29 |  |
| 494 |  | 技术可行性分析 | 3d | 2019-07-29 | 2019-07-31 |  |
| 495 |  | 用户需求/需求分析 | 1d | 2019-07-31 | 2019-07-31 |  |
| 496 |  | 方案设计 | 1d | 2019-07-31 | 2019-07-31 |  |
| 497 |  | 功能开发 | 11d | 2019-08-01 | 2019-08-15 |  |
| 498 |  | 单元测试 | 1d | 2019-08-16 | 2019-08-16 |  |
| 499 |  | 集成测试 | 1d | 2019-08-17 | 2019-08-17 |  |
| 500 |  | 功能部署上线 | 1d | 2019-08-18 | 2019-08-18 |  |
| 501 |  | 试运行 | 10d | 2019-08-15 | 2019-08-29 | start no earlier than 2019-08-15 |
| 502 |  | 代码优化 | 5d | 2019-08-19 | 2019-08-23 |  |
| 503 | 3.9 | **置换功能** | 2d | 2019-08-27 | 2019-08-29 |  |
| 504 |  | 用户需求/需求分析 | 1d | 2019-08-27 | 2019-08-28 |  |
| 505 |  | 方案设计 | 1d | 2019-08-27 | 2019-08-28 |  |
| 506 |  | 功能开发 | 1d | 2019-08-27 | 2019-08-28 |  |
| 507 |  | 单元测试 | 1d | 2019-08-27 | 2019-08-28 |  |
| 508 |  | 集成测试 | 1d | 2019-08-27 | 2019-08-28 |  |
| 509 |  | 功能部署上线 | 1d | 2019-08-27 | 2019-08-28 |  |
| 510 | 3.10 | **甲方验收（第一轮）** | 1d | 2019-08-29 | 2019-08-29 |  |
| 511 |  | 甲方验收（第一轮） | 1d | 2019-08-29 | 2019-08-30 |  |
| 512 | 3.11 | **甲方验收（第二轮）** | 1d | 2019-08-30 | 2019-08-30 |  |
| 513 |  | 甲方验收（第二轮） | 1d | 2019-08-30 | 2019-09-02 |  |

## Version 2 (saved 2019-08-29)

Note of the change: test

Last finish stays 2020-03-30.

Changed:

| ID | Task | Start | Finish | Other |
| --- | --- | --- | --- | --- |
| 366 | 年度采购供货协议v3.0 | 2019-09-02 → 2019-08-26 (-7d) | 2019-09-09 → 2019-09-02 (-7d) | constraint start no earlier than 2019-09-02 → start no earlier than 2019-08-26 |
| 367 | 年度采购供货协议作废V3.0 | 2019-09-02 → 2019-08-26 (-7d) | 2019-09-09 → 2019-09-02 (-7d) |  |
| 368 | 生态伙伴合作框架协议3.0 | 2019-09-09 → 2019-08-26 (-14d) | 2019-09-16 → 2019-09-02 (-14d) |  |
| 369 | 生态伙伴合作框架协议作废 | 2019-09-09 → 2019-08-26 (-14d) | 2019-09-16 → 2019-09-02 (-14d) | constraint start no earlier than 2019-09-09 → start no earlier than 2019-08-26 |
| 372 | 产品、服务代理协议 | 2019-08-26 → 2019-09-02 (+7d) | 2019-09-02 → 2019-09-09 (+7d) | constraint start no earlier than 2019-08-26 → start no earlier than 2019-09-02 |
| 373 | 产品、服务代理协议作废 | 2019-08-26 → 2019-09-02 (+7d) | 2019-09-02 → 2019-09-09 (+7d) |  |
| 374 | 产品研发战略合作协议3.0 | 2019-08-26 → 2019-09-09 (+14d) | 2019-09-02 → 2019-09-16 (+14d) |  |
| 375 | 产品研发战略合作协议作废 | 2019-08-26 → 2019-09-09 (+14d) | 2019-09-02 → 2019-09-16 (+14d) | constraint start no earlier than 2019-08-26 → start no earlier than 2019-09-09 |
