How a schedule from MS Project changed from version to version. A marks actual dates.

## Version 1 (saved 2019-10-10)

| ID | WBS | Task | Duration | Start | Finish | Predecessors | Complete | Constraint |
| --- | --- | --- | --- | --- | --- | --- | --- | --- |
| 1 | 1 | **YJTXT_BI_V2.0R** | 87d | 2019-06-03 A | 2019-09-30 |  | 3% |  |
| 2 | 1.1 | **总裁驾驶舱DEMO上线** | 30d | 2019-06-03 A | 2019-07-11 |  | 8% |  |
| 3 |  | 用户需求/需求分析 | 1d | 2019-06-03 A | 2019-06-03 A |  | 100% |  |
| 4 |  | 方案设计/Demo展示 | 1d | 2019-06-04 | 2019-06-04 |  |  |  |
| 5 |  | 功能开发 | 1d | 2019-06-05 A | 2019-06-05 A |  | 100% |  |
| 6 |  | 页面自适应问题解决 | 1d | 2019-06-15 | 2019-06-17 |  |  | start no earlier than 2019-06-15 |
| 7 |  | 人力数据展示(总规划人数取不到暂时用假数据代替) | 1d | 2019-06-15 | 2019-06-17 |  |  | finish no earlier than 2019-06-15 |
| 8 |  | 现金流量展示三个指标的数据（该数据同样无法取得） | 1d | 2019-06-15 | 2019-06-17 |  |  | start no earlier than 2019-06-15 |
| 9 |  | 页面ui风格的处理 | 3d | 2019-06-17 | 2019-06-20 | 6 |  |  |
| 10 |  | 处理分辨率不兼容的问题 | 1d | 2019-06-18 | 2019-06-19 |  |  | finish no earlier than 2019-06-18 |
| 11 |  | 功能测试 | 6d | 2019-06-06 | 2019-06-13 |  |  |  |
| 12 |  | 功能部署上线 | 5d | 2019-06-07 | 2019-06-13 |  |  |  |
| 13 |  | 修改联动问题 | 4d | 2019-07-08 | 2019-07-11 |  |  | finish no earlier than 2019-07-09 |
| 14 | 1.2 | **基础经营指标分析** | 26d | 2019-06-10 A | 2019-07-12 |  | 13% |  |
| 15 |  | 用户需求/需求分析 | 1d | 2019-06-10 A | 2019-06-10 A |  | 100% |  |
| 16 |  | 方案设计/Demo展示 | 1d | 2019-06-11 A | 2019-06-11 A |  | 100% |  |
| 17 |  | 功能开发 | 1d | 2019-06-12 | 2019-06-12 |  |  |  |
| 18 |  | 合同总额功能开发 | 1d | 2019-06-12 | 2019-06-13 |  |  | finish no earlier than 2019-06-12 |
| 19 |  | 业绩总额功能开发 | 1d | 2019-06-12 | 2019-06-13 |  |  | finish no earlier than 2019-06-12 |
| 20 |  | 回款功能开发 | 1d | 2019-06-12 | 2019-06-13 |  |  | finish no earlier than 2019-06-12 |
| 21 |  | 功能测试 | 1d | 2019-06-13 | 2019-06-13 |  |  |  |
| 22 |  | 修改页面布局及样式 | 2d | 2019-06-17 | 2019-06-19 |  |  | finish no earlier than 2019-06-18 |
| 23 |  | 功能部署上线 | 1d | 2019-06-14 | 2019-06-14 |  |  |  |
| 24 |  | 修改权限问题 | 5d | 2019-07-08 | 2019-07-12 |  |  | finish no earlier than 2019-07-10 |
| 25 | 1.3 | **损益表** | 14d | 2019-06-24 | 2019-07-12 |  |  |  |
| 26 |  | 用户需求/需求分析 | 4d | 2019-06-24 | 2019-06-27 |  |  |  |
| 27 |  | 方案设计/Demo展示 | 4d | 2019-06-24 | 2019-06-27 |  |  |  |
| 28 |  | 功能开发 | 3d | 2019-07-03 | 2019-07-05 |  |  |  |
| 29 |  | 功能测试 | 3d | 2019-07-08 | 2019-07-10 |  |  |  |
| 30 |  | 功能部署上线 | 1d | 2019-07-11 | 2019-07-12 |  |  |  |
| 31 | 1.4 | **资产负债表** | 5d | 2019-06-24 | 2019-06-28 |  |  |  |
| 32 |  | 用户需求/需求分析 | 3d | 2019-06-24 | 2019-06-26 |  |  |  |
| 33 |  | 方案设计/Demo展示 | 3d | 2019-06-24 | 2019-06-26 |  |  |  |
| 34 |  | 功能开发 | 1d | 2019-06-26 | 2019-06-26 |  |  |  |
| 35 |  | 功能测试 | 1d | 2019-06-27 | 2019-06-27 |  |  |  |
| 36 |  | 功能部署上线 | 1d | 2019-06-28 | 2019-06-28 |  |  |  |
| 37 | 1.5 | **现金流量表** | 7d | 2019-06-27 | 2019-07-05 |  |  |  |
| 38 |  | 用户需求/需求分析 | 3d | 2019-06-27 | 2019-07-01 |  |  |  |
| 39 |  | 方案设计/Demo展示 | 1d | 2019-07-02 | 2019-07-02 |  |  |  |
| 40 |  | 功能开发 | 1d | 2019-07-03 | 2019-07-03 |  |  |  |
| 41 |  | 功能测试 | 1d | 2019-07-04 | 2019-07-04 |  |  |  |
| 42 |  | 功能部署上线 | 1d | 2019-07-05 | 2019-07-05 |  |  |  |
| 43 | 1.6 | **工程项目分析/售后400分析** | 19d | 2019-06-18 A | 2019-07-12 |  | 39% |  |
| 44 |  | 用户需求/需求分析 | 2d | 2019-06-18 A | 2019-06-19 A |  | 100% |  |
| 45 | 1.6.2 | **方案设计/Demo展示** | 2d | 2019-06-19 A | 2019-06-21 |  | 99% |  |
| 46 |  | exceldemo原型 | 1d | 2019-06-19 A | 2019-06-20 A |  | 100% |  |
| 47 |  | 根据需求进行数据建模 | 1d | 2019-06-19 A | 2019-06-20 A |  | 100% | start no earlier than 2019-06-19 |
| 48 |  | exceldemo原型问题分析及修改 | 1d | 2019-06-19 A | 2019-06-20 A |  | 100% |  |
| 49 |  | 测试数据插入 | 1d | 2019-06-20 A | 2019-06-20 A |  | 100% | finish no earlier than 2019-06-20 |
| 50 |  | bi或report初版页面 | 1d | 2019-06-20 A | 2019-06-20 A |  | 100% |  |
| 51 | 1.6.3 | **功能开发** | 3d | 2019-06-20 A | 2019-06-25 |  | 14% |  |
| 52 |  | 进行初版页面的问题跟踪 | 1d | 2019-06-21 | 2019-06-24 |  |  | finish no earlier than 2019-06-21 |
| 53 |  | etl数据确认 | 1d | 2019-06-20 A | 2019-06-21 |  | 66% | start no earlier than 2019-06-20 |
| 54 |  | 如有问题，问题解决方案 | 1d | 2019-06-21 | 2019-06-24 |  |  | finish no earlier than 2019-06-21 |
| 55 |  | 页面原型再版 | 2d | 2019-06-21 | 2019-06-25 |  |  | finish no earlier than 2019-06-24 |
| 56 |  | etl数据抽取转换 | 1d | 2019-06-21 A | 2019-06-21 |  | 44% | finish no earlier than 2019-06-21 |
| 57 |  | 页面原型在版迭代 | 1d | 2019-06-24 | 2019-06-25 |  |  | finish no earlier than 2019-06-24 |
| 58 |  | etl数据抽取转换迭代 | 1d | 2019-06-24 | 2019-06-25 |  |  | finish no earlier than 2019-06-24 |
| 59 | 1.6.4 | **功能测试** | 2d | 2019-06-24 | 2019-06-26 |  |  |  |
| 60 |  | 数据逻辑确认 | 2d | 2019-06-24 | 2019-06-26 |  |  | start no earlier than 2019-06-24 |
| 61 |  | 功能部署上线 | 2d | 2019-06-25 | 2019-06-26 |  |  |  |
| 62 |  | 修改权限问题 | 2d | 2019-07-10 | 2019-07-12 |  |  | start no earlier than 2019-07-10 |
| 63 | 1.7 | **人力资源分析** | 13d | 2019-06-25 | 2019-07-11 |  |  |  |
| 64 |  | 用户需求/需求分析 | 1d | 2019-06-25 | 2019-06-26 |  |  | start no earlier than 2019-06-25 |
| 65 | 1.7.2 | **方案设计/Demo展示** | 1d | 2019-06-25 | 2019-06-26 |  |  |  |
| 66 |  | exceldemo原型 | 1d | 2019-06-25 | 2019-06-26 |  |  |  |
| 67 |  | 根据需求进行数据建模 | 1d | 2019-06-25 | 2019-06-26 |  |  |  |
| 68 |  | exceldemo原型问题分析及修改 | 1d | 2019-06-25 | 2019-06-26 |  |  |  |
| 69 |  | 测试数据插入 | 1d | 2019-06-25 | 2019-06-26 |  |  |  |
| 70 |  | bi或report初版页面 | 1d | 2019-06-25 | 2019-06-26 |  |  |  |

| ID | WBS | Task | Duration | Start | Finish | Predecessors | Constraint |
| --- | --- | --- | --- | --- | --- | --- | --- |
| 71 | 1.7.3 | **功能开发** | 5d | 2019-06-25 | 2019-07-01 |  |  |
| 72 |  | 进行初版页面的问题跟踪 | 1d | 2019-06-25 | 2019-06-26 |  |  |
| 73 |  | etl数据确认 | 1d | 2019-06-25 | 2019-06-26 |  |  |
| 74 |  | 如有问题，问题解决方案 | 2d | 2019-06-26 | 2019-06-27 |  |  |
| 75 |  | 页面原型再版 | 1d | 2019-06-27 | 2019-06-27 |  | finish no earlier than 2019-06-27 |
| 76 |  | etl数据抽取转换 | 2d | 2019-06-27 | 2019-06-28 |  | finish no earlier than 2019-06-28 |
| 77 |  | 页面原型在版迭代 | 3d | 2019-06-27 | 2019-07-01 |  | finish no earlier than 2019-07-01 |
| 78 |  | etl数据抽取转换迭代 | 3d | 2019-06-27 | 2019-07-01 |  | finish no earlier than 2019-07-01 |
| 79 | 1.7.4 | **功能测试** | 8d | 2019-07-02 | 2019-07-11 |  |  |
| 80 |  | 页面逻辑确认 | 9d | 2019-07-01 | 2019-07-11 |  | finish no earlier than 2019-07-03 |
| 81 |  | 页面数据确认 | 9d | 2019-07-01 | 2019-07-11 |  |  |
| 82 |  | 功能部署上线 | 7d | 2019-07-03 | 2019-07-11 |  |  |
| 83 | 1.8 | **三表相关开发** | 40d | 2019-07-01 | 2019-08-23 |  |  |
| 84 | 1.8.1 | **etl功能** | 30d | 2019-07-01 | 2019-08-09 |  |  |
| 85 |  | etl需求整理 | 3d | 2019-07-01 | 2019-07-03 |  | finish no earlier than 2019-07-03 |
| 86 |  | 配合方案确定 | 5d | 2019-07-04 | 2019-07-10 |  | finish no earlier than 2019-07-08 |
| 87 |  | etl数据建模 | 1d | 2019-07-09 | 2019-07-09 |  | finish no earlier than 2019-07-09 |
| 88 |  | etl转换底层数据表 | 1d | 2019-07-09 | 2019-07-09 |  | finish no earlier than 2019-07-09 |
| 89 |  | etl查漏数据表 | 1d | 2019-07-11 | 2019-07-11 |  | finish no earlier than 2019-07-11 |
| 90 |  | etl进行损益表数据配置，汇总逻辑，权限逻辑，业务实现等内容的相关开发 | 5d | 2019-07-10 | 2019-07-16 |  | finish no earlier than 2019-07-16 |
| 91 |  | etl检验损益表相关数据逻辑 | 1d | 2019-07-17 | 2019-07-17 |  | finish no earlier than 2019-07-17 |
| 92 |  | etl进行资产负债表数据配置，汇总逻辑，权限逻辑，业务实现等内容的相关开发 | 5d | 2019-07-18 | 2019-07-24 |  | finish no earlier than 2019-07-24 |
| 93 |  | etl检验资产负债表相关数据逻辑 | 1d | 2019-07-25 | 2019-07-25 |  | finish no earlier than 2019-07-25 |
| 94 |  | etl进行现金流量表数据配置，汇总逻辑，权限逻辑，业务实现等内容的相关开发 | 5d | 2019-07-26 | 2019-08-01 |  | finish no earlier than 2019-08-01 |
| 95 |  | etl检验现金流量表相关数据逻辑 | 1d | 2019-08-02 | 2019-08-02 |  | finish no earlier than 2019-08-02 |
| 96 |  | 修改现金流量表的错误逻辑 | 1d | 2019-08-06 | 2019-08-06 |  |  |
| 97 |  | 解决未完成的相关问题 | 5d | 2019-08-05 | 2019-08-09 |  | finish no earlier than 2019-08-09 |
| 98 | 1.8.2 | **中台开发** | 30d | 2019-07-01 | 2019-08-09 |  |  |
| 99 |  | 需求整理 | 3d | 2019-07-01 | 2019-07-03 |  | finish no earlier than 2019-07-03 |
| 100 |  | 配合方案确定 | 5d | 2019-07-04 | 2019-07-10 |  | finish no earlier than 2019-07-08 |
| 101 |  | 中台相关设计方案的确定 | 5d | 2019-07-09 | 2019-07-15 |  | finish no earlier than 2019-07-15 |
| 102 |  | 中台搭建 | 1d | 2019-07-16 | 2019-07-16 |  | finish no earlier than 2019-07-16 |
| 103 |  | 中台开发任务调度模块底层实现 | 7d | 2019-07-17 | 2019-07-25 |  | finish no earlier than 2019-07-25 |
| 104 |  | 中台开发相关页面 | 3d | 2019-07-26 | 2019-07-30 |  | finish no earlier than 2019-07-30 |
| 105 |  | 中台进行相关测试 | 3d | 2019-07-31 | 2019-08-02 |  | finish no earlier than 2019-08-02 |
| 106 |  | 中台集成测试问题解决 | 5d | 2019-08-05 | 2019-08-09 |  | finish no earlier than 2019-08-09 |
| 107 | 1.8.3 | **report开发** | 40d | 2019-07-01 | 2019-08-23 |  |  |
| 108 |  | 需求整理：3天 （7.1 7.2 7.3） | 3d | 2019-07-01 | 2019-07-04 |  | start no earlier than 2019-07-01 |
| 109 |  | 配合方案确定：3天 （7.4 7.5 7.8） | 5d | 2019-07-04 | 2019-07-10 |  | start no earlier than 2019-07-04 |
| 110 |  | 整理相关需求：1天 （7.9） | 1d | 2019-07-09 | 2019-07-09 |  | finish no earlier than 2019-07-09 |
| 111 | 1.8.3.4 | **损益表开发** | 9d | 2019-07-11 | 2019-07-23 |  |  |
| 112 |  | 损益表开发 2天 （7.10 7.11） | 2d | 2019-07-10 | 2019-07-12 |  | start no earlier than 2019-07-10 |
| 113 |  | 损益表钻取利润中心的开发 1天 （7.12） ->利润中心子表的开发 | 1d | 2019-07-15 | 2019-07-15 |  | start no earlier than 2019-07-15 |
| 114 |  | 损益表及利润中心钻取到会计科目的开发 1天 （7.15） ->会计科目子表的开发 | 1d | 2019-07-16 | 2019-07-16 |  | start no earlier than 2019-07-16 |
| 115 |  | 钻取到明细表的开发 1天 （7.16） ->明细表的开发 | 1d | 2019-07-17 | 2019-07-17 |  | start no earlier than 2019-07-17 |
| 116 |  | 损益表核对页面及逻辑修改 2天 （7.18 7.19） | 2d | 2019-07-18 | 2019-07-19 | 91 | finish no earlier than 2019-07-19 |
| 117 |  | 损益表初步上线（小范围测试试用） | 1d | 2019-07-22 | 2019-07-22 |  | finish no earlier than 2019-07-22 |
| 118 |  | 损益表正式上线 | 1d | 2019-07-23 | 2019-07-23 |  | finish no earlier than 2019-07-23 |
| 119 |  | 财务新增横向分析需求的相关实现调研 | 6d | 2019-08-02 | 2019-08-09 |  | finish no earlier than 2019-08-07 |
| 120 |  | 相关开发任务的具体到确定后进行计划的调整 | 1d | 2019-08-12 | 2019-08-12 |  | finish no earlier than 2019-08-12 |
| 121 | 1.8.3.5 | **资产负债表开发** | 14d | 2019-07-17 | 2019-08-05 |  |  |
| 122 |  | 资产负债表需求核对 （7.17） | 1d | 2019-07-17 | 2019-07-17 |  | finish no earlier than 2019-07-17 |
| 123 |  | 资产负债表开发 2天 （7.22 7.23） | 2d | 2019-07-22 | 2019-07-23 |  | finish no earlier than 2019-07-23 |
| 124 |  | 资产负债表钻取利润中心的开发 1天 （7.24） ->利润中心子表的开发 | 1d | 2019-07-24 | 2019-07-24 |  | finish no earlier than 2019-07-24 |
| 125 |  | 资产负债表会计科目的开发 1天 （7.25） | 1d | 2019-07-25 | 2019-07-25 |  | finish no earlier than 2019-07-25 |
| 126 |  | 钻取到明细表的开发 1天 （7.26） ->明细表的开发 | 1d | 2019-07-26 | 2019-07-26 |  | finish no earlier than 2019-07-26 |
| 127 |  | 资产负债表核对页面及逻辑修改 2天 （7.29 7.30） | 2d | 2019-07-29 | 2019-07-30 | 93 | finish no earlier than 2019-07-30 |
| 128 |  | 资产负债表上线(小范围测试试用) | 2d | 2019-07-31 | 2019-08-01 |  |  |
| 129 |  | 资产负债表正式上线 | 2d | 2019-08-02 | 2019-08-05 |  |  |
| 130 | 1.8.3.6 | **现金流量表开发** | 13d | 2019-07-29 | 2019-08-14 |  |  |
| 131 |  | 现金流量表需求核对 （7.29） | 1d | 2019-07-29 | 2019-07-29 |  | finish no earlier than 2019-07-29 |
| 132 |  | 现金流量表开发 2天 （7.30 7.31） | 2d | 2019-07-30 | 2019-07-31 |  | finish no earlier than 2019-07-31 |
| 133 |  | 现金流量表钻取利润中心的开发 1天 （8.5） ->利润中心子表的开发 | 1d | 2019-08-05 | 2019-08-05 |  | finish no earlier than 2019-08-05 |
| 134 |  | 现金流量表及利润中心钻取到会计科目的开发 1天 （8.6，8.7） ->会计科目子表的开发 | 2d | 2019-08-06 | 2019-08-07 |  | start no earlier than 2019-08-06 |
| 135 |  | 现金流量表核对页面及逻辑修改 2天 （8.8 8.9） | 2d | 2019-08-08 | 2019-08-09 | 94 | finish no earlier than 2019-08-09 |
| 136 |  | 现金流量表上线（小范围测试试用） | 2d | 2019-08-12 | 2019-08-13 |  | start no earlier than 2019-08-12 |
| 137 |  | 现金流量表正式上线 | 1d | 2019-08-14 | 2019-08-14 |  |  |
| 138 |  | 集成测试 | 4d | 2019-08-12 | 2019-08-15 |  | finish no earlier than 2019-08-15 |
| 139 |  | 支持运维 | 6d | 2019-08-16 | 2019-08-23 |  | finish no earlier than 2019-08-23 |
| 140 | 1.9 | **员工结构分析修改权限** | 19d | 2019-07-23 | 2019-08-16 |  |  |

| ID | WBS | Task | Duration | Start | Finish | Constraint |
| --- | --- | --- | --- | --- | --- | --- |
| 141 |  | 分析模型需求 | 2d | 2019-07-23 | 2019-07-24 | finish no earlier than 2019-07-24 |
| 142 |  | 数据库模型重构 | 1d | 2019-07-24 | 2019-07-24 | finish no earlier than 2019-07-24 |
| 143 |  | 页面取数逻辑修改 | 1d | 2019-07-25 | 2019-07-25 | finish no earlier than 2019-07-25 |
| 144 |  | 测试环境测试 | 1d | 2019-07-26 | 2019-07-26 | finish no earlier than 2019-07-26 |
| 145 |  | 正式环境验证 | 2d | 2019-07-26 | 2019-07-29 | finish no earlier than 2019-07-29 |
| 146 |  | 权限模型:程序上线 | 5d | 2019-07-30 | 2019-08-04 | finish no earlier than 2019-07-30 |
| 147 |  | 用户权限配置 | 2d | 2019-08-02 | 2019-08-04 |  |
| 148 |  | 试运行 | 10d | 2019-08-05 | 2019-08-16 | finish no earlier than 2019-08-16 |
| 149 | 1.10 | **员工流动分析修改权限** | 18d | 2019-07-24 | 2019-08-16 |  |
| 150 |  | 分析模型需求 | 1d | 2019-07-24 | 2019-07-24 | finish no earlier than 2019-07-24 |
| 151 |  | 数据库模型重构 | 1d | 2019-07-25 | 2019-07-25 | finish no earlier than 2019-07-25 |
| 152 |  | 页面取数逻辑修改 | 1d | 2019-07-26 | 2019-07-26 | finish no earlier than 2019-07-26 |
| 153 |  | 测试环境测试 | 1d | 2019-07-29 | 2019-07-29 | finish no earlier than 2019-07-29 |
| 154 |  | 正式环境验证 | 2d | 2019-07-29 | 2019-07-30 | finish no earlier than 2019-07-30 |
| 155 |  | 权限模型:程序上线 | 5d | 2019-07-30 | 2019-08-04 | finish no earlier than 2019-07-30 |
| 156 |  | 用户权限配置 | 2d | 2019-08-02 | 2019-08-04 |  |
| 157 |  | 试运行 | 10d | 2019-08-05 | 2019-08-16 | finish no earlier than 2019-08-16 |
| 158 | 1.11 | **业绩回款修改权限** | 14d | 2019-07-30 | 2019-08-16 |  |
| 159 |  | 确认数据权限关联问题 | 1d | 2019-07-30 | 2019-07-30 | finish no earlier than 2019-07-30 |
| 160 |  | 分析模型需求 | 1d | 2019-07-31 | 2019-07-31 | finish no earlier than 2019-07-31 |
| 161 |  | 数据库模型重构 | 1d | 2019-08-01 | 2019-08-01 | finish no earlier than 2019-08-01 |
| 162 |  | 页面取数逻辑修改 | 1d | 2019-08-02 | 2019-08-02 | finish no earlier than 2019-08-02 |
| 163 |  | 测试环境测试 | 1d | 2019-08-05 | 2019-08-05 | finish no earlier than 2019-08-05 |
| 164 |  | 正式环境验证 | 2d | 2019-08-05 | 2019-08-07 | start no earlier than 2019-08-05 |
| 165 |  | 上线 | 1d | 2019-08-04 | 2019-08-04 | start no earlier than 2019-08-04 |
| 166 |  | 权限模型:程序上线 | 5d | 2019-07-30 | 2019-08-04 | finish no earlier than 2019-07-30 |
| 167 |  | 用户权限配置 | 2d | 2019-08-02 | 2019-08-04 |  |
| 168 |  | 试运行 | 10d | 2019-08-05 | 2019-08-16 | finish no earlier than 2019-08-16 |
| 169 | 1.12 | **合同总额修改权限** | 12d | 2019-08-01 | 2019-08-16 |  |
| 170 |  | 分析模型需求 | 2d | 2019-07-31 | 2019-08-01 | finish no earlier than 2019-08-01 |
| 171 |  | 数据库模型重构 | 1d | 2019-08-02 | 2019-08-02 | finish no earlier than 2019-08-02 |
| 172 |  | 页面取数逻辑修改 | 1d | 2019-08-05 | 2019-08-05 | finish no earlier than 2019-08-05 |
| 173 |  | 测试环境测试 | 1d | 2019-08-06 | 2019-08-06 | finish no earlier than 2019-08-06 |
| 174 |  | 正式环境验证 | 2d | 2019-08-06 | 2019-08-07 | finish no earlier than 2019-08-07 |
| 175 |  | 上线 | 1d | 2019-08-04 | 2019-08-04 | start no earlier than 2019-08-04 |
| 176 |  | 权限模型:程序上线 | 5d | 2019-07-30 | 2019-08-04 | finish no earlier than 2019-07-30 |
| 177 |  | 用户权限配置 | 2d | 2019-08-02 | 2019-08-04 |  |
| 178 |  | 试运行 | 10d | 2019-08-05 | 2019-08-16 | finish no earlier than 2019-08-16 |
| 179 | 1.13 | **数据核对相关工作** | 8d | 2019-08-05 | 2019-08-14 |  |
| 180 |  | 合同总额数据相关核对任务及发现问题汇总 | 1d | 2019-08-06 | 2019-08-06 | finish no earlier than 2019-08-06 |
| 181 |  | 业绩数据核对及相关问题汇总 | 2d | 2019-08-07 | 2019-08-09 | start no earlier than 2019-08-07 |
| 182 |  | 回款数据核对及相关问题汇总 | 2d | 2019-08-07 | 2019-08-09 | start no earlier than 2019-08-07 |
| 183 |  | 人力资源分析数据核对及相关问题汇总 | 1d | 2019-08-12 | 2019-08-12 |  |
| 184 |  | 工程售后数据核对及相关问题汇总 | 1d | 2019-08-13 | 2019-08-14 | finish no earlier than 2019-08-13 |
| 185 | 1.14 | **损益表新增跳转家园项目详情页面** | 10d | 2019-08-12 | 2019-08-23 |  |
| 186 |  | 需求调研 | 3d | 2019-08-07 | 2019-08-09 |  |
| 187 |  | 项目原型_设计 | 2d | 2019-08-12 | 2019-08-13 |  |
| 188 |  | 案例测试 | 2d | 2019-08-13 | 2019-08-14 |  |
| 189 |  | 开发相关功能 | 1d | 2019-08-15 | 2019-08-15 |  |
| 190 |  | 部署修改内容 | 1d | 2019-08-16 | 2019-08-16 |  |
| 191 |  | 内部测试 | 1d | 2019-08-16 | 2019-08-16 |  |
| 192 |  | 程序上线小规模用户验证 | 1d | 2019-08-19 | 2019-08-19 |  |
| 193 |  | 公司推广&试运行 | 4d | 2019-08-20 | 2019-08-23 |  |
| 194 | 1.15 | **确认收入+行业业绩统计** | 25d | 2019-07-29 | 2019-08-30 |  |
| 195 |  | 用户需求/需求分析 | 5d | 2019-07-29 | 2019-08-02 |  |
| 196 |  | 项目原型_设计 | 2d | 2019-08-19 | 2019-08-20 |  |
| 197 |  | 案例测试 | 2d | 2019-08-20 | 2019-08-21 |  |
| 198 |  | 开发相关功能 | 2d | 2019-08-21 | 2019-08-22 |  |
| 199 |  | 部署修改内容 | 1d | 2019-08-23 | 2019-08-23 |  |
| 200 |  | 内部测试 | 1d | 2019-08-26 | 2019-08-26 |  |
| 201 |  | 程序上线小规模用户验证 | 1d | 2019-08-27 | 2019-08-27 |  |
| 202 |  | 公司推广&试运行 | 4d | 2019-08-27 | 2019-08-30 |  |
| 203 |  | 方案设计/Demo展示 | 1d | 2019-08-22 | 2019-08-22 |  |
| 204 |  | 功能开发 | 1d | 2019-08-23 | 2019-08-23 |  |
| 205 |  | 功能测试 | 1d | 2019-08-26 | 2019-08-26 |  |
| 206 |  | 功能部署上线 | 1d | 2019-08-27 | 2019-08-27 |  |
| 207 | 1.16 | **损益表新增横向分析需求** | 22d | 2019-08-08 | 2019-09-06 |  |
| 208 |  | 用户需求/需求分析 | 2d | 2019-08-08 | 2019-08-09 |  |
| 209 |  | 项目原型_设计 | 2d | 2019-08-26 | 2019-08-27 |  |
| 210 |  | 案例测试 | 2d | 2019-08-27 | 2019-08-28 |  |

| ID | WBS | Task | Duration | Start | Finish | Constraint |
| --- | --- | --- | --- | --- | --- | --- |
| 211 |  | 开发相关功能 | 1d | 2019-08-29 | 2019-08-29 |  |
| 212 |  | 部署修改内容 | 1d | 2019-08-30 | 2019-08-30 |  |
| 213 |  | 内部测试 | 1d | 2019-08-30 | 2019-08-30 |  |
| 214 |  | 程序上线小规模用户验证 | 2d | 2019-09-02 | 2019-09-03 |  |
| 215 |  | 公司推广&试运行 | 3d | 2019-09-04 | 2019-09-06 |  |
| 216 | 1.17 | **过程资产提交率统计/研发部门工作量统计/过程规范性得分统计** | 25d | 2019-08-12 | 2019-09-13 |  |
| 217 |  | 用户需求/需求分析 | 6d | 2019-08-12 | 2019-08-18 |  |
| 218 |  | 项目原型_设计 | 2d | 2019-09-02 | 2019-09-04 |  |
| 219 |  | 案例测试 | 6d | 2019-09-03 | 2019-09-10 |  |
| 220 |  | 开发相关功能 | 5d | 2019-09-04 | 2019-09-10 |  |
| 221 |  | 部署修改内容 | 3d | 2019-09-06 | 2019-09-10 |  |
| 222 |  | 内部测试 | 6d | 2019-09-06 | 2019-09-13 |  |
| 223 |  | 程序上线小规模用户验证 | 5d | 2019-09-06 | 2019-09-13 |  |
| 224 |  | 用户需求/需求分析 | 3d | 2019-08-12 | 2019-08-15 |  |
| 225 |  | 方案设计/Demo展示 | 1d | 2019-08-29 | 2019-08-29 |  |
| 226 |  | 功能开发 | 1d | 2019-08-30 | 2019-08-30 |  |
| 227 |  | 功能测试 | 1d | 2019-09-02 | 2019-09-02 |  |
| 228 |  | 功能部署上线 | 1d | 2019-09-03 | 2019-09-03 |  |
| 229 | 1.18 | **项目类采购分析** | 25d | 2019-08-12 | 2019-09-13 |  |
| 230 |  | 用户需求/需求分析 | 13d | 2019-08-12 | 2019-08-28 |  |
| 231 |  | 项目原型_设计 | 3d | 2019-09-02 | 2019-09-04 |  |
| 232 |  | 案例测试 | 3d | 2019-09-03 | 2019-09-05 |  |
| 233 |  | 开发相关功能 | 2d | 2019-09-04 | 2019-09-05 |  |
| 234 |  | 部署修改内容 | 1d | 2019-09-06 | 2019-09-06 |  |
| 235 |  | 内部测试 | 1d | 2019-09-06 | 2019-09-06 |  |
| 236 |  | 程序上线小规模用户验证 | 1d | 2019-09-06 | 2019-09-06 |  |
| 237 |  | 用户需求/需求分析 | 3d | 2019-08-19 | 2019-08-22 |  |
| 238 |  | 方案设计/Demo展示 | 1d | 2019-09-05 | 2019-09-05 |  |
| 239 |  | 功能开发 | 1d | 2019-09-06 | 2019-09-06 |  |
| 240 |  | 功能测试 | 2d | 2019-09-09 | 2019-09-10 |  |
| 241 |  | 功能部署上线 | 1d | 2019-09-11 | 2019-09-11 |  |
| 242 | 1.19 | **报表性能/页面交互调优** | 6d | 2019-09-11 | 2019-09-19 |  |
| 243 |  | 报表性能/页面交互调优 | 6d | 2019-08-12 | 2019-08-19 |  |
| 244 |  | 财务确认收入行业业绩财务报表开发 | 1d | 2019-09-02 | 2019-09-02 |  |
| 245 | 1.21 | **大屏重新设计** | 26d | 2019-08-12 | 2019-09-15 |  |
| 246 |  | 用户需求/需求分析 | 6d | 2019-08-26 | 2019-09-02 |  |
| 247 |  | 项目原型_设计 | 3d | 2019-09-02 | 2019-09-04 |  |
| 248 |  | 案例测试 | 2d | 2019-09-05 | 2019-09-06 |  |
| 249 |  | 开发相关功能 | 2d | 2019-09-09 | 2019-09-11 |  |
| 250 |  | 部署修改内容 | 1d | 2019-09-11 | 2019-09-12 |  |
| 251 |  | 内部测试 | 1d | 2019-09-12 | 2019-09-13 |  |
| 252 |  | 程序上线小规模用户验证 | 2d | 2019-09-13 | 2019-09-15 |  |
| 253 | 1.21.8 | **甲方验收（第一轮）** | 3d | 2019-09-20 | 2019-09-24 |  |
| 254 |  | 甲方验收（第一轮） | 3d | 2019-09-20 | 2019-09-24 |  |
| 255 | 1.21.9 | **甲方验收（第二轮）** | 4d | 2019-09-25 | 2019-09-30 |  |
| 256 |  | 甲方验收（第二轮） | 4d | 2019-09-25 | 2019-09-30 |  |
| 257 | 1.21.10 | **远程支持客户需求** | 22d | 2019-10-01 | 2019-10-30 |  |
| 258 |  | 远程支持客户需求 | 22d | 2019-10-01 | 2019-10-30 |  |
| 260 | 2 | **YJTXT_APP_V2.0R** | 217d | 2019-06-03 | 2020-03-30 |  |
| 261 | 2.1 | **客户接待** | 17d | 2019-06-03 | 2019-06-24 |  |
| 262 |  | 用户需求/需求分析 | 2d | 2019-06-03 | 2019-06-04 |  |
| 263 |  | 方案设计 | 1d | 2019-06-05 | 2019-06-05 |  |
| 264 |  | 功能开发 | 9d | 2019-06-06 | 2019-06-18 |  |
| 265 |  | 单元测试 | 1d | 2019-06-19 | 2019-06-19 |  |
| 266 | 2.1.5 | **集成测试** | 1d | 2019-06-21 | 2019-06-24 |  |
| 267 |  | bug调试 | 1d | 2019-06-21 | 2019-06-21 | finish no earlier than 2019-06-23 |
| 268 |  | 页面调整美化 | 1d | 2019-06-21 | 2019-06-21 | finish no earlier than 2019-06-21 |
| 269 |  | 功能部署上线 | 1d | 2019-06-24 | 2019-06-24 |  |
| 270 | 2.2 | **考勤打卡** | 17d | 2019-06-03 | 2019-06-24 |  |
| 271 |  | 用户需求/需求分析 | 2d | 2019-06-03 | 2019-06-04 |  |
| 272 |  | 方案设计 | 1d | 2019-06-05 | 2019-06-05 |  |
| 273 |  | 功能开发 | 9d | 2019-06-06 | 2019-06-18 |  |
| 274 |  | 单元测试 | 1d | 2019-06-19 | 2019-06-19 |  |
| 275 | 2.2.5 | **集成测试** | 3d | 2019-06-20 | 2019-06-24 |  |
| 276 |  | 用户测试 | 1d | 2019-06-24 | 2019-06-24 | finish no earlier than 2019-06-24 |
| 277 |  | bug调整 | 1d | 2019-06-21 | 2019-06-21 | finish no earlier than 2019-06-23 |
| 278 |  | 功能部署上线 | 1d | 2019-06-24 | 2019-06-24 |  |
| 279 | 2.3 | **出差公出报备** | 217d | 2019-06-03 | 2020-03-30 |  |
| 280 |  | 用户需求/需求分析 | 2d | 2019-06-03 | 2019-06-04 |  |
| 281 |  | 方案设计 | 1d | 2019-06-05 | 2019-06-05 |  |

| ID | WBS | Task | Duration | Start | Finish | Predecessors | Constraint |
| --- | --- | --- | --- | --- | --- | --- | --- |
| 282 |  | 功能开发 | 5d | 2020-03-09 | 2020-03-16 |  |  |
| 283 |  | 单元测试 | 3d | 2020-03-14 | 2020-03-17 |  |  |
| 284 |  | 集成测试 | 2d | 2020-03-14 | 2020-03-17 |  |  |
| 285 |  | 功能部署上线 | 1d | 2020-03-16 | 2020-03-17 |  |  |
| 286 |  | 试运行 | 10d | 2020-03-16 | 2020-03-30 |  | start no earlier than 2020-03-16 |
| 287 | 2.4 | **日报管理** | 24d | 2019-06-28 | 2019-07-31 |  |  |
| 288 |  | 用户需求/需求分析 | 3d | 2019-06-28 | 2019-07-02 |  |  |
| 289 |  | 方案设计 | 3d | 2019-07-02 | 2019-07-04 |  |  |
| 290 | 2.4.3 | **功能开发** | 20d | 2019-07-04 | 2019-07-31 |  |  |
| 291 |  | 报工列表查询 | 1d | 2019-07-04 | 2019-07-04 |  | finish no earlier than 2019-07-04 |
| 292 |  | 导出报工列表 | 1d | 2019-07-05 | 2019-07-05 |  | finish no earlier than 2019-07-05 |
| 293 |  | 获取日报相关的员工信息 | 1d | 2019-07-05 | 2019-07-05 |  | finish no earlier than 2019-07-05 |
| 294 |  | 获取员工打卡信息 | 1d | 2019-07-08 | 2019-07-08 |  | finish no earlier than 2019-07-08 |
| 295 |  | 需求细化分析及细节接口需求分析 | 3d | 2019-07-10 | 2019-07-12 |  | finish no earlier than 2019-07-12 |
| 296 |  | 接口整理细化分析工作 | 2d | 2019-07-12 | 2019-07-14 |  | start no earlier than 2019-07-12 |
| 297 | 2.4.3.7 | **开发相关功能** | 7d | 2019-07-14 | 2019-07-21 |  |  |
| 298 |  | 报工列表 | 2d | 2019-07-14 | 2019-07-15 |  |  |
| 299 |  | 查看日报详情 | 2d | 2019-07-15 | 2019-07-16 |  |  |
| 300 |  | 日报删除 | 1d | 2019-07-17 | 2019-07-17 |  |  |
| 301 |  | 日报撤回 | 1d | 2019-07-17 | 2019-07-17 |  |  |
| 302 | 2.4.3.7.5 | **新增日报** | 5d | 2019-07-16 | 2019-07-20 |  |  |
| 303 |  | 日报基础信息 | 1d | 2019-07-16 | 2019-07-16 |  |  |
| 304 |  | 今日/明日计划 | 1d | 2019-07-16 | 2019-07-16 |  |  |
| 305 |  | 具体任务信息 | 2d | 2019-07-17 | 2019-07-18 |  |  |
| 306 |  | 费用报销 | 2d | 2019-07-17 | 2019-07-18 |  |  |
| 307 |  | 客户咨讯关联 | 2d | 2019-07-18 | 2019-07-19 |  |  |
| 308 |  | 报销票据 | 2d | 2019-07-18 | 2019-07-19 |  |  |
| 309 |  | 发票池功能 | 2d | 2019-07-19 | 2019-07-20 |  |  |
| 310 |  | 日报更新 | 1d | 2019-07-21 | 2019-07-21 | 302 |  |
| 311 |  | 测试相关功能 | 3d | 2019-07-22 | 2019-07-24 |  |  |
| 312 |  | 功能部署上线 | 1d | 2019-07-25 | 2019-07-25 |  |  |
| 313 |  | 报工详情 | 4d | 2019-07-09 | 2019-07-12 |  | finish no earlier than 2019-07-10 |
| 314 |  | 费用报销 | 1d | 2019-07-12 | 2019-07-15 |  | start no earlier than 2019-07-12 |
| 315 |  | 票据填写 | 1d | 2019-07-15 | 2019-07-16 |  | start no earlier than 2019-07-15 |
| 316 |  | 发票池功能 | 1d | 2019-07-17 | 2019-07-18 |  | start no earlier than 2019-07-17 |
| 317 |  | 单元测试 | 1d | 2019-07-25 | 2019-07-25 |  |  |
| 318 |  | 集成测试 | 1d | 2019-07-26 | 2019-07-26 |  |  |
| 319 |  | 功能部署上线 | 1d | 2019-07-19 | 2019-07-22 |  |  |
| 320 | 3 | **待办列表** | 16d | 2019-07-22 | 2019-08-11 |  |  |
| 321 |  | 技术可行性分析 | 4d | 2019-07-15 | 2019-07-18 |  |  |
| 322 |  | 用户需求/需求分析 | 1d | 2019-07-22 | 2019-07-22 |  |  |
| 323 |  | 方案设计 | 2d | 2019-07-22 | 2019-07-23 |  |  |
| 324 |  | 待办整体api分析及具体计划确定 | 3d | 2019-07-27 | 2019-07-30 |  |  |
| 325 | 3.5 | **功能开发** | 17d | 2019-07-26 | 2019-08-18 |  |  |
| 326 | 3.5.1 | **日报功能待办** | 16d | 2019-07-26 | 2019-08-16 |  |  |
| 327 |  | 开发相关功能 | 5d | 2019-07-26 | 2019-08-01 |  | start no earlier than 2019-07-26 |
| 328 |  | 测试 | 2d | 2019-08-02 | 2019-08-04 |  |  |
| 329 |  | 上线 | 1d | 2019-08-04 | 2019-08-04 |  |  |
| 330 |  | 试运行 | 10d | 2019-08-05 | 2019-08-16 |  | finish no earlier than 2019-08-16 |
| 331 | 3.5.2 | **考勤功能待办（补登）** | 16d | 2019-07-26 | 2019-08-16 |  |  |
| 332 |  | 开发相关功能 | 5d | 2019-07-26 | 2019-08-01 |  | start no earlier than 2019-07-26 |
| 333 |  | 测试 | 2d | 2019-08-02 | 2019-08-04 |  |  |
| 334 |  | 上线 | 1d | 2019-08-04 | 2019-08-04 |  |  |
| 335 |  | 试运行 | 10d | 2019-08-05 | 2019-08-16 |  | finish no earlier than 2019-08-16 |
| 336 | 3.5.3 | **假期功能待办** | 19d | 2019-08-05 | 2019-08-29 |  |  |
| 337 |  | 开发相关功能 | 5d | 2019-08-05 | 2019-08-12 |  | start no earlier than 2019-08-05 |
| 338 |  | 测试 | 2d | 2019-08-13 | 2019-08-14 |  |  |
| 339 |  | 上线 | 1d | 2019-08-14 | 2019-08-14 |  |  |
| 340 |  | 试运行 | 10d | 2019-08-15 | 2019-08-29 |  | start no earlier than 2019-08-15 |
| 341 | 3.5.4 | **加班申请待办** | 16d | 2019-08-05 | 2019-08-26 |  |  |
| 342 |  | 开发相关功能 | 5d | 2019-08-05 | 2019-08-09 |  | start no earlier than 2019-08-05 |
| 343 |  | 测试 | 2d | 2019-08-10 | 2019-08-11 |  |  |
| 344 |  | 上线 | 1d | 2019-08-11 | 2019-08-11 |  |  |
| 345 |  | 试运行 | 10d | 2019-08-12 | 2019-08-26 |  | start no earlier than 2019-08-12 |
| 346 | 3.5.5 | **考勤异常待办** | 16d | 2019-08-05 | 2019-08-26 |  |  |
| 347 |  | 开发相关功能 | 5d | 2019-08-05 | 2019-08-09 |  | start no earlier than 2019-08-05 |
| 348 |  | 测试 | 2d | 2019-08-10 | 2019-08-11 |  |  |
| 349 |  | 上线 | 1d | 2019-08-11 | 2019-08-11 |  |  |
| 350 |  | 试运行 | 11d | 2019-08-12 | 2019-08-26 |  | start no earlier than 2019-08-12 |
| 351 | 3.5.6 | **员工招待费调整待办** | 16d | 2019-08-12 | 2019-09-03 |  |  |

| ID | WBS | Task | Duration | Start | Finish | Constraint |
| --- | --- | --- | --- | --- | --- | --- |
| 352 |  | 开发相关功能 | 5d | 2019-08-12 | 2019-08-16 | start no earlier than 2019-08-12 |
| 353 |  | 测试 | 1d | 2019-08-17 | 2019-08-17 |  |
| 354 |  | 上线 | 1d | 2019-08-18 | 2019-08-18 |  |
| 355 |  | 试运行 | 12d | 2019-08-19 | 2019-09-03 | start no earlier than 2019-08-19 |
| 356 | 3.5.7 | **请假撤销流程待办** | 21d | 2019-08-12 | 2019-09-09 |  |
| 357 |  | 需求调研 | 2d | 2019-08-12 | 2019-08-13 |  |
| 358 |  | 开发相关功能 | 6d | 2019-08-12 | 2019-08-18 | start no earlier than 2019-08-12 |
| 359 |  | 测试 | 2d | 2019-08-19 | 2019-08-20 |  |
| 360 |  | 上线 | 1d | 2019-08-21 | 2019-08-21 |  |
| 361 |  | 试运行 | 12d | 2019-08-22 | 2019-09-09 | start no earlier than 2019-08-22 |
| 362 | 3.5.8 | **年度预算变更流程待办** | 23d | 2019-08-11 | 2019-09-11 |  |
| 363 |  | 开发相关功能 | 5d | 2019-08-19 | 2019-08-23 | start no earlier than 2019-08-19 |
| 364 |  | 测试 | 1d | 2019-08-24 | 2019-08-24 |  |
| 365 |  | 上线 | 1d | 2019-08-26 | 2019-08-26 |  |
| 366 |  | 试运行 | 12d | 2019-08-26 | 2019-09-11 | start no earlier than 2019-08-26 |
| 367 | 3.5.9 | **日报费用流程审批2.0** | 23d | 2019-08-11 | 2019-09-11 |  |
| 368 |  | 开发相关功能 | 5d | 2019-08-19 | 2019-08-23 | start no earlier than 2019-08-19 |
| 369 |  | 测试 | 1d | 2019-08-24 | 2019-08-24 |  |
| 370 |  | 上线 | 1d | 2019-08-26 | 2019-08-26 |  |
| 371 |  | 试运行 | 12d | 2019-08-26 | 2019-09-11 | start no earlier than 2019-08-26 |
| 372 | 3.5.10 | **合作协议管理** | 20d | 2019-08-26 | 2019-09-23 |  |
| 373 | 3.5.10.1 | **年度采购供货协议v3.0** | 11d | 2019-08-26 | 2019-09-09 |  |
| 374 |  | 办公网YJT_APP端API封装 | 2d | 2019-08-26 | 2019-08-27 |  |
| 375 |  | 移动端action开发+页面开发 | 3d | 2019-08-27 | 2019-08-29 |  |
| 376 |  | 单元测试及相关问题修改 | 2d | 2019-08-30 | 2019-09-01 |  |
| 377 |  | 上线 | 0d | 2019-09-02 | 2019-09-02 | start no earlier than 2019-09-02 |
| 378 |  | 试运行 | 5d | 2019-09-03 | 2019-09-09 | finish no earlier than 2019-09-09 |
| 379 | 3.5.10.2 | **年度采购供货协议作废V3.0** | 11d | 2019-08-26 | 2019-09-09 |  |
| 380 |  | 办公网YJT_APP端API封装 | 2d | 2019-08-26 | 2019-08-27 |  |
| 381 |  | 移动端action开发+页面开发 | 3d | 2019-08-27 | 2019-08-29 |  |
| 382 |  | 单元测试及相关问题修改 | 2d | 2019-08-30 | 2019-09-01 |  |
| 383 |  | 上线 | 0d | 2019-09-02 | 2019-09-02 | start no earlier than 2019-09-02 |
| 384 |  | 试运行 | 5d | 2019-09-03 | 2019-09-09 | finish no earlier than 2019-09-09 |
| 385 | 3.5.10.3 | **生态伙伴合作框架协议3.0** | 11d | 2019-08-26 | 2019-09-09 |  |
| 386 |  | 办公网YJT_APP端API封装 | 2d | 2019-08-26 | 2019-08-27 |  |
| 387 |  | 移动端action开发+页面开发 | 3d | 2019-08-27 | 2019-08-29 |  |
| 388 |  | 单元测试及相关问题修改 | 2d | 2019-08-30 | 2019-09-01 |  |
| 389 |  | 上线 | 0d | 2019-09-02 | 2019-09-02 | start no earlier than 2019-09-02 |
| 390 |  | 试运行 | 5d | 2019-09-03 | 2019-09-09 | finish no earlier than 2019-09-09 |
| 391 | 3.5.10.4 | **生态伙伴合作框架协议作废** | 11d | 2019-08-26 | 2019-09-09 |  |
| 392 |  | 办公网YJT_APP端API封装 | 2d | 2019-08-26 | 2019-08-27 |  |
| 393 |  | 移动端action开发+页面开发 | 3d | 2019-08-27 | 2019-08-29 |  |
| 394 |  | 单元测试及相关问题修改 | 2d | 2019-08-30 | 2019-09-01 |  |
| 395 |  | 上线 | 0d | 2019-09-02 | 2019-09-02 | start no earlier than 2019-09-02 |
| 396 |  | 试运行 | 5d | 2019-09-03 | 2019-09-09 | finish no earlier than 2019-09-09 |
| 397 | 3.5.10.5 | **课题联合申报协议2** | 11d | 2019-09-02 | 2019-09-16 |  |
| 398 |  | 办公网YJT_APP端API封装 | 2d | 2019-09-02 | 2019-09-04 |  |
| 399 |  | 移动端action开发+页面开发 | 3d | 2019-09-03 | 2019-09-06 |  |
| 400 |  | 单元测试及相关问题修改 | 1d | 2019-09-06 | 2019-09-06 |  |
| 401 |  | 上线 | 2d | 2019-09-09 | 2019-09-10 | start no earlier than 2019-09-09 |
| 402 |  | 试运行 | 5d | 2019-09-10 | 2019-09-16 | finish no earlier than 2019-09-16 |
| 403 | 3.5.10.6 | **课题联合申报协议作废2** | 11d | 2019-09-02 | 2019-09-16 |  |
| 404 |  | 办公网YJT_APP端API封装 | 2d | 2019-09-02 | 2019-09-04 |  |
| 405 |  | 移动端action开发+页面开发 | 3d | 2019-09-03 | 2019-09-06 |  |
| 406 |  | 单元测试及相关问题修改 | 1d | 2019-09-06 | 2019-09-06 |  |
| 407 |  | 上线 | 2d | 2019-09-09 | 2019-09-10 | start no earlier than 2019-09-09 |
| 408 |  | 试运行 | 5d | 2019-09-10 | 2019-09-16 | finish no earlier than 2019-09-16 |
| 409 | 3.5.10.7 | **产品、服务代理协议** | 11d | 2019-09-02 | 2019-09-16 |  |
| 410 |  | 办公网YJT_APP端API封装 | 2d | 2019-09-02 | 2019-09-04 |  |
| 411 |  | 移动端action开发+页面开发 | 3d | 2019-09-03 | 2019-09-06 |  |
| 412 |  | 单元测试及相关问题修改 | 1d | 2019-09-06 | 2019-09-06 |  |
| 413 |  | 上线 | 2d | 2019-09-09 | 2019-09-10 | start no earlier than 2019-09-09 |
| 414 |  | 试运行 | 5d | 2019-09-10 | 2019-09-16 | finish no earlier than 2019-09-16 |
| 415 | 3.5.10.8 | **产品、服务代理协议作废** | 11d | 2019-09-02 | 2019-09-16 |  |
| 416 |  | 办公网YJT_APP端API封装 | 2d | 2019-09-02 | 2019-09-04 |  |
| 417 |  | 移动端action开发+页面开发 | 3d | 2019-09-03 | 2019-09-06 |  |
| 418 |  | 单元测试及相关问题修改 | 1d | 2019-09-06 | 2019-09-06 |  |
| 419 |  | 上线 | 2d | 2019-09-09 | 2019-09-10 | start no earlier than 2019-09-09 |
| 420 |  | 试运行 | 5d | 2019-09-10 | 2019-09-16 | finish no earlier than 2019-09-16 |
| 421 | 3.5.10.9 | **产品研发战略合作协议3.0** | 6d | 2019-09-09 | 2019-09-16 |  |

| ID | WBS | Task | Duration | Start | Finish | Constraint |
| --- | --- | --- | --- | --- | --- | --- |
| 422 |  | 办公网YJT_APP端API封装 | 2d | 2019-09-02 | 2019-09-04 |  |
| 423 |  | 移动端action开发+页面开发 | 3d | 2019-09-03 | 2019-09-06 |  |
| 424 |  | 单元测试及相关问题修改 | 1d | 2019-09-06 | 2019-09-06 |  |
| 425 |  | 上线 | 2d | 2019-09-09 | 2019-09-10 | start no earlier than 2019-09-09 |
| 426 |  | 试运行 | 5d | 2019-09-10 | 2019-09-16 | finish no earlier than 2019-09-16 |
| 427 | 3.5.10.10 | **产品研发战略合作协议作废** | 6d | 2019-09-09 | 2019-09-16 |  |
| 428 |  | 办公网YJT_APP端API封装 | 2d | 2019-09-02 | 2019-09-04 |  |
| 429 |  | 移动端action开发+页面开发 | 3d | 2019-09-03 | 2019-09-06 |  |
| 430 |  | 单元测试及相关问题修改 | 1d | 2019-09-06 | 2019-09-06 |  |
| 431 |  | 上线 | 2d | 2019-09-09 | 2019-09-10 | start no earlier than 2019-09-09 |
| 432 |  | 试运行 | 5d | 2019-09-10 | 2019-09-16 | finish no earlier than 2019-09-16 |
| 433 | 3.5.10.11 | **销售项目合作协议审批v5.0** | 1d | 2019-09-16 | 2019-09-16 |  |
| 434 |  | 办公网YJT_APP端API封装 | 2d | 2019-09-02 | 2019-09-04 |  |
| 435 |  | 移动端action开发+页面开发 | 3d | 2019-09-03 | 2019-09-06 |  |
| 436 |  | 单元测试及相关问题修改 | 1d | 2019-09-06 | 2019-09-06 |  |
| 437 |  | 上线 | 2d | 2019-09-09 | 2019-09-10 | start no earlier than 2019-09-09 |
| 438 |  | 试运行 | 5d | 2019-09-10 | 2019-09-16 | finish no earlier than 2019-09-16 |
| 439 | 3.5.10.12 | **销售项目合作协议作废v3.0** | 1d | 2019-09-16 | 2019-09-16 |  |
| 440 |  | 办公网YJT_APP端API封装 | 2d | 2019-09-02 | 2019-09-04 |  |
| 441 |  | 移动端action开发+页面开发 | 3d | 2019-09-03 | 2019-09-06 |  |
| 442 |  | 单元测试及相关问题修改 | 1d | 2019-09-06 | 2019-09-06 |  |
| 443 |  | 上线 | 2d | 2019-09-09 | 2019-09-10 | start no earlier than 2019-09-09 |
| 444 |  | 试运行 | 5d | 2019-09-10 | 2019-09-16 | finish no earlier than 2019-09-16 |
| 445 | 3.5.11 | **费用类资金使用管理** | 11d | 2019-09-09 | 2019-09-23 |  |
| 446 | 3.5.11.1 | **费用类资金使用申请_作废** | 11d | 2019-09-09 | 2019-09-23 |  |
| 447 |  | 办公网YJT_APP端API封装 | 2d | 2019-09-09 | 2019-09-11 |  |
| 448 |  | 移动端action开发+页面开发 | 4d | 2019-09-10 | 2019-09-13 |  |
| 449 |  | 单元测试及相关问题修改 | 0d | 2019-09-13 | 2019-09-13 |  |
| 450 |  | 上线 | 0d | 2019-09-16 | 2019-09-16 | start no earlier than 2019-09-16 |
| 451 |  | 试运行 | 5d | 2019-09-17 | 2019-09-23 | finish no earlier than 2019-09-23 |
| 452 | 3.5.11.2 | **费用类资金使用申请V2.0** | 11d | 2019-09-09 | 2019-09-23 |  |
| 453 |  | 办公网YJT_APP端API封装 | 2d | 2019-09-09 | 2019-09-11 |  |
| 454 |  | 移动端action开发+页面开发 | 4d | 2019-09-10 | 2019-09-13 |  |
| 455 |  | 单元测试及相关问题修改 | 0d | 2019-09-13 | 2019-09-13 |  |
| 456 |  | 上线 | 0d | 2019-09-16 | 2019-09-16 | start no earlier than 2019-09-16 |
| 457 |  | 试运行 | 5d | 2019-09-17 | 2019-09-23 | finish no earlier than 2019-09-23 |
| 458 | 3.5.11.3 | **费用类资金支付申请** | 11d | 2019-09-09 | 2019-09-23 |  |
| 459 |  | 办公网YJT_APP端API封装 | 2d | 2019-09-09 | 2019-09-11 |  |
| 460 |  | 移动端action开发+页面开发 | 4d | 2019-09-10 | 2019-09-13 |  |
| 461 |  | 单元测试及相关问题修改 | 0d | 2019-09-13 | 2019-09-13 |  |
| 462 |  | 上线 | 0d | 2019-09-16 | 2019-09-16 | start no earlier than 2019-09-16 |
| 463 |  | 试运行 | 5d | 2019-09-17 | 2019-09-23 | finish no earlier than 2019-09-23 |
| 464 | 3.5.12 | **销售项目** | 11d | 2019-09-16 | 2019-09-30 |  |
| 465 | 3.5.12.1 | **销售立项里程碑变更** | 11d | 2019-09-16 | 2019-09-30 |  |
| 466 |  | 办公网YJT_APP端API封装 | 2d | 2019-09-16 | 2019-09-18 |  |
| 467 |  | 移动端action开发+页面开发 | 4d | 2019-09-17 | 2019-09-23 |  |
| 468 |  | 单元测试及相关问题修改 | 1d | 2019-09-20 | 2019-09-20 |  |
| 469 |  | 上线 | 0d | 2019-09-23 | 2019-09-23 | start no earlier than 2019-09-23 |
| 470 |  | 试运行 | 5d | 2019-09-24 | 2019-09-30 | finish no earlier than 2019-09-30 |
| 471 | 3.5.12.2 | **销售立项审批流程V2.0** | 11d | 2019-09-16 | 2019-09-30 |  |
| 472 |  | 办公网YJT_APP端API封装 | 2d | 2019-09-16 | 2019-09-18 |  |
| 473 |  | 移动端action开发+页面开发 | 4d | 2019-09-17 | 2019-09-23 |  |
| 474 |  | 单元测试及相关问题修改 | 1d | 2019-09-20 | 2019-09-20 |  |
| 475 |  | 上线 | 0d | 2019-09-23 | 2019-09-23 | start no earlier than 2019-09-23 |
| 476 |  | 试运行 | 5d | 2019-09-24 | 2019-09-30 | finish no earlier than 2019-09-30 |
| 477 | 3.5.12.3 | **销售项目-变更基本信息审批** | 11d | 2019-09-16 | 2019-09-30 |  |
| 478 |  | 办公网YJT_APP端API封装 | 2d | 2019-09-16 | 2019-09-18 |  |
| 479 |  | 移动端action开发+页面开发 | 4d | 2019-09-17 | 2019-09-23 |  |
| 480 |  | 单元测试及相关问题修改 | 1d | 2019-09-20 | 2019-09-20 |  |
| 481 |  | 上线 | 0d | 2019-09-23 | 2019-09-23 | start no earlier than 2019-09-23 |
| 482 |  | 试运行 | 5d | 2019-09-24 | 2019-09-30 | finish no earlier than 2019-09-30 |
| 483 | 3.5.12.4 | **销售项目-成员变更流程** | 11d | 2019-09-16 | 2019-09-30 |  |
| 484 |  | 办公网YJT_APP端API封装 | 2d | 2019-09-16 | 2019-09-18 |  |
| 485 |  | 移动端action开发+页面开发 | 4d | 2019-09-17 | 2019-09-23 |  |
| 486 |  | 单元测试及相关问题修改 | 1d | 2019-09-20 | 2019-09-20 |  |
| 487 |  | 上线 | 0d | 2019-09-23 | 2019-09-23 | start no earlier than 2019-09-23 |
| 488 |  | 试运行 | 5d | 2019-09-24 | 2019-09-30 | finish no earlier than 2019-09-30 |
| 489 | 3.5.12.5 | **销售项目-费用增补流程V1.1** | 11d | 2019-09-16 | 2019-09-30 |  |
| 490 |  | 办公网YJT_APP端API封装 | 2d | 2019-09-16 | 2019-09-18 |  |
| 491 |  | 移动端action开发+页面开发 | 4d | 2019-09-17 | 2019-09-23 |  |

| ID | WBS | Task | Duration | Start | Finish | Total float | Constraint |
| --- | --- | --- | --- | --- | --- | --- | --- |
| 492 |  | 单元测试及相关问题修改 | 1d | 2019-09-20 | 2019-09-20 |  |  |
| 493 |  | 上线 | 0d | 2019-09-23 | 2019-09-23 |  | start no earlier than 2019-09-23 |
| 494 |  | 试运行 | 5d | 2019-09-24 | 2019-09-30 | 130d | finish no earlier than 2019-09-30 |
| 495 | 3.5.12.6 | **销售项目结项流程** | 6d | 2019-09-23 | 2019-09-30 |  |  |
| 496 |  | 办公网YJT_APP端API封装 | 3d | 2019-09-23 | 2019-09-25 |  |  |
| 497 |  | 移动端action开发+页面开发 | 5d | 2019-09-24 | 2019-09-30 |  |  |
| 498 |  | 单元测试及相关问题修改 | 2d | 2019-09-27 | 2019-09-30 |  |  |
| 499 |  | 上线 | 1d | 2019-09-30 | 2019-09-30 |  | start no earlier than 2019-09-30 |
| 500 | 3.5.12.7 | **销售项目-经理变更审批流程** | 6d | 2019-09-23 | 2019-09-30 |  |  |
| 501 |  | 办公网YJT_APP端API封装 | 3d | 2019-09-23 | 2019-09-25 |  |  |
| 502 |  | 移动端action开发+页面开发 | 5d | 2019-09-24 | 2019-09-30 |  |  |
| 503 |  | 单元测试及相关问题修改 | 2d | 2019-09-27 | 2019-09-30 |  |  |
| 504 |  | 上线 | 1d | 2019-09-30 | 2019-09-30 |  | start no earlier than 2019-09-30 |
| 505 | 3.5.12.8 | **销售项目-里程碑关闭流程** | 6d | 2019-09-23 | 2019-09-30 |  |  |
| 506 |  | 办公网YJT_APP端API封装 | 3d | 2019-09-23 | 2019-09-25 |  |  |
| 507 |  | 移动端action开发+页面开发 | 5d | 2019-09-24 | 2019-09-30 |  |  |
| 508 |  | 单元测试及相关问题修改 | 2d | 2019-09-27 | 2019-09-30 |  |  |
| 509 |  | 上线 | 1d | 2019-09-30 | 2019-09-30 |  | start no earlier than 2019-09-30 |
| 510 | 3.5.13 | **保证金管理** | 16d | 2019-09-23 | 2019-10-13 |  |  |
| 511 | 3.5.13.1 | **保证金押金变更申请** | 16d | 2019-09-23 | 2019-10-13 |  |  |
| 512 |  | 办公网YJT_APP端API封装 | 3d | 2019-09-23 | 2019-09-25 |  |  |
| 513 |  | 移动端action开发+页面开发 | 14d | 2019-09-24 | 2019-10-11 |  |  |
| 514 |  | 单元测试及相关问题修改 | 2d | 2019-10-11 | 2019-10-13 |  |  |
| 515 |  | 上线 | 2d | 2019-10-11 | 2019-10-13 |  | start no earlier than 2019-10-11 |
| 516 | 3.5.13.2 | **保证金押金申请3.0** | 16d | 2019-09-23 | 2019-10-13 |  |  |
| 517 |  | 办公网YJT_APP端API封装 | 3d | 2019-09-23 | 2019-09-25 |  |  |
| 518 |  | 移动端action开发+页面开发 | 14d | 2019-09-24 | 2019-10-11 |  |  |
| 519 |  | 单元测试及相关问题修改 | 2d | 2019-10-11 | 2019-10-13 |  |  |
| 520 |  | 上线 | 2d | 2019-10-11 | 2019-10-13 |  | start no earlier than 2019-10-11 |
| 521 | 3.5.14 | **物资类采购** | 16d | 2019-09-23 | 2019-10-13 |  |  |
| 522 | 3.5.14.1 | **物资类采购审批** | 16d | 2019-09-23 | 2019-10-13 |  |  |
| 523 |  | 办公网YJT_APP端API封装 | 3d | 2019-09-23 | 2019-09-25 |  |  |
| 524 |  | 移动端action开发+页面开发 | 5d | 2019-09-24 | 2019-09-30 |  |  |
| 525 |  | 单元测试及相关问题修改 | 2d | 2019-10-11 | 2019-10-13 |  |  |
| 526 |  | 上线 | 2d | 2019-10-11 | 2019-10-13 |  | start no earlier than 2019-10-11 |
| 527 | 3.5.14.2 | **物资类采购付款申请审批** | 16d | 2019-09-23 | 2019-10-13 |  |  |
| 528 |  | 办公网YJT_APP端API封装 | 3d | 2019-09-23 | 2019-09-25 |  |  |
| 529 |  | 移动端action开发+页面开发 | 14d | 2019-09-24 | 2019-10-11 |  |  |
| 530 |  | 单元测试及相关问题修改 | 2d | 2019-10-11 | 2019-10-13 |  |  |
| 531 |  | 上线 | 2d | 2019-10-11 | 2019-10-13 |  | start no earlier than 2019-10-11 |
| 532 | 3.6 | **考勤明细** | 19d | 2019-07-29 | 2019-08-22 |  |  |
| 533 |  | 技术可行性分析 | 3d | 2019-07-29 | 2019-07-31 |  | finish no earlier than 2019-07-31 |
| 534 |  | 用户需求/需求分析 | 1d | 2019-07-29 | 2019-07-29 |  |  |
| 535 |  | 方案设计 | 1d | 2019-08-05 | 2019-08-06 |  |  |
| 536 |  | 功能开发 | 6d | 2019-07-29 | 2019-08-04 |  |  |
| 537 |  | 单元测试 | 2d | 2019-08-05 | 2019-08-06 |  |  |
| 538 |  | 集成测试 | 2d | 2019-08-05 | 2019-08-06 |  |  |
| 539 |  | 功能部署上线 | 1d | 2019-08-07 | 2019-08-07 |  |  |
| 540 |  | 试运行 | 11d | 2019-08-08 | 2019-08-22 |  | start no earlier than 2019-08-08 |
| 541 | 3.7 | **假期管理** | 14d | 2019-08-12 | 2019-08-29 |  |  |
| 542 |  | 技术可行性分析 | 3d | 2019-07-29 | 2019-07-31 |  |  |
| 543 |  | 用户需求/需求分析 | 1d | 2019-07-31 | 2019-07-31 |  |  |
| 544 |  | 方案设计 | 1d | 2019-07-31 | 2019-07-31 |  |  |
| 545 |  | 功能开发 | 11d | 2019-08-01 | 2019-08-15 |  |  |
| 546 |  | 单元测试 | 1d | 2019-08-16 | 2019-08-16 |  |  |
| 547 |  | 集成测试 | 1d | 2019-08-17 | 2019-08-17 |  |  |
| 548 |  | 功能部署上线 | 1d | 2019-08-18 | 2019-08-18 |  |  |
| 549 |  | 试运行 | 10d | 2019-08-15 | 2019-08-29 |  | start no earlier than 2019-08-15 |
| 550 |  | 代码优化 | 5d | 2019-08-19 | 2019-08-23 |  |  |
| 551 | 3.9 | **置换功能** | 2d | 2019-08-27 | 2019-08-29 |  |  |
| 552 |  | 用户需求/需求分析 | 1d | 2019-08-27 | 2019-08-28 |  |  |
| 553 |  | 方案设计 | 1d | 2019-08-27 | 2019-08-28 |  |  |
| 554 |  | 功能开发 | 1d | 2019-08-27 | 2019-08-28 |  |  |
| 555 |  | 单元测试 | 1d | 2019-08-27 | 2019-08-28 |  |  |
| 556 |  | 集成测试 | 1d | 2019-08-27 | 2019-08-28 |  |  |
| 557 |  | 功能部署上线 | 1d | 2019-08-27 | 2019-08-28 |  |  |
| 558 | 3.10 | **甲方验收（第一轮）** | 1d | 2019-08-29 | 2019-08-29 |  |  |
| 559 |  | 甲方验收（第一轮） | 1d | 2019-08-29 | 2019-08-30 |  |  |
| 560 | 3.11 | **甲方验收（第二轮）** | 1d | 2019-08-30 | 2019-08-30 |  |  |
| 561 |  | 甲方验收（第二轮） | 1d | 2019-08-30 | 2019-09-02 |  |  |

## Version 2 (saved 2019-11-19)

Note of the change: run document 20191107

Last finish stays 2020-03-30.

Changed:

| ID | Task | Duration |
| --- | --- | --- |
| 493 | 上线 | 0d → 1d |
